How a schedule from MS Project changed from version to version. A marks actual dates.

## Version 1 (saved 2015-08-25)

Note of the change: update things

| ID | WBS | Task | Duration | Start | Finish | Predecessors | Total float | Constraint |
| --- | --- | --- | --- | --- | --- | --- | --- | --- |
| 1 | 1 | **BL** | 78d | 2015-05-11 08:00 | 2015-09-02 17:00 |  | 0d |  |
| 2 | 1.1 | **Initiation** | 13.1d | 2015-05-11 08:00 | 2015-05-28 08:48 |  | 0d |  |
| 3 |  | System feasible study | 0.3d | 2015-05-11 08:00 | 2015-05-11 10:24 |  | 0d |  |
| 4 |  | Define business situation | 0.4d | 2015-05-11 10:24 | 2015-05-11 14:36 | 3 | 0d |  |
| 5 |  | Develop project idea | 0.4d | 2015-05-11 14:36 | 2015-05-12 08:48 | 4 | 0d |  |
| 6 |  | Define project and system scope | 0.5d | 2015-05-12 08:48 | 2015-05-12 13:48 | 5 | 0d |  |
| 7 |  | Prepare project | 1d | 2015-05-12 13:48 | 2015-05-13 13:48 | 6 | 0d |  |
| 8 |  | Kick-off meeting | 0.4d | 2015-05-13 13:48 | 2015-05-13 17:00 | 7 | 0d |  |
| 9 |  | Q & A Management | 0.3d | 2015-05-14 08:00 | 2015-05-14 10:24 | 8 | 0.4d |  |
| 10 | 1.1.8 | **Technologies** | 6.4d | 2015-05-19 14:36 | 2015-05-28 08:48 |  | 64.9d |  |
| 11 |  | Research development technologies | 0.5d | 2015-05-19 14:36 | 2015-05-22 16:12 | 8 | 64.9d |  |
| 12 |  | Install and configure Android Studio and Android SDK | 0.6d | 2015-05-22 16:12 | 2015-05-25 16:12 | 11 | 67.1d | finish no earlier than 2015-05-22 17:00 |
| 13 |  | Install and configure NetBeans, PHP | 0.3d | 2015-05-22 16:12 | 2015-05-25 09:36 | 11 | 64.9d | finish no earlier than 2015-05-19 17:00 |
| 14 |  | Study web service | 0.4d | 2015-05-25 09:36 | 2015-05-28 08:48 | 13 | 64.9d | finish no earlier than 2015-05-20 17:00 |
| 15 | 1.1.9 | **SRS/PP/Concept design Review checklist** | 2d | 2015-05-14 10:24 | 2015-05-18 10:24 |  | 0.4d |  |
| 16 |  | Develop review checklist | 1.5d | 2015-05-14 10:24 | 2015-05-15 15:24 | 9 | 0.4d |  |
| 17 |  | Review review checklist | 0.2d | 2015-05-15 15:24 | 2015-05-15 17:00 | 16 | 0.4d |  |
| 18 |  | Update review checklist | 0.3d | 2015-05-18 08:00 | 2015-05-18 10:24 | 17 | 0.4d |  |
| 19 |  | Complete review checklist | 0d | 2015-05-18 10:24 | 2015-05-18 10:24 | 18 | 0.4d |  |
| 20 | 1.1.10 | **Requirements** | 3.4d | 2015-05-14 08:00 | 2015-05-19 11:12 |  | 0d |  |
| 21 | 1.1.10.1 | **User Requirements Specification** | 2.7d | 2015-05-14 08:00 | 2015-05-18 14:36 |  | 0d |  |
| 22 |  | Collect business requirements and processes | 0.5d | 2015-05-14 08:00 | 2015-05-14 12:00 | 8 | 0d |  |
| 23 |  | Create draft requirements | 1d | 2015-05-14 13:00 | 2015-05-15 12:00 | 22 | 0d |  |
| 24 |  | Complete draft requirements | 0d | 2015-05-15 12:00 | 2015-05-15 12:00 | 23 | 0d |  |
| 25 |  | Develop main function and processes | 1d | 2015-05-15 13:00 | 2015-05-18 14:36 | 24 | 0d |  |
| 26 |  | Review User Requirement Specification with checklist | 0.3d | 2015-05-18 14:36 | 2015-05-18 17:00 | 25, 19 | 0d |  |
| 27 |  | Update User Requirement Specification | 0.4d | 2015-05-19 08:00 | 2015-05-19 11:12 | 26 | 0d |  |
| 28 |  | Complete User Requirement Specification | 0d | 2015-05-19 11:12 | 2015-05-19 11:12 | 27 | 0d |  |
| 29 | 1.1.11 | **Concept design** | 2.5d | 2015-05-15 13:00 | 2015-05-19 17:00 |  | 0d |  |
| 30 |  | Create draft concept design | 1d | 2015-05-15 13:00 | 2015-05-18 17:00 | 24 | 0d |  |
| 31 |  | Review concept design with checklist | 0.5d | 2015-05-19 08:00 | 2015-05-19 12:00 | 30, 19 | 0d |  |
| 32 |  | Update concept design | 0.5d | 2015-05-19 13:00 | 2015-05-19 17:00 | 31 | 0d |  |
| 33 |  | Complete concept design | 0d | 2015-05-19 17:00 | 2015-05-19 17:00 | 32 | 0d |  |
| 34 | 1.1.12 | **Project plan** | 7.3d | 2015-05-14 08:00 | 2015-05-25 10:24 |  | 0d |  |
| 35 |  | Develop project definition | 0.7d | 2015-05-14 08:00 | 2015-05-14 14:36 | 8 | 0d |  |
| 36 |  | Develop Work Breakdown Structure | 0.9d | 2015-05-14 14:36 | 2015-05-15 13:48 | 35 | 0d |  |
| 37 |  | Create Project Schedule | 2d | 2015-05-15 13:48 | 2015-05-19 13:48 | 36 | 0d |  |
| 38 |  | Create Configuration Management Plan version 1.0 | 0.8d | 2015-05-20 13:00 | 2015-05-21 10:24 | 37 | 0d |  |
| 39 |  | Create Project Plan (first version) | 1.5d | 2015-05-21 10:24 | 2015-05-22 15:24 | 38 | 0d |  |
| 40 |  | Review Project Plan (first version) | 0.5d | 2015-05-22 15:24 | 2015-05-25 10:24 | 39 | 0d |  |
| 41 |  | Complete Project Plan (final version) | 0d | 2015-05-25 10:24 | 2015-05-25 10:24 | 40 | 0d |  |
| 42 | 1.1.13 | **Progress Report 1** | 0.7d | 2015-05-19 13:48 | 2015-05-20 10:24 |  | 0d |  |
| 43 |  | Develop Progress Report 1 | 0.4d | 2015-05-19 13:48 | 2015-05-19 17:00 | 37 | 0d |  |
| 44 |  | Review Progress Report 1 | 0.2d | 2015-05-20 08:00 | 2015-05-20 09:36 | 43 | 0d |  |
| 45 |  | Update Progress Report 1 | 0.1d | 2015-05-20 09:36 | 2015-05-20 10:24 | 44 | 0d |  |
| 46 |  | Complete Progress Report 1 | 0d | 2015-05-20 10:24 | 2015-05-20 10:24 | 45 | 0d |  |
| 47 |  | Submit PP, URS, Concept Design | 0d | 2015-05-25 10:24 | 2015-05-25 10:24 | 41, 46, 28, 33 | 0d |  |
| 48 | 1.2 | **Solution** | 35.4d | 2015-05-25 10:24 | 2015-07-20 14:36 |  | 0d |  |
| 49 | 1.2.1 | **Requirements** | 7.2d | 2015-05-25 10:24 | 2015-06-03 12:00 |  | 0d |  |
| 50 | 1.2.1.1 | **Software Requirements Specification** | 7.2d | 2015-05-25 10:24 | 2015-06-03 12:00 |  | 0d |  |
| 51 | 1.2.1.1.1 | **Functional Requirement Specification** | 4.9d | 2015-05-25 10:24 | 2015-06-01 09:36 |  | 0d |  |
| 52 | 1.2.1.1.1.1 | **Bus Driver Module** | 0.9d | 2015-05-25 10:24 | 2015-05-26 09:36 |  | 0.1d |  |
| 53 |  | Send bus info module | 0.6d | 2015-05-25 10:24 | 2015-05-26 09:36 | 47 | 0.1d |  |
| 54 | 1.2.1.1.1.2 | **Bus Rider Module** | 4.9d | 2015-05-25 10:24 | 2015-06-01 09:36 |  | 0d |  |
| 55 | 1.2.1.1.1.2.1 | **Common module** | 0.5d | 2015-05-27 15:24 | 2015-05-28 10:24 |  | 64.7d |  |
| 56 |  | Change app setting | 0.5d | 2015-05-27 15:24 | 2015-05-28 10:24 | 47 | 64.7d |  |
| 57 | 1.2.1.1.1.2.2 | **Account Management module** | 1.6d | 2015-05-26 09:36 | 2015-05-27 15:24 |  | 2.5d |  |
| 58 |  | Log in | 0.6d | 2015-05-26 09:36 | 2015-05-26 15:24 | 47 | 2.5d |  |
| 59 |  | Log out | 0.3d | 2015-05-26 15:24 | 2015-05-27 08:48 | 58 | 2.5d |  |
| 60 |  | Change account info | 0.2d | 2015-05-27 08:48 | 2015-05-27 10:24 | 59 | 2.5d |  |
| 61 |  | Forgot password | 0.3d | 2015-05-27 10:24 | 2015-05-27 15:24 | 60 | 2.5d |  |
| 62 | 1.2.1.1.1.2.3 | **Bus module** | 2.7d | 2015-05-25 10:24 | 2015-05-27 17:00 |  | 2.3d |  |
| 63 |  | View bus list | 0.3d | 2015-05-25 10:24 | 2015-05-25 13:48 | 47 | 2.3d |  |
| 64 |  | View bus info | 0.3d | 2015-05-25 13:48 | 2015-05-25 16:12 | 63 | 2.3d |  |
| 65 |  | View bus route | 0.4d | 2015-05-25 16:12 | 2015-05-26 10:24 | 64 | 2.3d |  |
| 66 |  | View nearest bus | 0.6d | 2015-05-26 10:24 | 2015-05-26 16:12 | 65 | 2.3d |  |
| 67 |  | View bus map | 0.6d | 2015-05-26 16:12 | 2015-05-27 12:00 | 66 | 2.3d |  |
| 68 |  | View bus near me | 0.5d | 2015-05-27 13:00 | 2015-05-27 17:00 | 67 | 2.3d |  |
| 69 | 1.2.1.1.1.2.4 | **Path Finder module** | 2.7d | 2015-05-26 09:36 | 2015-05-28 16:12 |  | 0.1d |  |
| 70 |  | Find path | 1d | 2015-05-26 09:36 | 2015-05-27 09:36 | 53 | 0.1d |  |

| ID | WBS | Task | Duration | Start | Finish | Predecessors | Total float | Constraint |
| --- | --- | --- | --- | --- | --- | --- | --- | --- |
| 71 |  | View paths found | 0.4d | 2015-05-27 09:36 | 2015-05-27 13:48 | 70 | 0.1d |  |
| 72 |  | View path detail | 0.7d | 2015-05-27 13:48 | 2015-05-28 10:24 | 71 | 0.1d |  |
| 73 |  | View direction | 0.6d | 2015-05-28 10:24 | 2015-05-28 16:12 | 72 | 0.1d |  |
| 74 | 1.2.1.1.1.2.5 | **Reminder module** | 1.3d | 2015-05-28 16:12 | 2015-06-01 09:36 |  | 0.1d |  |
| 75 |  | View bus reminder | 0.5d | 2015-05-28 16:12 | 2015-05-29 11:12 | 73 | 0.1d |  |
| 76 |  | Add reminder | 0.2d | 2015-05-29 11:12 | 2015-05-29 13:48 | 75 | 0.1d |  |
| 77 |  | Edit reminder | 0.3d | 2015-05-29 13:48 | 2015-05-29 16:12 | 76 | 0.1d |  |
| 78 |  | Delete reminder | 0.1d | 2015-05-29 16:12 | 2015-05-29 17:00 | 77 | 0.1d |  |
| 79 |  | Suspend/Unsuspend a chosen reminder | 0.2d | 2015-06-01 08:00 | 2015-06-01 09:36 | 78 | 0.1d |  |
| 80 | 1.2.1.1.1.2.6 | **Track module** | 1.2d | 2015-05-25 10:24 | 2015-05-26 12:00 |  | 0d |  |
| 81 |  | Tracking | 1d | 2015-05-25 10:24 | 2015-05-26 10:24 | 47 | 0d |  |
| 82 |  | Cancel track | 0.2d | 2015-05-26 10:24 | 2015-05-26 12:00 | 81 | 0d |  |
| 83 | 1.2.1.1.1.2.7 | **Favorite module** | 2.3d | 2015-05-26 13:00 | 2015-05-28 15:24 |  | 0d |  |
| 84 |  | View favorite places | 0.4d | 2015-05-26 13:00 | 2015-05-26 16:12 | 82 | 0d |  |
| 85 |  | Add favorite places | 0.2d | 2015-05-26 16:12 | 2015-05-27 08:48 | 84 | 0d |  |
| 86 |  | Edit favorite places | 0.3d | 2015-05-27 08:48 | 2015-05-27 11:12 | 85 | 0d |  |
| 87 |  | Delete favorite places | 0.2d | 2015-05-27 11:12 | 2015-05-27 13:48 | 86 | 0d |  |
| 88 |  | Search favorite places | 0.2d | 2015-05-27 13:48 | 2015-05-27 15:24 | 87 | 0d |  |
| 89 |  | View favorite buses | 0.4d | 2015-05-27 15:24 | 2015-05-28 09:36 | 88 | 0d |  |
| 90 |  | Add favorite buses | 0.2d | 2015-05-28 09:36 | 2015-05-28 11:12 | 89 | 0d |  |
| 91 |  | Delete favorite buses | 0.2d | 2015-05-28 11:12 | 2015-05-28 13:48 | 90 | 0d |  |
| 92 |  | Search favorite buses | 0.2d | 2015-05-28 13:48 | 2015-05-28 15:24 | 91 | 0d |  |
| 93 | 1.2.1.1.2 | **Non-functional Requirement Specification** | 1.5d | 2015-05-28 15:24 | 2015-06-01 10:24 |  | 0d |  |
| 94 |  | Develop User Interface Requirement | 1d | 2015-05-28 15:24 | 2015-05-29 15:24 | 92 | 0d |  |
| 95 |  | Develop Performance Requirement | 0.5d | 2015-05-29 15:24 | 2015-06-01 10:24 | 94 | 0d |  |
| 96 |  | Review Software Requirement Specification with checklist | 1d | 2015-06-01 15:24 | 2015-06-02 17:00 | 53, 61, 68, 73, 79, 82, 92, 95 | 0d |  |
| 97 |  | Update Software Requirement Specification | 0.5d | 2015-06-03 08:00 | 2015-06-03 12:00 | 96 | 0d |  |
| 98 |  | Complete Software Requirement Specification | 0d | 2015-06-03 12:00 | 2015-06-03 12:00 | 97 | 0d |  |
| 99 | 1.2.2 | **Design** | 20.3d | 2015-05-29 15:24 | 2015-07-06 08:48 |  | 0d |  |
| 100 | 1.2.2.1 | **Design Review checklist** | 1.3d | 2015-05-29 15:24 | 2015-06-02 08:48 |  | 0d |  |
| 101 |  | Develop review checklist | 1d | 2015-05-29 15:24 | 2015-06-01 15:24 | 94 | 0d |  |
| 102 |  | Review review checklist | 0.1d | 2015-06-01 15:24 | 2015-06-01 16:12 | 101 | 0d |  |
| 103 |  | Update review checklist | 0.2d | 2015-06-01 16:12 | 2015-06-02 08:48 | 102 | 0d |  |
| 104 |  | Complete review checklist | 0d | 2015-06-02 08:48 | 2015-06-02 08:48 | 103 | 0d |  |
| 105 | 1.2.2.2 | **Architecture design** | 2d | 2015-06-03 13:00 | 2015-06-05 12:00 |  | 0d |  |
| 106 |  | Define system structure and collect system features | 1d | 2015-06-03 13:00 | 2015-06-04 12:00 | 98 | 0d |  |
| 107 |  | Study & choose System Architecture | 0.5d | 2015-06-04 13:00 | 2015-06-04 17:00 | 106 | 0d |  |
| 108 |  | Review Architecture Design with checklist | 0.3d | 2015-06-05 08:00 | 2015-06-05 10:24 | 104, 107 | 0d |  |
| 109 |  | Update Architecture Design | 0.2d | 2015-06-05 10:24 | 2015-06-05 12:00 | 108 | 0d |  |
| 110 |  | Complete System Architecture version 1.0 | 0d | 2015-06-05 12:00 | 2015-06-05 12:00 | 109 | 0d |  |
| 111 | 1.2.2.3 | **Detailed design** | 15.6d | 2015-06-05 13:00 | 2015-07-06 08:48 |  | 0d |  |
| 112 | 1.2.2.3.1 | **User Interface design** | 13.6d | 2015-06-05 13:00 | 2015-07-02 08:48 |  | 0d |  |
| 113 | 1.2.2.3.1.1 | **Bus Driver Module** | 0.4d | 2015-06-11 13:48 | 2015-06-11 17:00 |  | 9.1d |  |
| 114 |  | Send bus info module | 0.4d | 2015-06-11 13:48 | 2015-06-11 17:00 | 110 | 9.1d | finish no earlier than 2015-06-05 17:00 |
| 115 | 1.2.2.3.1.2 | **Bus Rider Module** | 13.6d | 2015-06-05 13:00 | 2015-07-02 08:48 |  | 0d |  |
| 116 | 1.2.2.3.1.2.1 | **Common module** | 1.4d | 2015-06-10 09:36 | 2015-06-11 13:48 |  | 9.5d |  |
| 117 |  | Change app setting | 1.4d | 2015-06-10 09:36 | 2015-06-11 13:48 | 110 | 9.5d |  |
| 118 | 1.2.2.3.1.2.2 | **Account Management module** | 3.6d | 2015-06-18 14:36 | 2015-07-01 10:24 |  | 0.8d |  |
| 119 |  | Log in | 0.6d | 2015-06-18 14:36 | 2015-06-30 10:24 | 110 | 0.8d |  |
| 120 |  | Log out | 0.3d | 2015-06-30 10:24 | 2015-06-30 13:48 | 119 | 0.8d |  |
| 121 |  | View account profile | 0.2d | 2015-06-30 13:48 | 2015-06-30 15:24 | 120 | 0.8d |  |
| 122 |  | Change account info | 0.2d | 2015-06-30 15:24 | 2015-06-30 17:00 | 121 | 0.8d |  |
| 123 |  | Forgot password | 0.3d | 2015-07-01 08:00 | 2015-07-01 10:24 | 122 | 0.8d |  |
| 124 | 1.2.2.3.1.2.3 | **Bus module** | 5.9d | 2015-06-10 14:36 | 2015-06-18 13:48 |  | 4.5d |  |
| 125 |  | View bus list | 0.3d | 2015-06-10 14:36 | 2015-06-11 10:24 | 110 | 4.8d |  |
| 126 |  | View bus info | 0.3d | 2015-06-11 10:24 | 2015-06-11 13:48 | 125 | 4.8d |  |
| 127 |  | View bus route | 0.6d | 2015-06-11 13:48 | 2015-06-12 09:36 | 126 | 4.8d |  |
| 128 |  | View nearest bus | 1d | 2015-06-12 09:36 | 2015-06-15 09:36 | 127 | 4.8d | start no earlier than 2015-06-10 08:00 |
| 129 |  | View bus map | 0.8d | 2015-06-15 16:12 | 2015-06-16 14:36 | 128 | 4.5d | start no earlier than 2015-06-11 08:00 |
| 130 |  | View bus near me | 1d | 2015-06-17 13:48 | 2015-06-18 13:48 | 129 | 4.5d | start no earlier than 2015-06-15 08:00 |
| 131 | 1.2.2.3.1.2.4 | **Path Finder module** | 2.7d | 2015-06-05 13:00 | 2015-06-10 09:36 |  | 2.8d |  |
| 132 |  | Find path | 1d | 2015-06-05 13:00 | 2015-06-08 12:00 | 110 | 2.8d |  |
| 133 |  | View paths found | 0.4d | 2015-06-08 13:00 | 2015-06-08 16:12 | 132 | 2.8d |  |
| 134 |  | View path detail | 0.7d | 2015-06-08 16:12 | 2015-06-09 13:48 | 133 | 2.8d |  |
| 135 |  | View direction | 0.6d | 2015-06-09 13:48 | 2015-06-10 09:36 | 134 | 2.8d |  |
| 136 | 1.2.2.3.1.2.5 | **Reminder module** | 5.7d | 2015-06-15 09:36 | 2015-06-29 16:12 |  | 2.2d |  |
| 137 |  | View bus reminder | 0.5d | 2015-06-15 09:36 | 2015-06-15 14:36 | 135 | 3.1d |  |
| 138 |  | Add reminder | 0.2d | 2015-06-15 14:36 | 2015-06-15 16:12 | 137 | 3.1d |  |
| 139 |  | Edit reminder | 0.3d | 2015-06-16 14:36 | 2015-06-16 17:00 | 138 | 2.4d | start no earlier than 2015-06-16 08:00 |
| 140 |  | Delete reminder | 0.1d | 2015-06-17 08:00 | 2015-06-17 08:48 | 139 | 2.4d |  |

| ID | WBS | Task | Duration | Start | Finish | Predecessors | Total float | Constraint |
| --- | --- | --- | --- | --- | --- | --- | --- | --- |
| 141 |  | Suspend/Unsuspend all reminder | 0.5d | 2015-06-17 08:48 | 2015-06-17 13:48 | 140 | 2.4d |  |
| 142 |  | Suspend/Unsuspend a chosen reminder | 0.2d | 2015-06-18 13:48 | 2015-06-29 16:12 | 141 | 2.2d |  |
| 143 | 1.2.2.3.1.2.6 | **Track module** | 1.2d | 2015-06-17 13:00 | 2015-06-18 14:36 |  | 0d |  |
| 144 |  | Tracking | 1d | 2015-06-17 13:00 | 2015-06-18 12:00 | 110 | 0d |  |
| 145 |  | Cancel track | 0.2d | 2015-06-18 13:00 | 2015-06-18 14:36 | 144 | 0d |  |
| 146 | 1.2.2.3.1.2.7 | **Favorite module** | 4.4d | 2015-06-18 14:36 | 2015-07-02 08:48 |  | 0d |  |
| 147 |  | View favorite places | 0.4d | 2015-06-18 14:36 | 2015-06-19 08:48 | 145 | 0d |  |
| 148 |  | Add favorite places | 0.2d | 2015-06-19 08:48 | 2015-06-19 10:24 | 147 | 0d |  |
| 149 |  | Edit favorite places | 0.3d | 2015-06-19 10:24 | 2015-06-19 13:48 | 148 | 0d |  |
| 150 |  | Delete favorite places | 0.2d | 2015-06-19 13:48 | 2015-06-19 15:24 | 149 | 0d |  |
| 151 |  | Search favorite places | 0.2d | 2015-06-19 15:24 | 2015-06-19 17:00 | 150 | 0d |  |
| 152 |  | View favorite buses | 0.4d | 2015-06-29 08:00 | 2015-06-29 11:12 | 151 | 0d |  |
| 153 |  | Add favorite buses | 0.2d | 2015-06-29 11:12 | 2015-06-29 13:48 | 152 | 0d | finish no earlier than 2015-06-19 17:00 |
| 154 |  | Delete favorite buses | 0.2d | 2015-06-29 13:48 | 2015-06-29 15:24 | 153 | 0d |  |
| 155 |  | Search favorite buses | 0.2d | 2015-07-01 16:12 | 2015-07-02 08:48 | 154 | 0d |  |
| 156 |  | Review Detailed Design with checklist | 1d | 2015-07-02 13:48 | 2015-07-03 13:48 | 104, 114, 117, 123, 130, 135, 142, 145, 155 | 0d |  |
| 157 |  | Update Detailed Design | 0.5d | 2015-07-03 13:48 | 2015-07-06 08:48 | 156 | 0d |  |
| 158 |  | Complete Detailed Design version 1.0 | 0d | 2015-07-06 08:48 | 2015-07-06 08:48 | 157 | 0d |  |
| 159 | 1.2.2.4 | **Database design** | 11.3d | 2015-06-05 13:00 | 2015-06-29 15:24 |  | 0d |  |
| 160 |  | Create Databse Design draft version | 5d | 2015-06-05 13:00 | 2015-06-17 12:00 | 110 | 0d |  |
| 161 |  | Review Database Design with checklist | 0.5d | 2015-06-18 10:24 | 2015-06-18 15:24 | 103, 160 | 0d |  |
| 162 |  | Update Database Design | 2d | 2015-06-18 15:24 | 2015-06-29 15:24 | 161 | 0d |  |
| 163 |  | Complete Database Design version 1.0 | 0d | 2015-06-29 15:24 | 2015-06-29 15:24 | 162 | 0d |  |
| 164 | 1.2.2.5 | **Class design** | 3.1d | 2015-06-29 15:24 | 2015-07-02 16:12 |  | 0d |  |
| 165 |  | Define class/component | 2.1d | 2015-06-29 15:24 | 2015-07-01 16:12 | 163 | 0d |  |
| 166 |  | Review Class Design with checklist | 0.5d | 2015-07-02 08:48 | 2015-07-02 13:48 | 165 | 0d |  |
| 167 |  | Update Class Design | 0.3d | 2015-07-02 13:48 | 2015-07-02 16:12 | 166 | 0d |  |
| 168 |  | Complete Class Design version 1.0 | 0d | 2015-07-02 16:12 | 2015-07-02 16:12 | 167 | 0d |  |
| 169 |  | Complete design | 0d | 2015-07-06 08:48 | 2015-07-06 08:48 | 110, 158, 163, 168 | 0d |  |
| 170 | 1.2.3 | **Progress Report 2** | 0.5d | 2015-07-06 08:48 | 2015-07-06 13:48 |  | 0d |  |
| 171 |  | Develop Progress Report 2 | 0.3d | 2015-07-06 08:48 | 2015-07-06 11:12 | 158, 163, 168 | 0d |  |
| 172 |  | Review Progress Report 2 | 0.1d | 2015-07-06 11:12 | 2015-07-06 12:00 | 171 | 0d |  |
| 173 |  | Update Progress Report 2 | 0.1d | 2015-07-06 13:00 | 2015-07-06 13:48 | 172 | 0d |  |
| 174 |  | Complete Progress Report 2 | 0d | 2015-07-06 13:48 | 2015-07-06 13:48 | 173 | 0d |  |
| 175 |  | Submit SRS,AD,DD | 0d | 2015-07-06 08:48 | 2015-07-06 08:48 | 98, 169 | 0d |  |
| 176 | 1.2.5 | **Coding & Unit Testing** | 10.1d | 2015-07-06 13:48 | 2015-07-20 14:36 |  | 5.3d |  |
| 177 | 1.2.5.1 | **Bus Driver Module** | 10.1d | 2015-07-06 13:48 | 2015-07-20 14:36 |  | 5.3d |  |
| 178 |  | Send bus info module | 1d | 2015-07-06 13:48 | 2015-07-20 14:36 | 110, 158, 163, 168 | 5.3d |  |
| 179 | 1.2.6 | **Testing** | 16.3d | 2015-06-05 13:00 | 2015-07-06 15:24 |  | 0d |  |
| 180 | 1.2.6.1 | **Test review checklist** | 3.2d | 2015-06-05 13:00 | 2015-06-10 14:36 |  | 0d |  |
| 181 | 1.2.6.1.1 | **Test plan review checklist** | 2.8d | 2015-06-05 13:00 | 2015-06-10 10:24 |  | 0d |  |
| 182 |  | Develop test plan review checklist | 0.6d | 2015-06-05 13:00 | 2015-06-08 08:48 | 110 | 0d |  |
| 183 |  | Review test plan review checklist | 0.4d | 2015-06-08 08:48 | 2015-06-08 12:00 | 182 | 0d |  |
| 184 |  | Update test plan review checklist | 0.2d | 2015-06-10 08:48 | 2015-06-10 10:24 | 183 | 0d |  |
| 185 |  | Complete test plan review checklist | 0d | 2015-06-10 10:24 | 2015-06-10 10:24 | 184 | 0d |  |
| 186 | 1.2.6.1.2 | **Test case review checklist** | 2.6d | 2015-06-08 08:48 | 2015-06-10 14:36 |  | 0d |  |
| 187 |  | Develop test case review checklist | 1d | 2015-06-08 08:48 | 2015-06-09 08:48 | 110 | 0d |  |
| 188 |  | Review test case review checklist | 0.4d | 2015-06-09 08:48 | 2015-06-09 12:00 | 187 | 0d |  |
| 189 |  | Update test case review checklist | 0.4d | 2015-06-10 10:24 | 2015-06-10 14:36 | 188 | 0d |  |
| 190 |  | Complete test case review checklist | 0d | 2015-06-10 14:36 | 2015-06-10 14:36 | 189 | 0d |  |
| 191 |  | Complete review checklist | 0d | 2015-06-10 14:36 | 2015-06-10 14:36 | 185, 190 | 0d |  |
| 192 | 1.2.6.2 | **Test plan** | 2d | 2015-06-09 08:48 | 2015-06-11 08:48 |  | 0d |  |
| 193 |  | Develop test plan | 1d | 2015-06-09 08:48 | 2015-06-10 08:48 | 110 | 0.2d |  |
| 194 |  | Review test plan | 0.5d | 2015-06-10 10:24 | 2015-06-10 15:24 | 193, 185 | 0d |  |
| 195 |  | Update test plan | 0.3d | 2015-06-10 15:24 | 2015-06-11 08:48 | 194 | 0d |  |
| 196 |  | Complete test plan | 0d | 2015-06-11 08:48 | 2015-06-11 08:48 | 195 | 0d |  |
| 197 | 1.2.6.3 | **Test case** | 12.7d | 2015-06-11 08:48 | 2015-07-06 15:24 |  | 0d |  |
| 198 | 1.2.6.3.1 | **Unit test** | 5.2d | 2015-06-11 08:48 | 2015-06-18 10:24 |  | 0d |  |
| 199 | 1.2.6.3.1.1 | **Develop unit test case** | 3.2d | 2015-06-11 08:48 | 2015-06-16 10:24 |  | 0d |  |
| 200 |  | Bus driver module | 0.5d | 2015-06-11 08:48 | 2015-06-11 13:48 | 196 | 0d |  |
| 201 |  | Sync module | 0.5d | 2015-06-11 13:48 | 2015-06-12 08:48 | 200 | 0d |  |
| 202 |  | Bus module | 1d | 2015-06-12 08:48 | 2015-06-15 08:48 | 201 | 0d |  |
| 203 |  | Search module | 0.5d | 2015-06-15 08:48 | 2015-06-15 13:48 | 202 | 0d |  |
| 204 |  | Setting module | 0.7d | 2015-06-15 13:48 | 2015-06-16 10:24 | 203 | 0d |  |
| 205 |  | Review unit test case | 1d | 2015-06-16 10:24 | 2015-06-17 10:24 | 202, 204 | 0d |  |
| 206 |  | Update unit test case | 1d | 2015-06-17 10:24 | 2015-06-18 10:24 | 205 | 0d |  |
| 207 |  | Complete unit test case | 0d | 2015-06-18 10:24 | 2015-06-18 10:24 | 206 | 0d |  |
| 208 | 1.2.6.3.2 | **Integration test** | 4d | 2015-06-18 15:24 | 2015-07-01 15:24 |  | 0d |  |
| 209 |  | Develop integration test case | 2d | 2015-06-18 15:24 | 2015-06-29 15:24 | 207 | 0d |  |
| 210 |  | Review integration test case | 1d | 2015-06-29 15:24 | 2015-06-30 15:24 | 209 | 0d |  |

| ID | WBS | Task | Duration | Start | Finish | Predecessors | Total float | Constraint |
| --- | --- | --- | --- | --- | --- | --- | --- | --- |
| 211 |  | Update integration test case | 1d | 2015-06-30 15:24 | 2015-07-01 15:24 | 210 | 0d |  |
| 212 |  | Complete integration test case | 0d | 2015-07-01 15:24 | 2015-07-01 15:24 | 211 | 0d |  |
| 213 | 1.2.6.3.3 | **System test** | 3d | 2015-07-01 15:24 | 2015-07-06 15:24 |  | 0d |  |
| 214 |  | Develop system test case | 1d | 2015-07-01 15:24 | 2015-07-02 15:24 | 212 | 0d |  |
| 215 |  | Review system test case | 1d | 2015-07-02 15:24 | 2015-07-03 15:24 | 214 | 0d |  |
| 216 |  | Update system test case | 1d | 2015-07-03 15:24 | 2015-07-06 15:24 | 215 | 0d |  |
| 217 |  | Complete system test case | 0d | 2015-07-06 15:24 | 2015-07-06 15:24 | 216 | 0d |  |
| 218 | 1.2.7 | **Progress report 3** | 0.5d | 2015-07-07 08:00 | 2015-07-07 12:00 |  | 0d |  |
| 219 |  | Develop Progress Report 3 | 0.3d | 2015-07-07 08:00 | 2015-07-07 10:24 | 191, 207, 212, 217 | 0d |  |
| 220 |  | Review Progress Report 3 | 0.1d | 2015-07-07 10:24 | 2015-07-07 11:12 | 219 | 0d |  |
| 221 |  | Update Progress Report 3 | 0.1d | 2015-07-07 11:12 | 2015-07-07 12:00 | 220 | 0d |  |
| 222 |  | Complete Progress Report 3 | 0d | 2015-07-07 12:00 | 2015-07-07 12:00 | 221 | 0d |  |
| 223 | 1.2.8 | **Report no.3** | 2.6d | 2015-07-06 15:24 | 2015-07-09 11:12 |  | 0d |  |
| 224 |  | Develop Report no.3 (draft version) | 0.2d | 2015-07-06 15:24 | 2015-07-06 17:00 | 196, 207, 212, 217 | 0d |  |
| 225 |  | Review Report no.3 (draft version) | 1d | 2015-07-07 08:00 | 2015-07-08 08:48 | 224 | 0d |  |
| 226 |  | Update Report no.3 (draft version) | 0.5d | 2015-07-08 08:48 | 2015-07-08 13:48 | 225 | 0d |  |
| 227 |  | Submit Report no.3 (first version) | 0d | 2015-07-08 13:48 | 2015-07-08 13:48 | 226 | 0d |  |
| 228 |  | Revise after got comments for Report no.3 | 0.8d | 2015-07-08 13:48 | 2015-07-09 11:12 | 227 | 0d |  |
| 229 |  | Submit Report no.3 (final version) | 0d | 2015-07-09 11:12 | 2015-07-09 11:12 | 228 | 0d |  |
| 230 | 1.3 | **Construction** | 30d | 2015-07-09 11:12 | 2015-08-20 11:12 |  | 1.7d |  |
| 231 | 1.3.1 | **Code Review checklist** | 2.3d | 2015-07-15 11:12 | 2015-07-17 14:36 |  | 10.6d |  |
| 232 |  | Develop review checklist | 1.2d | 2015-07-15 11:12 | 2015-07-16 13:48 | 229 | 10.6d | finish no earlier than 2015-07-10 17:00 |
| 233 |  | Review review checklist | 0.6d | 2015-07-16 13:48 | 2015-07-17 09:36 | 232 | 10.6d |  |
| 234 |  | Update review checklist | 0.5d | 2015-07-17 09:36 | 2015-07-17 14:36 | 233 | 10.6d |  |
| 235 |  | Complete review checklist | 0d | 2015-07-17 14:36 | 2015-07-17 14:36 | 234 | 10.6d |  |
| 236 | 1.3.2 | **Coding & Unit testing (continue)** | 24d | 2015-07-09 11:12 | 2015-08-12 11:12 |  | 1.7d |  |
| 237 | 1.3.2.1 | **Bus Rider Module** | 24d | 2015-07-09 11:12 | 2015-08-12 11:12 |  | 1.7d |  |
| 238 | 1.3.2.1.1 | **Common module** | 1d | 2015-07-21 16:12 | 2015-07-22 16:12 |  | 3.1d |  |
| 239 |  | Change app setting | 1d | 2015-07-21 16:12 | 2015-07-22 16:12 | 229 | 3.1d | finish no earlier than 2015-07-08 17:00 |
| 240 | 1.3.2.1.2 | **Account Management module** | 3.4d | 2015-07-14 09:36 | 2015-07-17 13:48 |  | 8.2d |  |
| 241 |  | Log in | 0.6d | 2015-07-14 09:36 | 2015-07-14 15:24 | 229 | 8.2d |  |
| 242 |  | Sign up | 0.8d | 2015-07-14 15:24 | 2015-07-15 13:48 | 241 | 35.4d |  |
| 243 |  | Log out | 0.3d | 2015-07-16 13:00 | 2015-07-16 15:24 | 241 | 6.7d |  |
| 244 |  | Change password | 0.4d | 2015-07-16 15:24 | 2015-07-17 09:36 | 243 | 6.7d |  |
| 245 |  | Forgot password | 0.4d | 2015-07-17 09:36 | 2015-07-17 13:48 | 244 | 6.7d |  |
| 246 | 1.3.2.1.3 | **Bus module** | 8.5d | 2015-07-09 11:12 | 2015-07-21 16:12 |  | 1.7d |  |
| 247 |  | View bus list | 0.5d | 2015-07-09 11:12 | 2015-07-09 16:12 | 229 | 1.7d |  |
| 248 |  | View bus info | 0.5d | 2015-07-09 16:12 | 2015-07-10 11:12 | 247 | 1.7d |  |
| 249 |  | View bus route | 0.5d | 2015-07-10 11:12 | 2015-07-10 16:12 | 248 | 1.7d |  |
| 250 |  | View nearest bus | 0.7d | 2015-07-10 16:12 | 2015-07-13 13:48 | 249 | 1.7d |  |
| 251 |  | View bus map | 0.9d | 2015-07-15 13:48 | 2015-07-16 12:00 | 250 | 1.7d |  |
| 252 |  | View bus near me | 1.2d | 2015-07-20 14:36 | 2015-07-21 16:12 | 251 | 3.7d |  |
| 253 | 1.3.2.1.4 | **Path Finder module** | 7.2d | 2015-07-09 11:12 | 2015-07-20 13:48 |  | 4.5d |  |
| 254 |  | Find path | 1.5d | 2015-07-09 11:12 | 2015-07-10 16:12 | 229 | 4.67d |  |
| 255 |  | View paths found | 0.6d | 2015-07-13 13:48 | 2015-07-14 09:36 | 254 | 4.8d |  |
| 256 |  | View path detail | 0.8d | 2015-07-14 15:24 | 2015-07-15 13:48 | 255 | 4.5d |  |
| 257 |  | View direction | 1d | 2015-07-17 13:48 | 2015-07-20 13:48 | 256 | 4.5d |  |
| 258 | 1.3.2.1.5 | **Reminder module** | 3.5d | 2015-07-09 16:12 | 2015-07-15 11:12 |  | 9.1d |  |
| 259 |  | View bus reminder | 1d | 2015-07-09 16:12 | 2015-07-13 15:24 | 229 | 9.1d |  |
| 260 |  | Add reminder | 0.4d | 2015-07-13 15:24 | 2015-07-14 09:36 | 259 | 9.1d |  |
| 261 |  | Edit reminder | 0.6d | 2015-07-14 09:36 | 2015-07-14 15:24 | 260 | 9.1d |  |
| 262 |  | Delete reminder | 0.2d | 2015-07-14 15:24 | 2015-07-14 17:00 | 261 | 9.1d |  |
| 263 |  | Suspend/Unsuspend a chosen reminder | 0.4d | 2015-07-15 08:00 | 2015-07-15 11:12 | 262 | 9.1d |  |
| 264 | 1.3.2.1.6 | **Track module** | 7.4d | 2015-07-22 16:12 | 2015-08-03 10:24 |  | 0d |  |
| 265 |  | Tracking | 1d | 2015-07-22 16:12 | 2015-07-23 16:12 | 229 | 6.1d |  |
| 266 |  | Cancel track | 0.3d | 2015-08-03 08:00 | 2015-08-03 10:24 | 265 | 0d | start no earlier than 2015-08-03 08:00 |
| 267 | 1.3.2.1.7 | **Favorite module** | 7.1d | 2015-08-03 10:24 | 2015-08-12 11:12 |  | 15.1d |  |
| 268 |  | View favorite places | 0.5d | 2015-08-03 10:24 | 2015-08-03 15:24 | 266 | 15.1d |  |
| 269 |  | Add favorite places | 0.5d | 2015-08-03 15:24 | 2015-08-05 09:36 | 268 | 15.1d |  |
| 270 |  | Edit favorite places | 0.7d | 2015-08-05 09:36 | 2015-08-06 11:12 | 269 | 15.1d |  |
| 271 |  | Delete favorite places | 0.3d | 2015-08-06 11:12 | 2015-08-06 14:36 | 270 | 15.1d |  |
| 272 |  | Search favorite places | 0.4d | 2015-08-06 14:36 | 2015-08-07 08:48 | 271 | 15.1d |  |
| 273 |  | View favorite buses | 0.5d | 2015-08-07 08:48 | 2015-08-07 13:48 | 272 | 15.1d |  |
| 274 |  | Add favorite buses | 0.5d | 2015-08-07 13:48 | 2015-08-11 14:36 | 273 | 15.1d |  |
| 275 |  | Delete favorite buses | 0.3d | 2015-08-11 14:36 | 2015-08-11 17:00 | 274 | 15.1d |  |
| 276 |  | Search favorite buses | 0.4d | 2015-08-12 08:00 | 2015-08-12 11:12 | 275 | 15.1d |  |
| 277 |  | Web service | 5d | 2015-07-23 16:12 | 2015-07-30 16:12 | 229 | 1.4d |  |
| 278 |  | Complete coding | 0d | 2015-08-03 10:24 | 2015-08-03 10:24 | 277, 178, 239, 245, 257, 263, 266 | 0d | start no earlier than 2015-07-29 08:00 |
| 279 | 1.3.3 | **Progress report 4** | 0.5d | 2015-08-03 10:24 | 2015-08-03 15:24 |  | 0d |  |
| 280 |  | Develop Progress Report 4 | 0.3d | 2015-08-03 10:24 | 2015-08-03 13:48 | 235, 278 | 0d |  |

| ID | WBS | Task | Duration | Start | Finish | Predecessors | Total float | Constraint |
| --- | --- | --- | --- | --- | --- | --- | --- | --- |
| 281 |  | Review Progress Report 4 | 0.1d | 2015-08-03 13:48 | 2015-08-03 14:36 | 280 | 0d |  |
| 282 |  | Update Progress Report 4 | 0.1d | 2015-08-03 14:36 | 2015-08-03 15:24 | 281 | 0d |  |
| 283 |  | Complete Progress Report 4 | 0d | 2015-08-03 15:24 | 2015-08-03 15:24 | 282 | 0d |  |
| 284 | 1.3.4 | **Report no.4** | 4d | 2015-08-03 13:48 | 2015-08-07 13:48 |  | 0d |  |
| 285 |  | Develop Report no.4 (draft version) | 1d | 2015-08-03 13:48 | 2015-08-04 13:48 | 235, 278, 280 | 0d |  |
| 286 |  | Review Report no.4 (draft version) | 1d | 2015-08-04 13:48 | 2015-08-05 13:48 | 285 | 0d |  |
| 287 |  | Update Report no.4 (draft version) | 1d | 2015-08-05 13:48 | 2015-08-06 13:48 | 286 | 0d |  |
| 288 |  | Submit Report no.4 (first version) | 0d | 2015-08-06 13:48 | 2015-08-06 13:48 | 287 | 0d |  |
| 289 |  | Revise after got comments for Report no.4 | 1d | 2015-08-06 13:48 | 2015-08-07 13:48 | 288 | 0d |  |
| 290 |  | Submit Report no.4 (final version) | 0d | 2015-08-07 13:48 | 2015-08-07 13:48 | 289 | 0d |  |
| 291 | 1.3.5 | **Testing** | 24.3d | 2015-07-15 11:12 | 2015-08-18 14:36 |  | 8.9d |  |
| 292 | 1.3.5.1 | **Execute test & fix bugs** | 23.1d | 2015-07-15 11:12 | 2015-08-17 12:00 |  | 8.9d |  |
| 293 | 1.3.5.1.1 | **Round 1** | 20.5d | 2015-07-15 11:12 | 2015-08-12 16:12 |  | 8.9d |  |
| 294 | 1.3.5.1.1.1 | **Execute unit test** | 20.5d | 2015-07-15 11:12 | 2015-08-12 16:12 |  | 8.9d |  |
| 295 |  | Bus driver module | 0.8d | 2015-07-21 08:00 | 2015-07-21 15:24 | 178, 207, 229 | 5.5d |  |
| 296 |  | Common module | 0.4d | 2015-07-23 13:48 | 2015-07-23 17:00 | 207, 239 | 3.3d | start no earlier than 2015-07-16 08:00 |
| 297 |  | Account Management module | 1d | 2015-07-20 08:00 | 2015-07-20 17:00 | 207, 245 | 6.3d | start no earlier than 2015-07-20 08:00 |
| 298 |  | Bus module | 0.8d | 2015-07-22 15:24 | 2015-07-23 13:48 | 207, 252 | 3.7d | start no earlier than 2015-07-21 08:00 |
| 299 |  | Path Finder module | 1d | 2015-07-21 15:24 | 2015-07-22 15:24 | 207, 257 | 4.5d | start no earlier than 2015-07-20 08:00 |
| 300 |  | Reminder module | 0.8d | 2015-07-15 11:12 | 2015-07-16 09:36 | 207, 263 | 9.1d | start no earlier than 2015-07-15 08:00 |
| 301 |  | Track module | 1d | 2015-08-03 10:24 | 2015-08-04 10:24 | 207, 266 | 21.7d | start no earlier than 2015-07-31 08:00 |
| 302 |  | Favorite module | 0.5d | 2015-08-12 11:12 | 2015-08-12 16:12 | 207, 276 | 15.1d | start no earlier than 2015-08-05 08:00 |
| 303 |  | Fix bugs unit test | 3d | 2015-07-23 17:00 | 2015-07-28 17:00 | 295, 296, 297, 298, 299, 300 | 3.3d |  |
| 304 |  | Execute integration test | 0.6d | 2015-08-03 10:24 | 2015-08-03 16:12 | 303, 278 | 0d |  |
| 305 |  | Fix bugs integration test | 1d | 2015-08-03 16:12 | 2015-08-04 16:12 | 304 | 0d |  |
| 306 |  | Execute system test | 0.5d | 2015-08-04 16:12 | 2015-08-05 11:12 | 305 | 0d |  |
| 307 |  | Fix bugs system test | 0.5d | 2015-08-05 11:12 | 2015-08-05 16:12 | 306 | 0d |  |
| 308 | 1.3.5.1.2 | **Round 2** | 6.6d | 2015-08-05 16:12 | 2015-08-14 12:00 |  | 1.9d |  |
| 309 | 1.3.5.1.2.1 | **Execute unit test** | 3.5d | 2015-08-05 16:12 | 2015-08-11 11:12 |  | 1.9d |  |
| 310 |  | Bus driver module | 0.5d | 2015-08-06 14:36 | 2015-08-07 09:36 | 307 | 1.4d |  |
| 311 |  | Common module | 0.3d | 2015-08-10 08:48 | 2015-08-10 11:12 | 307 | 0.2d |  |
| 312 |  | Account Management module | 0.2d | 2015-08-10 11:12 | 2015-08-10 13:48 | 307 | 0d |  |
| 313 |  | Bus module | 0.5d | 2015-08-07 09:36 | 2015-08-07 14:36 | 307 | 0.9d |  |
| 314 |  | Path Finder module | 0.8d | 2015-08-05 16:12 | 2015-08-06 14:36 | 307 | 1.9d |  |
| 315 |  | Reminder module | 0.3d | 2015-08-11 08:48 | 2015-08-11 11:12 | 307 | 16.6d |  |
| 316 |  | Track module | 0.5d | 2015-08-10 13:48 | 2015-08-11 08:48 | 307 | 16.9d |  |
| 317 |  | Favorite module | 0.4d | 2015-08-07 14:36 | 2015-08-10 08:48 | 307 | 0.5d |  |
| 318 |  | Fix bugs unit test | 1d | 2015-08-10 13:48 | 2015-08-11 13:48 | 310, 311, 312, 313, 314, 317 | 0d |  |
| 319 |  | Execute integration test | 0.8d | 2015-08-11 13:48 | 2015-08-12 11:12 | 318 | 0d |  |
| 320 |  | Fix bugs integration test | 1d | 2015-08-12 11:12 | 2015-08-13 11:12 | 319 | 0d |  |
| 321 |  | Execute system test | 0.5d | 2015-08-13 11:12 | 2015-08-13 16:12 | 320 | 0d |  |
| 322 |  | Fix bugs system test | 0.6d | 2015-08-13 16:12 | 2015-08-14 12:00 | 321 | 0d |  |
| 323 |  | Execute acceptance test & collect data | 1d | 2015-08-14 13:00 | 2015-08-17 12:00 | 322 | 0d |  |
| 324 |  | Complete execute test | 0d | 2015-08-17 12:00 | 2015-08-17 12:00 | 323 | 0d |  |
| 325 | 1.3.5.3 | **Test Report** | 1.2d | 2015-08-17 13:00 | 2015-08-18 14:36 |  | 0d |  |
| 326 |  | Develop test report | 0.4d | 2015-08-17 13:00 | 2015-08-17 16:12 | 324 | 0d |  |
| 327 |  | Review test report | 0.4d | 2015-08-17 16:12 | 2015-08-18 10:24 | 326 | 0d |  |
| 328 |  | Update test report | 0.4d | 2015-08-18 10:24 | 2015-08-18 14:36 | 327 | 0d |  |
| 329 |  | Complete test report | 0d | 2015-08-18 14:36 | 2015-08-18 14:36 | 328 | 0d |  |
| 330 | 1.3.6 | **Quality report** | 0.7d | 2015-08-18 14:36 | 2015-08-19 11:12 |  | 0d |  |
| 331 |  | Develop quality report | 0.3d | 2015-08-18 14:36 | 2015-08-18 17:00 | 329 | 0d |  |
| 332 |  | Review quality report | 0.2d | 2015-08-19 08:00 | 2015-08-19 09:36 | 331 | 0d |  |
| 333 |  | Update quality report | 0.2d | 2015-08-19 09:36 | 2015-08-19 11:12 | 332 | 0d |  |
| 334 |  | Complete quality report | 0d | 2015-08-19 11:12 | 2015-08-19 11:12 | 333 | 0d |  |
| 335 | 1.3.7 | **Progress report 5** | 0.5d | 2015-08-19 11:12 | 2015-08-19 16:12 |  | 0d |  |
| 336 |  | Develop Progress Report 5 | 0.3d | 2015-08-19 11:12 | 2015-08-19 14:36 | 334, 277 | 0d |  |
| 337 |  | Review Progress Report 5 | 0.1d | 2015-08-19 14:36 | 2015-08-19 15:24 | 336 | 0d |  |
| 338 |  | Update Progress Report 5 | 0.1d | 2015-08-19 15:24 | 2015-08-19 16:12 | 337 | 0d |  |
| 339 |  | Complete Progress Report 5 | 0d | 2015-08-19 16:12 | 2015-08-19 16:12 | 338 | 0d |  |
| 340 | 1.3.8 | **Report no.5** | 0.5d | 2015-08-19 16:12 | 2015-08-20 11:12 |  | 0d |  |
| 341 |  | Develop Report no.5 (draft version) | 0.1d | 2015-08-19 16:12 | 2015-08-19 17:00 | 329, 334, 339 | 0d |  |
| 342 |  | Review Report no.5 (draft version) | 0.2d | 2015-08-20 08:00 | 2015-08-20 09:36 | 341 | 0d |  |
| 343 |  | Update Report no.5 (draft version) | 0.1d | 2015-08-20 09:36 | 2015-08-20 10:24 | 342 | 0d |  |
| 344 |  | Submit Report no.5 (first version) | 0d | 2015-08-20 10:24 | 2015-08-20 10:24 | 343 | 0d |  |
| 345 |  | Revise after got comments for Report no.5 | 0.1d | 2015-08-20 10:24 | 2015-08-20 11:12 | 344 | 0d |  |
| 346 |  | Submit Report no.5 (final version) | 0d | 2015-08-20 11:12 | 2015-08-20 11:12 | 345 | 0d |  |
| 347 | 1.4 | **Termination** | 9.6d | 2015-08-20 11:12 | 2015-09-02 17:00 |  | 0d |  |
| 348 | 1.4.1 | **Report no.6** | 8.1d | 2015-08-20 11:12 | 2015-09-01 12:00 |  | 0d |  |
| 349 |  | Complete source code & final report | 2.5d | 2015-08-20 11:12 | 2015-08-24 16:12 | 346 | 0d |  |
| 350 |  | Develop installation guide | 0.5d | 2015-08-24 16:12 | 2015-08-25 11:12 | 349 | 0d |  |

| ID | WBS | Task | Duration | Start | Finish | Predecessors | Total float |
| --- | --- | --- | --- | --- | --- | --- | --- |
| 351 |  | Develop user guideline | 0.8d | 2015-08-25 11:12 | 2015-08-26 09:36 | 350 | 0d |
| 352 |  | Complete Project Result Assessment | 1d | 2015-08-26 09:36 | 2015-08-27 09:36 | 351 | 0d |
| 353 |  | Conduct lessons learned | 0.6d | 2015-08-27 09:36 | 2015-08-27 15:24 | 352 | 0d |
| 354 |  | Complete Presentation slide | 1d | 2015-08-27 15:24 | 2015-08-28 15:24 | 353 | 0d |
| 355 |  | Review Report no.6 (draft version) | 1d | 2015-08-28 15:24 | 2015-08-31 15:24 | 354 | 0d |
| 356 |  | Update Report no.6 (draft version) | 0.5d | 2015-08-31 15:24 | 2015-09-01 10:24 | 355 | 0d |
| 357 |  | Submit Report no.6 (first version) | 0d | 2015-09-01 10:24 | 2015-09-01 10:24 | 356 | 0d |
| 358 |  | Revise after got comments for Report no.6 | 0.2d | 2015-09-01 10:24 | 2015-09-01 12:00 | 357 | 0d |
| 359 |  | Submit Report no.6 (final version) | 0d | 2015-09-01 12:00 | 2015-09-01 12:00 | 358 | 0d |
| 360 |  | Submit Final report & CD source code | 0d | 2015-09-01 12:00 | 2015-09-01 12:00 | 359 | 0d |
| 361 | 1.4.2 | **Pre-closing** | 1d | 2015-09-01 13:00 | 2015-09-02 12:00 |  | 0d |
| 362 |  | Training presentation | 1d | 2015-09-01 13:00 | 2015-09-02 12:00 | 360 | 0d |
| 363 | 1.4.3 | **Closing** | 0.5d | 2015-09-02 13:00 | 2015-09-02 17:00 |  | 0d |
| 364 |  | Present Capstone Project & Completed | 0.5d | 2015-09-02 13:00 | 2015-09-02 17:00 | 362 | 0d |

## Version 2 (saved 2015-08-26)

Last finish 2015-09-02 → 2015-08-28 (-5d). Complete tasks 0 → 279.

Removed: 121 View account profile; 141 Suspend/Unsuspend all reminder; 201 Sync module; 203 Search module

Changed:

| ID | Task | Start | Finish | Duration | Complete | Total float |
| --- | --- | --- | --- | --- | --- | --- |
| 1 | **BL** | 2015-05-11 08:00 A | 2015-09-02 17:00 → 2015-08-28 12:00 A (-5d) | 78d → 74.5d | 0% → 100% | 0d → none |
| 2 | **Initiation** | 2015-05-11 08:00 A | 2015-05-28 08:48 → 2015-05-25 16:12 A (-3d) | 13.1d → 10.9d | 0% → 100% | 0d → none |
| 3 | System feasible study | 2015-05-11 08:00 A | 2015-05-11 10:24 A |  | 0% → 100% | 0d → none |
| 4 | Define business situation | 2015-05-11 10:24 A | 2015-05-11 14:36 A |  | 0% → 100% | 0d → none |
| 5 | Develop project idea | 2015-05-11 14:36 A | 2015-05-12 08:48 A |  | 0% → 100% | 0d → none |
| 6 | Define project and system scope | 2015-05-12 08:48 A | 2015-05-12 13:48 A |  | 0% → 100% | 0d → none |
| 7 | Prepare project | 2015-05-12 13:48 A | 2015-05-13 13:48 A |  | 0% → 100% | 0d → none |
| 8 | Kick-off meeting | 2015-05-13 13:48 A | 2015-05-13 17:00 A |  | 0% → 100% | 0d → none |
| 9 | Q & A Management | 2015-05-14 08:00 A | 2015-05-14 10:24 A |  | 0% → 100% | 0.4d → none |
| 10 | **Technologies** | 2015-05-19 14:36 A | 2015-05-28 08:48 → 2015-05-25 16:12 A (-3d) | 6.4d → 4.2d | 0% → 100% | 64.9d → none |
| 11 | Research development technologies | 2015-05-19 14:36 A | 2015-05-22 16:12 A |  | 0% → 100% | 64.9d → none |
| 12 | Install and configure Android Studio and Android SDK | 2015-05-22 16:12 A | 2015-05-25 16:12 A |  | 0% → 100% | 67.1d → none |
| 13 | Install and configure NetBeans, PHP | 2015-05-22 16:12 A | 2015-05-25 09:36 A |  | 0% → 100% | 64.9d → none |
| 14 | Study web service | 2015-05-25 09:36 A | 2015-05-28 08:48 → 2015-05-25 10:24 A (-3d) | 0.4d → 0.1d | 0% → 100% | 64.9d → none |
| 15 | **SRS/PP/Concept design Review checklist** | 2015-05-14 10:24 A | 2015-05-18 10:24 A |  | 0% → 100% | 0.4d → none |
| 16 | Develop review checklist | 2015-05-14 10:24 A | 2015-05-15 15:24 A |  | 0% → 100% | 0.4d → none |
| 17 | Review review checklist | 2015-05-15 15:24 A | 2015-05-15 17:00 A |  | 0% → 100% | 0.4d → none |
| 18 | Update review checklist | 2015-05-18 08:00 A | 2015-05-18 10:24 A |  | 0% → 100% | 0.4d → none |
| 19 | Complete review checklist | 2015-05-18 10:24 A | 2015-05-18 10:24 A |  | 0% → 100% | 0.4d → none |
| 20 | **Requirements** | 2015-05-14 08:00 A | 2015-05-19 11:12 A |  | 0% → 100% | 0d → none |
| 21 | **User Requirements Specification** | 2015-05-14 08:00 A | 2015-05-18 14:36 A |  | 0% → 100% | 0d → none |
| 22 | Collect business requirements and processes | 2015-05-14 08:00 A | 2015-05-14 12:00 A |  | 0% → 100% | 0d → none |
| 23 | Create draft requirements | 2015-05-14 13:00 A | 2015-05-15 12:00 A |  | 0% → 100% | 0d → none |
| 24 | Complete draft requirements | 2015-05-15 12:00 A | 2015-05-15 12:00 A |  | 0% → 100% | 0d → none |
| 25 | Develop main function and processes | 2015-05-15 13:00 A | 2015-05-18 14:36 A |  | 0% → 100% | 0d → none |
| 26 | Review User Requirement Specification with checklist | 2015-05-18 14:36 A | 2015-05-18 17:00 A |  | 0% → 100% | 0d → none |
| 27 | Update User Requirement Specification | 2015-05-19 08:00 A | 2015-05-19 11:12 A |  | 0% → 100% | 0d → none |
| 28 | Complete User Requirement Specification | 2015-05-19 11:12 A | 2015-05-19 11:12 A |  | 0% → 100% | 0d → none |
| 29 | **Concept design** | 2015-05-15 13:00 A | 2015-05-19 17:00 A |  | 0% → 100% | 0d → none |
| 30 | Create draft concept design | 2015-05-15 13:00 A | 2015-05-18 17:00 A |  | 0% → 100% | 0d → none |
| 31 | Review concept design with checklist | 2015-05-19 08:00 A | 2015-05-19 12:00 A |  | 0% → 100% | 0d → none |
| 32 | Update concept design | 2015-05-19 13:00 A | 2015-05-19 17:00 A |  | 0% → 100% | 0d → none |
| 33 | Complete concept design | 2015-05-19 17:00 A | 2015-05-19 17:00 A |  | 0% → 100% | 0d → none |
| 34 | **Project plan** | 2015-05-14 08:00 A | 2015-05-25 10:24 A |  | 0% → 100% | 0d → none |
| 35 | Develop project definition | 2015-05-14 08:00 A | 2015-05-14 14:36 A |  | 0% → 100% | 0d → none |
| 36 | Develop Work Breakdown Structure | 2015-05-14 14:36 A | 2015-05-15 13:48 A |  | 0% → 100% | 0d → none |
| 37 | Create Project Schedule | 2015-05-15 13:48 A | 2015-05-19 13:48 A |  | 0% → 100% | 0d → none |
| 38 | Create Configuration Management Plan version 1.0 | 2015-05-20 13:00 A | 2015-05-21 10:24 A |  | 0% → 100% | 0d → none |
| 39 | Create Project Plan (first version) | 2015-05-21 10:24 A | 2015-05-22 15:24 A |  | 0% → 100% | 0d → none |
| 40 | Review Project Plan (first version) | 2015-05-22 15:24 A | 2015-05-25 10:24 A |  | 0% → 100% | 0d → none |
| 41 | Complete Project Plan (final version) | 2015-05-25 10:24 A | 2015-05-25 10:24 A |  | 0% → 100% | 0d → none |
| 42 | **Progress Report 1** | 2015-05-19 13:48 A | 2015-05-20 10:24 A |  | 0% → 100% | 0d → none |
| 43 | Develop Progress Report 1 | 2015-05-19 13:48 A | 2015-05-19 17:00 A |  | 0% → 100% | 0d → none |
| 44 | Review Progress Report 1 | 2015-05-20 08:00 A | 2015-05-20 09:36 A |  | 0% → 100% | 0d → none |
| 45 | Update Progress Report 1 | 2015-05-20 09:36 A | 2015-05-20 10:24 A |  | 0% → 100% | 0d → none |
| 46 | Complete Progress Report 1 | 2015-05-20 10:24 A | 2015-05-20 10:24 A |  | 0% → 100% | 0d → none |
| 47 | Submit PP, URS, Concept Design | 2015-05-25 10:24 A | 2015-05-25 10:24 A |  | 0% → 100% | 0d → none |
| 48 | **Solution** | 2015-05-25 10:24 A | 2015-07-20 14:36 → 2015-07-09 17:00 A (-11d) | 35.4d → 28.7d | 0% → 100% | 0d → none |
| 49 | **Requirements** | 2015-05-25 10:24 A | 2015-06-03 12:00 A |  | 0% → 100% | 0d → none |
| 50 | **Software Requirements Specification** | 2015-05-25 10:24 A | 2015-06-03 12:00 A |  | 0% → 100% | 0d → none |
| 51 | **Functional Requirement Specification** | 2015-05-25 10:24 A | 2015-06-01 09:36 A |  | 0% → 100% | 0d → none |
| 52 | **Bus Driver Module** | 2015-05-25 10:24 A | 2015-05-26 09:36 A |  | 0% → 100% | 0.1d → none |
| 53 | Send bus info module | 2015-05-25 10:24 A | 2015-05-26 09:36 A |  | 0% → 100% | 0.1d → none |
| 54 | **Bus Rider Module** | 2015-05-25 10:24 A | 2015-06-01 09:36 A |  | 0% → 100% | 0d → none |
| 55 | **Common module** | 2015-05-27 15:24 A | 2015-05-28 10:24 A |  | 0% → 100% | 64.7d → none |
| 56 | Change app setting | 2015-05-27 15:24 A | 2015-05-28 10:24 A |  | 0% → 100% | 64.7d → none |
| 57 | **Account Management module** | 2015-05-26 09:36 A | 2015-05-27 15:24 A |  | 0% → 100% | 2.5d → none |
| 58 | Log in | 2015-05-26 09:36 A | 2015-05-26 15:24 A |  | 0% → 100% | 2.5d → none |
| 59 | Log out | 2015-05-26 15:24 A | 2015-05-27 08:48 A |  | 0% → 100% | 2.5d → none |
| 60 | Change account info | 2015-05-27 08:48 A | 2015-05-27 10:24 A |  | 0% → 100% | 2.5d → none |
| 61 | Forgot password | 2015-05-27 10:24 A | 2015-05-27 15:24 A |  | 0% → 100% | 2.5d → none |
| 62 | **Bus module** | 2015-05-25 10:24 A | 2015-05-27 17:00 A |  | 0% → 100% | 2.3d → none |
| 63 | View bus list | 2015-05-25 10:24 A | 2015-05-25 13:48 A |  | 0% → 100% | 2.3d → none |
| 64 | View bus info | 2015-05-25 13:48 A | 2015-05-25 16:12 A |  | 0% → 100% | 2.3d → none |
| 65 | View bus route | 2015-05-25 16:12 A | 2015-05-26 10:24 A |  | 0% → 100% | 2.3d → none |
| 66 | View nearest bus | 2015-05-26 10:24 A | 2015-05-26 16:12 A |  | 0% → 100% | 2.3d → none |
| 67 | View bus map | 2015-05-26 16:12 A | 2015-05-27 12:00 A |  | 0% → 100% | 2.3d → none |
| 68 | View bus near me | 2015-05-27 13:00 A | 2015-05-27 17:00 A |  | 0% → 100% | 2.3d → none |
| 69 | **Path Finder module** | 2015-05-26 09:36 A | 2015-05-28 16:12 A |  | 0% → 100% | 0.1d → none |
| 70 | Find path | 2015-05-26 09:36 A | 2015-05-27 09:36 A |  | 0% → 100% | 0.1d → none |

| ID | Task | Start | Finish | Duration | Complete | Total float | Predecessors | Other |
| --- | --- | --- | --- | --- | --- | --- | --- | --- |
| 71 | View paths found | 2015-05-27 09:36 A | 2015-05-27 13:48 A |  | 0% → 100% | 0.1d → none |  |  |
| 72 | View path detail | 2015-05-27 13:48 A | 2015-05-28 10:24 A |  | 0% → 100% | 0.1d → none |  |  |
| 73 | View direction | 2015-05-28 10:24 A | 2015-05-28 16:12 A |  | 0% → 100% | 0.1d → none |  |  |
| 74 | **Reminder module** | 2015-05-28 16:12 A | 2015-06-01 09:36 A |  | 0% → 100% | 0.1d → none |  |  |
| 75 | View bus reminder | 2015-05-28 16:12 A | 2015-05-29 11:12 A |  | 0% → 100% | 0.1d → none |  |  |
| 76 | Add reminder | 2015-05-29 11:12 A | 2015-05-29 13:48 A |  | 0% → 100% | 0.1d → none |  |  |
| 77 | Edit reminder | 2015-05-29 13:48 A | 2015-05-29 16:12 A |  | 0% → 100% | 0.1d → none |  |  |
| 78 | Delete reminder | 2015-05-29 16:12 A | 2015-05-29 17:00 A |  | 0% → 100% | 0.1d → none |  |  |
| 79 | Suspend/Unsuspend a chosen reminder | 2015-06-01 08:00 A | 2015-06-01 09:36 A |  | 0% → 100% | 0.1d → none |  |  |
| 80 | **Track module** | 2015-05-25 10:24 A | 2015-05-26 12:00 A |  | 0% → 100% | 0d → none |  |  |
| 81 | Tracking | 2015-05-25 10:24 A | 2015-05-26 10:24 A |  | 0% → 100% | 0d → none |  |  |
| 82 | Cancel track | 2015-05-26 10:24 A | 2015-05-26 12:00 A |  | 0% → 100% | 0d → none |  |  |
| 83 | **Favorite module** | 2015-05-26 13:00 A | 2015-05-28 15:24 A |  | 0% → 100% | 0d → none |  |  |
| 84 | View favorite places | 2015-05-26 13:00 A | 2015-05-26 16:12 A |  | 0% → 100% | 0d → none |  |  |
| 85 | Add favorite places | 2015-05-26 16:12 A | 2015-05-27 08:48 A |  | 0% → 100% | 0d → none |  |  |
| 86 | Edit favorite places | 2015-05-27 08:48 A | 2015-05-27 11:12 A |  | 0% → 100% | 0d → none |  |  |
| 87 | Delete favorite places | 2015-05-27 11:12 A | 2015-05-27 13:48 A |  | 0% → 100% | 0d → none |  |  |
| 88 | Search favorite places | 2015-05-27 13:48 A | 2015-05-27 15:24 A |  | 0% → 100% | 0d → none |  |  |
| 89 | View favorite buses | 2015-05-27 15:24 A | 2015-05-28 09:36 A |  | 0% → 100% | 0d → none |  |  |
| 90 | Add favorite buses | 2015-05-28 09:36 A | 2015-05-28 11:12 A |  | 0% → 100% | 0d → none |  |  |
| 91 | Delete favorite buses | 2015-05-28 11:12 A | 2015-05-28 13:48 A |  | 0% → 100% | 0d → none |  |  |
| 92 | Search favorite buses | 2015-05-28 13:48 A | 2015-05-28 15:24 A |  | 0% → 100% | 0d → none |  |  |
| 93 | **Non-functional Requirement Specification** | 2015-05-28 15:24 A | 2015-06-01 10:24 A |  | 0% → 100% | 0d → none |  |  |
| 94 | Develop User Interface Requirement | 2015-05-28 15:24 A | 2015-05-29 15:24 A |  | 0% → 100% | 0d → none |  |  |
| 95 | Develop Performance Requirement | 2015-05-29 15:24 A | 2015-06-01 10:24 A |  | 0% → 100% | 0d → none |  |  |
| 96 | Review Software Requirement Specification with checklist | 2015-06-01 15:24 A | 2015-06-02 17:00 A |  | 0% → 100% | 0d → none |  |  |
| 97 | Update Software Requirement Specification | 2015-06-03 08:00 A | 2015-06-03 12:00 A |  | 0% → 100% | 0d → none |  |  |
| 98 | Complete Software Requirement Specification | 2015-06-03 12:00 A | 2015-06-03 12:00 A |  | 0% → 100% | 0d → none |  |  |
| 99 | **Design** | 2015-05-29 15:24 A | 2015-07-06 08:48 → 2015-07-08 11:12 A (+2d) | 20.3d → 22.6d | 0% → 100% | 0d → none |  |  |
| 100 | **Design Review checklist** | 2015-05-29 15:24 A | 2015-06-02 08:48 A |  | 0% → 100% | 0d → none |  |  |
| 101 | Develop review checklist | 2015-05-29 15:24 A | 2015-06-01 15:24 A |  | 0% → 100% | 0d → none |  |  |
| 102 | Review review checklist | 2015-06-01 15:24 A | 2015-06-01 16:12 A |  | 0% → 100% | 0d → none |  |  |
| 103 | Update review checklist | 2015-06-01 16:12 A | 2015-06-02 08:48 A |  | 0% → 100% | 0d → none |  |  |
| 104 | Complete review checklist | 2015-06-02 08:48 A | 2015-06-02 08:48 A |  | 0% → 100% | 0d → none |  |  |
| 105 | **Architecture design** | 2015-06-03 13:00 A | 2015-06-05 12:00 A |  | 0% → 100% | 0d → none |  |  |
| 106 | Define system structure and collect system features | 2015-06-03 13:00 A | 2015-06-04 12:00 A |  | 0% → 100% | 0d → none |  |  |
| 107 | Study & choose System Architecture | 2015-06-04 13:00 A | 2015-06-04 17:00 A |  | 0% → 100% | 0d → none |  |  |
| 108 | Review Architecture Design with checklist | 2015-06-05 08:00 A | 2015-06-05 10:24 A |  | 0% → 100% | 0d → none |  |  |
| 109 | Update Architecture Design | 2015-06-05 10:24 A | 2015-06-05 12:00 A |  | 0% → 100% | 0d → none |  |  |
| 110 | Complete System Architecture version 1.0 | 2015-06-05 12:00 A | 2015-06-05 12:00 A |  | 0% → 100% | 0d → none |  |  |
| 111 | **Detailed design** | 2015-06-05 13:00 A | 2015-07-06 08:48 → 2015-07-08 11:12 A (+2d) | 15.6d → 17.9d | 0% → 100% | 0d → none |  |  |
| 112 | **User Interface design** | 2015-06-05 13:00 A | 2015-07-02 08:48 → 2015-07-06 17:00 A (+4d) | 13.6d → 16.5d | 0% → 100% | 0d → none |  |  |
| 113 | **Bus Driver Module** | 2015-06-11 13:48 → 2015-06-10 08:00 A (-1d) | 2015-06-11 17:00 → 2015-06-10 11:12 A (-1d) |  | 0% → 100% | 9.1d → none |  |  |
| 114 | Send bus info module | 2015-06-11 13:48 → 2015-06-10 08:00 A (-1d) | 2015-06-11 17:00 → 2015-06-10 11:12 A (-1d) |  | 0% → 100% | 9.1d → none |  |  |
| 115 | **Bus Rider Module** | 2015-06-05 13:00 A | 2015-07-02 08:48 → 2015-07-06 17:00 A (+4d) | 13.6d → 16.5d | 0% → 100% | 0d → none |  |  |
| 116 | **Common module** | 2015-06-10 09:36 → 2015-06-10 08:00 A | 2015-06-11 13:48 → 2015-06-10 11:12 A (-1d) | 1.4d → 0.4d | 0% → 100% | 9.5d → none |  |  |
| 117 | Change app setting | 2015-06-10 09:36 → 2015-06-10 08:00 A | 2015-06-11 13:48 → 2015-06-10 11:12 A (-1d) | 1.4d → 0.4d | 0% → 100% | 9.5d → none |  |  |
| 118 | **Account Management module** | 2015-06-18 14:36 → 2015-06-18 08:00 A | 2015-07-01 10:24 → 2015-06-19 10:24 A (-12d) | 3.6d → 1.3d | 0% → 100% | 0.8d → none |  |  |
| 119 | Log in | 2015-06-18 14:36 → 2015-06-18 08:00 A | 2015-06-30 10:24 → 2015-06-18 12:00 A (-12d) | 0.6d → 0.5d | 0% → 100% | 0.8d → none |  |  |
| 120 | Log out | 2015-06-30 10:24 → 2015-06-18 13:00 A (-12d) | 2015-06-30 13:48 → 2015-06-18 15:24 A (-12d) |  | 0% → 100% | 0.8d → none |  |  |
| 121 | Change account info | 2015-06-30 15:24 → 2015-06-18 15:24 A (-12d) | 2015-06-30 17:00 → 2015-06-18 17:00 A (-12d) |  | 0% → 100% | 0.8d → none | View account profile → 120 |  |
| 122 | Forgot password | 2015-07-01 08:00 → 2015-06-19 08:00 A (-12d) | 2015-07-01 10:24 → 2015-06-19 10:24 A (-12d) |  | 0% → 100% | 0.8d → none |  |  |
| 123 | **Bus module** | 2015-06-10 14:36 → 2015-06-16 15:24 A (+6d) | 2015-06-18 13:48 → 2015-07-06 15:24 A (+18d) | 5.9d → 9d | 0% → 100% | 4.5d → none |  |  |
| 124 | View bus list | 2015-06-10 14:36 → 2015-06-16 15:24 A (+6d) | 2015-06-11 10:24 → 2015-06-17 08:48 A (+6d) |  | 0% → 100% | 4.8d → none |  | constraint none → finish no earlier than 2015-06-08 17:00 |
| 125 | View bus info | 2015-06-11 10:24 → 2015-06-17 08:48 A (+6d) | 2015-06-11 13:48 → 2015-06-19 11:12 A (+8d) |  | 0% → 100% | 4.8d → none |  |  |
| 126 | View bus route | 2015-06-11 13:48 → 2015-06-19 11:12 A (+8d) | 2015-06-12 09:36 → 2015-06-29 10:24 A (+17d) | 0.6d → 0.5d | 0% → 100% | 4.8d → none |  |  |
| 127 | View nearest bus | 2015-06-12 09:36 → 2015-06-30 09:36 A (+18d) | 2015-06-15 09:36 → 2015-06-30 16:12 A (+15d) | 1d → 0.7d | 0% → 100% | 4.8d → none |  | constraint start no earlier than 2015-06-10 08:00 → finish no earlier than 2015-06-12 17:00 |
| 128 | View bus map | 2015-06-15 16:12 → 2015-07-02 08:00 A (+17d) | 2015-06-16 14:36 → 2015-07-02 15:24 A (+16d) |  | 0% → 100% | 4.5d → none |  | constraint start no earlier than 2015-06-11 08:00 → start no earlier than 2015-06-16 08:00 |
| 129 | View bus near me | 2015-06-17 13:48 → 2015-07-06 09:36 A (+19d) | 2015-06-18 13:48 → 2015-07-06 15:24 A (+18d) | 1d → 0.6d | 0% → 100% | 4.5d → none |  | constraint start no earlier than 2015-06-15 08:00 → start no earlier than 2015-06-17 08:00 |
| 130 | **Path Finder module** | 2015-06-05 13:00 A | 2015-06-10 09:36 → 2015-06-09 17:00 A (-1d) | 2.7d → 2.5d | 0% → 100% | 2.8d → none |  |  |
| 131 | Find path | 2015-06-05 13:00 A | 2015-06-08 12:00 A |  | 0% → 100% | 2.8d → none |  |  |
| 132 | View paths found | 2015-06-08 13:00 A | 2015-06-08 16:12 A |  | 0% → 100% | 2.8d → none |  |  |
| 133 | View path detail | 2015-06-08 16:12 A | 2015-06-09 13:48 → 2015-06-09 12:00 A | 0.7d → 0.6d | 0% → 100% | 2.8d → none |  |  |
| 134 | View direction | 2015-06-09 13:48 → 2015-06-09 13:00 A | 2015-06-10 09:36 → 2015-06-09 17:00 A (-1d) | 0.6d → 0.5d | 0% → 100% | 2.8d → none |  |  |
| 135 | **Reminder module** | 2015-06-15 09:36 → 2015-07-01 10:24 A (+16d) | 2015-06-29 16:12 → 2015-07-06 09:36 A (+7d) | 5.7d → 2.9d | 0% → 100% | 2.2d → none |  |  |
| 136 | View bus reminder | 2015-06-15 09:36 → 2015-07-01 10:24 A (+16d) | 2015-06-15 14:36 → 2015-07-01 15:24 A (+16d) |  | 0% → 100% | 3.1d → none |  | constraint none → start no earlier than 2015-06-10 08:00 |
| 137 | Add reminder | 2015-06-15 14:36 → 2015-07-01 15:24 A (+16d) | 2015-06-15 16:12 → 2015-07-01 17:00 A (+16d) |  | 0% → 100% | 3.1d → none |  |  |
| 138 | Edit reminder | 2015-06-16 14:36 → 2015-07-03 11:12 A (+17d) | 2015-06-16 17:00 → 2015-07-03 14:36 A (+17d) |  | 0% → 100% | 2.4d → none |  | constraint start no earlier than 2015-06-16 08:00 → start no earlier than 2015-06-15 08:00 |
| 139 | Delete reminder | 2015-06-17 08:00 → 2015-07-03 14:36 A (+16d) | 2015-06-17 08:48 → 2015-07-03 15:24 A (+16d) |  | 0% → 100% | 2.4d → none |  |  |
| 140 | Suspend/Unsuspend a chosen reminder | 2015-06-18 13:48 → 2015-07-06 08:00 A (+18d) | 2015-06-29 16:12 → 2015-07-06 09:36 A (+7d) |  | 0% → 100% | 2.2d → none | Suspend/Unsuspend all reminder → 139 |  |

| ID | Task | Start | Finish | Duration | Complete | Total float | Predecessors | Other |
| --- | --- | --- | --- | --- | --- | --- | --- | --- |
| 141 | **Track module** | 2015-06-17 13:00 → 2015-06-15 15:24 A (-2d) | 2015-06-18 14:36 → 2015-06-17 17:00 A (-1d) | 1.2d → 2.2d | 0% → 100% | 0d → none |  |  |
| 142 | Tracking | 2015-06-17 13:00 → 2015-06-15 15:24 A (-2d) | 2015-06-18 12:00 → 2015-06-17 15:24 A (-1d) |  | 0% → 100% | 0d → none |  |  |
| 143 | Cancel track | 2015-06-18 13:00 → 2015-06-17 15:24 A (-1d) | 2015-06-18 14:36 → 2015-06-17 17:00 A (-1d) |  | 0% → 100% | 0d → none |  |  |
| 144 | **Favorite module** | 2015-06-18 14:36 → 2015-06-29 10:24 A (+11d) | 2015-07-02 08:48 → 2015-07-06 17:00 A (+4d) | 4.4d → 5.7d | 0% → 100% | 0d → none |  |  |
| 145 | View favorite places | 2015-06-18 14:36 → 2015-06-29 10:24 A (+11d) | 2015-06-19 08:48 → 2015-06-29 14:36 A (+10d) |  | 0% → 100% | 0d → none |  |  |
| 146 | Add favorite places | 2015-06-19 08:48 → 2015-06-29 14:36 A (+10d) | 2015-06-19 10:24 → 2015-06-29 16:12 A (+10d) |  | 0% → 100% | 0d → none |  |  |
| 147 | Edit favorite places | 2015-06-19 10:24 → 2015-06-29 16:12 A (+10d) | 2015-06-19 13:48 → 2015-06-30 09:36 A (+11d) |  | 0% → 100% | 0d → none |  |  |
| 148 | Delete favorite places | 2015-06-19 13:48 → 2015-06-30 16:12 A (+11d) | 2015-06-19 15:24 → 2015-07-01 08:48 A (+12d) |  | 0% → 100% | 0d → none |  | constraint none → finish no earlier than 2015-06-19 17:00 |
| 149 | Search favorite places | 2015-06-19 15:24 → 2015-07-01 08:48 A (+12d) | 2015-06-19 17:00 → 2015-07-01 10:24 A (+12d) |  | 0% → 100% | 0d → none |  |  |
| 150 | View favorite buses | 2015-06-29 08:00 → 2015-07-02 15:24 A (+3d) | 2015-06-29 11:12 → 2015-07-03 09:36 A (+4d) |  | 0% → 100% | 0d → none |  |  |
| 151 | Add favorite buses | 2015-06-29 11:12 → 2015-07-03 09:36 A (+4d) | 2015-06-29 13:48 → 2015-07-03 11:12 A (+4d) |  | 0% → 100% | 0d → none |  |  |
| 152 | Delete favorite buses | 2015-06-29 13:48 → 2015-07-03 15:24 A (+4d) | 2015-06-29 15:24 → 2015-07-03 17:00 A (+4d) |  | 0% → 100% | 0d → none |  |  |
| 153 | Search favorite buses | 2015-07-01 16:12 → 2015-07-06 15:24 A (+5d) | 2015-07-02 08:48 → 2015-07-06 17:00 A (+4d) |  | 0% → 100% | 0d → none |  |  |
| 154 | Review Detailed Design with checklist | 2015-07-02 13:48 → 2015-07-07 08:00 A (+5d) | 2015-07-03 13:48 → 2015-07-07 09:36 A (+4d) | 1d → 0.2d | 0% → 100% | 0d → none |  |  |
| 155 | Update Detailed Design | 2015-07-03 13:48 → 2015-07-07 09:36 A (+4d) | 2015-07-06 08:48 → 2015-07-07 14:36 A (+1d) |  | 0% → 100% | 0d → none |  |  |
| 156 | Complete Detailed Design version 1.0 | 2015-07-06 08:48 → 2015-07-08 11:12 A (+2d) | 2015-07-06 08:48 → 2015-07-08 11:12 A (+2d) |  | 0% → 100% | 0d → none |  | resources NamNT → MaiTTT |
| 157 | **Database design** | 2015-06-05 13:00 A | 2015-06-29 15:24 → 2015-06-17 10:24 A (-12d) | 11.3d → 7.8d | 0% → 100% | 0d → none |  |  |
| 158 | Create Databse Design draft version | 2015-06-05 13:00 A | 2015-06-17 12:00 → 2015-06-15 15:24 A (-2d) |  | 0% → 100% | 0d → none |  |  |
| 159 | Review Database Design with checklist | 2015-06-18 10:24 → 2015-06-15 15:24 A (-3d) | 2015-06-18 15:24 → 2015-06-16 10:24 A (-2d) |  | 0% → 100% | 0d → none |  |  |
| 160 | Update Database Design | 2015-06-18 15:24 → 2015-06-16 10:24 A (-2d) | 2015-06-29 15:24 → 2015-06-17 10:24 A (-12d) | 2d → 1d | 0% → 100% | 0d → none |  |  |
| 161 | Complete Database Design version 1.0 | 2015-06-29 15:24 → 2015-06-17 10:24 A (-12d) | 2015-06-29 15:24 → 2015-06-17 10:24 A (-12d) |  | 0% → 100% | 0d → none |  |  |
| 162 | **Class design** | 2015-06-29 15:24 → 2015-06-17 10:24 A (-12d) | 2015-07-02 16:12 → 2015-06-29 10:24 A (-3d) | 3.1d → 3d | 0% → 100% | 0d → none |  |  |
| 163 | Define class/component | 2015-06-29 15:24 → 2015-06-17 10:24 A (-12d) | 2015-07-01 16:12 → 2015-06-19 10:24 A (-12d) | 2.1d → 2d | 0% → 100% | 0d → none |  |  |
| 164 | Review Class Design with checklist | 2015-07-02 08:48 → 2015-06-19 13:48 A (-13d) | 2015-07-02 13:48 → 2015-06-19 17:00 A (-13d) | 0.5d → 0.4d | 0% → 100% | 0d → none |  | constraint none → finish no earlier than 2015-06-19 17:00 |
| 165 | Update Class Design | 2015-07-02 13:48 → 2015-06-29 08:00 A (-3d) | 2015-07-02 16:12 → 2015-06-29 10:24 A (-3d) |  | 0% → 100% | 0d → none |  |  |
| 166 | Complete Class Design version 1.0 | 2015-07-02 16:12 → 2015-06-29 10:24 A (-3d) | 2015-07-02 16:12 → 2015-06-29 10:24 A (-3d) |  | 0% → 100% | 0d → none |  |  |
| 167 | Complete design | 2015-07-06 08:48 → 2015-07-01 08:00 A (-5d) | 2015-07-06 08:48 → 2015-07-01 08:00 A (-5d) |  | 0% → 100% | 0d → none |  | constraint none → start no earlier than 2015-07-06 08:00 |
| 168 | **Progress Report 2** | 2015-07-06 08:48 → 2015-07-08 11:12 A (+2d) | 2015-07-06 13:48 → 2015-07-09 17:00 A (+3d) | 0.5d → 1.6d | 0% → 100% | 0d → none |  |  |
| 169 | Develop Progress Report 2 | 2015-07-06 08:48 → 2015-07-08 11:12 A (+2d) | 2015-07-06 11:12 → 2015-07-09 15:24 A (+3d) |  | 0% → 100% | 0d → none |  | constraint none → start no earlier than 2015-07-01 08:00 |
| 170 | Review Progress Report 2 | 2015-07-06 11:12 → 2015-07-09 15:24 A (+3d) | 2015-07-06 12:00 → 2015-07-09 16:12 A (+3d) |  | 0% → 100% | 0d → none |  | resources NamNT → MaiTTT |
| 171 | Update Progress Report 2 | 2015-07-06 13:00 → 2015-07-09 16:12 A (+3d) | 2015-07-06 13:48 → 2015-07-09 17:00 A (+3d) |  | 0% → 100% | 0d → none |  | resources NamNT → MaiTTT |
| 172 | Complete Progress Report 2 | 2015-07-06 13:48 → 2015-07-09 17:00 A (+3d) | 2015-07-06 13:48 → 2015-07-09 17:00 A (+3d) |  | 0% → 100% | 0d → none |  |  |
| 173 | Submit SRS,AD,DD | 2015-07-06 08:48 → 2015-07-01 08:00 A (-5d) | 2015-07-06 08:48 → 2015-07-01 08:00 A (-5d) |  | 0% → 100% | 0d → none |  |  |
| 174 | **Coding & Unit Testing** | 2015-07-06 13:48 → 2015-07-08 11:12 A (+2d) | 2015-07-20 14:36 → 2015-07-08 16:12 A (-12d) | 10.1d → 0.5d | 0% → 100% | 5.3d → none |  |  |
| 175 | **Bus Driver Module** | 2015-07-06 13:48 → 2015-07-08 11:12 A (+2d) | 2015-07-20 14:36 → 2015-07-08 16:12 A (-12d) | 10.1d → 0.5d | 0% → 100% | 5.3d → none |  |  |
| 176 | Send bus info module | 2015-07-06 13:48 → 2015-07-08 11:12 A (+2d) | 2015-07-20 14:36 → 2015-07-08 16:12 A (-12d) | 1d → 0.5d | 0% → 100% | 5.3d → none |  | constraint none → start no earlier than 2015-07-06 08:00 |
| 177 | **Testing** | 2015-06-05 13:00 A | 2015-07-06 15:24 → 2015-07-02 15:24 A (-4d) | 16.3d → 14.3d | 0% → 100% | 0d → none |  |  |
| 178 | **Test review checklist** | 2015-06-05 13:00 A | 2015-06-10 14:36 A |  | 0% → 100% | 0d → none |  |  |
| 179 | **Test plan review checklist** | 2015-06-05 13:00 A | 2015-06-10 10:24 A |  | 0% → 100% | 0d → none |  |  |
| 180 | Develop test plan review checklist | 2015-06-05 13:00 A | 2015-06-08 08:48 A |  | 0% → 100% | 0d → none |  |  |
| 181 | Review test plan review checklist | 2015-06-08 08:48 A | 2015-06-08 12:00 A |  | 0% → 100% | 0d → none |  |  |
| 182 | Update test plan review checklist | 2015-06-10 08:48 A | 2015-06-10 10:24 A |  | 0% → 100% | 0d → none |  |  |
| 183 | Complete test plan review checklist | 2015-06-10 10:24 A | 2015-06-10 10:24 A |  | 0% → 100% | 0d → none |  |  |
| 184 | **Test case review checklist** | 2015-06-08 08:48 A | 2015-06-10 14:36 A |  | 0% → 100% | 0d → none |  |  |
| 185 | Develop test case review checklist | 2015-06-08 08:48 A | 2015-06-09 08:48 A |  | 0% → 100% | 0d → none |  |  |
| 186 | Review test case review checklist | 2015-06-09 08:48 A | 2015-06-09 12:00 A |  | 0% → 100% | 0d → none |  |  |
| 187 | Update test case review checklist | 2015-06-10 10:24 A | 2015-06-10 14:36 A |  | 0% → 100% | 0d → none |  |  |
| 188 | Complete test case review checklist | 2015-06-10 14:36 A | 2015-06-10 14:36 A |  | 0% → 100% | 0d → none |  |  |
| 189 | Complete review checklist | 2015-06-10 14:36 A | 2015-06-10 14:36 A |  | 0% → 100% | 0d → none |  |  |
| 190 | **Test plan** | 2015-06-09 08:48 A | 2015-06-11 08:48 A |  | 0% → 100% | 0d → none |  |  |
| 191 | Develop test plan | 2015-06-09 08:48 A | 2015-06-10 08:48 A |  | 0% → 100% | 0.2d → none |  |  |
| 192 | Review test plan | 2015-06-10 10:24 A | 2015-06-10 15:24 A |  | 0% → 100% | 0d → none |  |  |
| 193 | Update test plan | 2015-06-10 15:24 A | 2015-06-11 08:48 A |  | 0% → 100% | 0d → none |  |  |
| 194 | Complete test plan | 2015-06-11 08:48 A | 2015-06-11 08:48 A |  | 0% → 100% | 0d → none |  |  |
| 195 | **Test case** | 2015-06-11 08:48 A | 2015-07-06 15:24 → 2015-07-02 15:24 A (-4d) | 12.7d → 10.7d | 0% → 100% | 0d → none |  |  |
| 196 | **Unit test** | 2015-06-11 08:48 A | 2015-06-18 10:24 → 2015-06-16 15:24 A (-2d) | 5.2d → 3.7d | 0% → 100% | 0d → none |  |  |
| 197 | **Develop unit test case** | 2015-06-11 08:48 A | 2015-06-16 10:24 → 2015-06-12 15:24 A (-4d) | 3.2d → 1.7d | 0% → 100% | 0d → none |  |  |
| 198 | Bus driver module | 2015-06-11 08:48 A | 2015-06-11 13:48 A |  | 0% → 100% | 0d → none |  | resources PhuongBB → MaiTTT |
| 199 | Bus module | 2015-06-12 08:48 → 2015-06-11 13:48 A (-1d) | 2015-06-15 08:48 → 2015-06-12 13:48 A (-3d) |  | 0% → 100% | 0d → none | Sync module → 198 | resources PhuongBB → MaiTTT |
| 200 | Setting module | 2015-06-15 13:48 → 2015-06-12 13:48 A (-3d) | 2015-06-16 10:24 → 2015-06-12 15:24 A (-4d) | 0.7d → 0.2d | 0% → 100% | 0d → none | Search module → 199 | resources PhuongBB → MaiTTT |
| 201 | Review unit test case | 2015-06-16 10:24 → 2015-06-12 15:24 A (-4d) | 2015-06-17 10:24 → 2015-06-15 15:24 A (-2d) |  | 0% → 100% | 0d → none |  | resources PhuongBB → MaiTTT |
| 202 | Update unit test case | 2015-06-17 10:24 → 2015-06-15 15:24 A (-2d) | 2015-06-18 10:24 → 2015-06-16 15:24 A (-2d) |  | 0% → 100% | 0d → none |  | resources PhuongBB → MaiTTT |
| 203 | Complete unit test case | 2015-06-18 10:24 → 2015-06-16 15:24 A (-2d) | 2015-06-18 10:24 → 2015-06-16 15:24 A (-2d) |  | 0% → 100% | 0d → none |  | resources PhuongBB → MaiTTT |
| 204 | **Integration test** | 2015-06-18 15:24 → 2015-06-16 15:24 A (-2d) | 2015-07-01 15:24 → 2015-06-29 15:24 A (-2d) |  | 0% → 100% | 0d → none |  |  |
| 205 | Develop integration test case | 2015-06-18 15:24 → 2015-06-16 15:24 A (-2d) | 2015-06-29 15:24 → 2015-06-18 15:24 A (-11d) |  | 0% → 100% | 0d → none |  |  |
| 206 | Review integration test case | 2015-06-29 15:24 → 2015-06-18 15:24 A (-11d) | 2015-06-30 15:24 → 2015-06-19 15:24 A (-11d) |  | 0% → 100% | 0d → none |  |  |
| 207 | Update integration test case | 2015-06-30 15:24 → 2015-06-19 15:24 A (-11d) | 2015-07-01 15:24 → 2015-06-29 15:24 A (-2d) |  | 0% → 100% | 0d → none |  |  |
| 208 | Complete integration test case | 2015-07-01 15:24 → 2015-06-29 15:24 A (-2d) | 2015-07-01 15:24 → 2015-06-29 15:24 A (-2d) |  | 0% → 100% | 0d → none |  |  |
| 209 | **System test** | 2015-07-01 15:24 → 2015-06-29 15:24 A (-2d) | 2015-07-06 15:24 → 2015-07-02 15:24 A (-4d) |  | 0% → 100% | 0d → none |  |  |
| 210 | Develop system test case | 2015-07-01 15:24 → 2015-06-29 15:24 A (-2d) | 2015-07-02 15:24 → 2015-06-30 15:24 A (-2d) |  | 0% → 100% | 0d → none |  |  |

| ID | Task | Start | Finish | Duration | Complete | Total float | Predecessors | Other |
| --- | --- | --- | --- | --- | --- | --- | --- | --- |
| 211 | Review system test case | 2015-07-02 15:24 → 2015-06-30 15:24 A (-2d) | 2015-07-03 15:24 → 2015-07-01 15:24 A (-2d) |  | 0% → 100% | 0d → none |  |  |
| 212 | Update system test case | 2015-07-03 15:24 → 2015-07-01 15:24 A (-2d) | 2015-07-06 15:24 → 2015-07-02 15:24 A (-4d) |  | 0% → 100% | 0d → none |  |  |
| 213 | Complete system test case | 2015-07-06 15:24 → 2015-07-02 15:24 A (-4d) | 2015-07-06 15:24 → 2015-07-02 15:24 A (-4d) |  | 0% → 100% | 0d → none |  |  |
| 214 | **Progress report 3** | 2015-07-07 08:00 → 2015-07-02 15:24 A (-5d) | 2015-07-07 12:00 → 2015-07-03 10:24 A (-4d) |  | 0% → 100% | 0d → none |  |  |
| 215 | Develop Progress Report 3 | 2015-07-07 08:00 → 2015-07-02 15:24 A (-5d) | 2015-07-07 10:24 → 2015-07-03 08:48 A (-4d) |  | 0% → 100% | 0d → none |  |  |
| 216 | Review Progress Report 3 | 2015-07-07 10:24 → 2015-07-03 08:48 A (-4d) | 2015-07-07 11:12 → 2015-07-03 09:36 A (-4d) |  | 0% → 100% | 0d → none |  |  |
| 217 | Update Progress Report 3 | 2015-07-07 11:12 → 2015-07-03 09:36 A (-4d) | 2015-07-07 12:00 → 2015-07-03 10:24 A (-4d) |  | 0% → 100% | 0d → none |  |  |
| 218 | Complete Progress Report 3 | 2015-07-07 12:00 → 2015-07-03 10:24 A (-4d) | 2015-07-07 12:00 → 2015-07-03 10:24 A (-4d) |  | 0% → 100% | 0d → none |  |  |
| 219 | **Report no.3** | 2015-07-06 15:24 → 2015-07-02 15:24 A (-4d) | 2015-07-09 11:12 → 2015-07-09 17:00 A | 2.6d → 5.2d | 0% → 100% | 0d → none |  |  |
| 220 | Develop Report no.3 (draft version) | 2015-07-06 15:24 → 2015-07-02 15:24 A (-4d) | 2015-07-06 17:00 → 2015-07-02 17:00 A (-4d) |  | 0% → 100% | 0d → none |  |  |
| 221 | Review Report no.3 (draft version) | 2015-07-07 08:00 → 2015-07-03 08:00 A (-4d) | 2015-07-08 08:48 → 2015-07-06 08:48 A (-2d) |  | 0% → 100% | 0d → none |  |  |
| 222 | Update Report no.3 (draft version) | 2015-07-08 08:48 → 2015-07-06 08:48 A (-2d) | 2015-07-08 13:48 → 2015-07-06 13:48 A (-2d) |  | 0% → 100% | 0d → none |  |  |
| 223 | Submit Report no.3 (first version) | 2015-07-08 13:48 → 2015-07-06 13:48 A (-2d) | 2015-07-08 13:48 → 2015-07-06 13:48 A (-2d) |  | 0% → 100% | 0d → none |  |  |
| 224 | Revise after got comments for Report no.3 | 2015-07-08 13:48 → 2015-07-06 13:48 A (-2d) | 2015-07-09 11:12 → 2015-07-07 11:12 A (-2d) |  | 0% → 100% | 0d → none |  |  |
| 225 | Submit Report no.3 (final version) | 2015-07-09 11:12 → 2015-07-09 17:00 A | 2015-07-09 11:12 → 2015-07-09 17:00 A |  | 0% → 100% | 0d → none | 224 → 224, 176, 172 |  |
| 226 | **Construction** | 2015-07-09 11:12 → 2015-07-10 08:00 A (+1d) | 2015-08-20 11:12 → 2015-08-14 16:12 A (-6d) | 30d → 25.9d | 0% → 100% | 1.7d → none |  |  |
| 227 | **Code Review checklist** | 2015-07-15 11:12 → 2015-07-15 08:48 A | 2015-07-17 14:36 → 2015-07-17 11:12 A |  | 0% → 100% | 10.6d → none |  |  |
| 228 | Develop review checklist | 2015-07-15 11:12 → 2015-07-15 08:48 A | 2015-07-16 13:48 → 2015-07-16 10:24 A |  | 0% → 100% | 10.6d → none |  |  |
| 229 | Review review checklist | 2015-07-16 13:48 → 2015-07-16 10:24 A | 2015-07-17 09:36 → 2015-07-16 16:12 A (-1d) |  | 0% → 100% | 10.6d → none |  |  |
| 230 | Update review checklist | 2015-07-17 09:36 → 2015-07-16 16:12 A (-1d) | 2015-07-17 14:36 → 2015-07-17 11:12 A |  | 0% → 100% | 10.6d → none |  |  |
| 231 | Complete review checklist | 2015-07-17 14:36 → 2015-07-17 11:12 A | 2015-07-17 14:36 → 2015-07-17 11:12 A |  | 0% → 100% | 10.6d → none |  |  |
| 232 | **Coding & Unit testing (continue)** | 2015-07-09 11:12 → 2015-07-10 08:00 A (+1d) | 2015-08-12 11:12 → 2015-08-10 17:00 A (-2d) | 24d → 22d | 0% → 100% | 1.7d → none |  |  |
| 233 | **Bus Rider Module** | 2015-07-09 11:12 → 2015-07-10 08:00 A (+1d) | 2015-08-12 11:12 → 2015-08-10 17:00 A (-2d) | 24d → 22d | 0% → 100% | 1.7d → none |  |  |
| 234 | **Common module** | 2015-07-21 16:12 → 2015-07-23 08:00 A (+2d) | 2015-07-22 16:12 → 2015-07-23 17:00 A (+1d) |  | 0% → 100% | 3.1d → none |  |  |
| 235 | Change app setting | 2015-07-21 16:12 → 2015-07-23 08:00 A (+2d) | 2015-07-22 16:12 → 2015-07-23 17:00 A (+1d) |  | 0% → 100% | 3.1d → none |  |  |
| 236 | **Account Management module** | 2015-07-14 09:36 → 2015-07-17 08:00 A (+3d) | 2015-07-17 13:48 → 2015-07-24 16:12 A (+7d) | 3.4d → 5.9d | 0% → 100% | 8.2d → none |  |  |
| 237 | Log in | 2015-07-14 09:36 → 2015-07-17 08:00 A (+3d) | 2015-07-14 15:24 → 2015-07-17 13:48 A (+3d) |  | 0% → 100% | 8.2d → none |  |  |
| 238 | Sign up | 2015-07-14 15:24 → 2015-07-17 13:48 A (+3d) | 2015-07-15 13:48 → 2015-07-20 11:12 A (+5d) |  | 0% → 100% | 35.4d → none |  |  |
| 239 | Log out | 2015-07-16 13:00 → 2015-07-17 13:48 A (+1d) | 2015-07-16 15:24 → 2015-07-17 16:12 A (+1d) |  | 0% → 100% | 6.7d → none |  |  |
| 240 | Change password | 2015-07-16 15:24 → 2015-07-17 16:12 A (+1d) | 2015-07-17 09:36 → 2015-07-20 10:24 A (+3d) |  | 0% → 100% | 6.7d → none |  |  |
| 241 | Forgot password | 2015-07-17 09:36 → 2015-07-24 13:00 A (+7d) | 2015-07-17 13:48 → 2015-07-24 16:12 A (+7d) |  | 0% → 100% | 6.7d → none |  |  |
| 242 | **Bus module** | 2015-07-09 11:12 → 2015-07-10 08:00 A (+1d) | 2015-07-21 16:12 → 2015-07-21 09:36 A | 8.5d → 7.2d | 0% → 100% | 1.7d → none |  |  |
| 243 | View bus list | 2015-07-09 11:12 → 2015-07-10 08:00 A (+1d) | 2015-07-09 16:12 → 2015-07-10 12:00 A (+1d) |  | 0% → 100% | 1.7d → none |  |  |
| 244 | View bus info | 2015-07-09 16:12 → 2015-07-10 13:00 A (+1d) | 2015-07-10 11:12 → 2015-07-10 17:00 A |  | 0% → 100% | 1.7d → none |  |  |
| 245 | View bus route | 2015-07-10 11:12 → 2015-07-13 08:00 A (+3d) | 2015-07-10 16:12 → 2015-07-13 12:00 A (+3d) |  | 0% → 100% | 1.7d → none |  |  |
| 246 | View nearest bus | 2015-07-10 16:12 → 2015-07-13 13:00 A (+3d) | 2015-07-13 13:48 → 2015-07-14 09:36 A (+1d) |  | 0% → 100% | 1.7d → none |  |  |
| 247 | View bus map | 2015-07-15 13:48 → 2015-07-14 15:24 A (-1d) | 2015-07-16 12:00 → 2015-07-15 14:36 A (-1d) |  | 0% → 100% | 1.7d → none |  |  |
| 248 | View bus near me | 2015-07-20 14:36 → 2015-07-20 08:00 A | 2015-07-21 16:12 → 2015-07-21 09:36 A |  | 0% → 100% | 3.7d → none |  |  |
| 249 | **Path Finder module** | 2015-07-09 11:12 → 2015-07-10 08:00 A (+1d) | 2015-07-20 13:48 → 2015-07-22 17:00 A (+2d) | 7.2d → 9d | 0% → 100% | 4.5d → none |  |  |
| 250 | Find path | 2015-07-09 11:12 → 2015-07-10 08:00 A (+1d) | 2015-07-10 16:12 → 2015-07-13 12:00 A (+3d) |  | 0% → 100% | 4.67d → none |  |  |
| 251 | View paths found | 2015-07-13 13:48 → 2015-07-16 10:36 A (+3d) | 2015-07-14 09:36 → 2015-07-16 16:24 A (+2d) |  | 0% → 100% | 4.8d → none |  |  |
| 252 | View path detail | 2015-07-14 15:24 → 2015-07-17 15:36 A (+3d) | 2015-07-15 13:48 → 2015-07-20 14:00 A (+5d) |  | 0% → 100% | 4.5d → none |  |  |
| 253 | View direction | 2015-07-17 13:48 → 2015-07-22 08:00 A (+5d) | 2015-07-20 13:48 → 2015-07-22 17:00 A (+2d) |  | 0% → 100% | 4.5d → none |  |  |
| 254 | **Reminder module** | 2015-07-09 16:12 → 2015-07-10 08:00 A (+1d) | 2015-07-15 11:12 → 2015-07-15 17:00 A | 3.5d → 4d | 0% → 100% | 9.1d → none |  |  |
| 255 | View bus reminder | 2015-07-09 16:12 → 2015-07-10 08:00 A (+1d) | 2015-07-13 15:24 → 2015-07-14 11:12 A (+1d) |  | 0% → 100% | 9.1d → none |  |  |
| 256 | Add reminder | 2015-07-13 15:24 → 2015-07-14 11:12 A (+1d) | 2015-07-14 09:36 → 2015-07-14 15:24 A |  | 0% → 100% | 9.1d → none |  |  |
| 257 | Edit reminder | 2015-07-14 09:36 → 2015-07-14 15:24 A | 2015-07-14 15:24 → 2015-07-15 11:12 A (+1d) |  | 0% → 100% | 9.1d → none |  |  |
| 258 | Delete reminder | 2015-07-14 15:24 → 2015-07-15 11:12 A (+1d) | 2015-07-14 17:00 → 2015-07-15 13:48 A (+1d) |  | 0% → 100% | 9.1d → none |  |  |
| 259 | Suspend/Unsuspend a chosen reminder | 2015-07-15 08:00 → 2015-07-15 13:48 A | 2015-07-15 11:12 → 2015-07-15 17:00 A |  | 0% → 100% | 9.1d → none |  |  |
| 260 | **Track module** | 2015-07-22 16:12 → 2015-07-24 08:00 A (+2d) | 2015-08-03 10:24 → 2015-07-29 13:48 A (-5d) | 7.4d → 3.6d | 0% → 100% | 0d → none |  |  |
| 261 | Tracking | 2015-07-22 16:12 → 2015-07-24 08:00 A (+2d) | 2015-07-23 16:12 → 2015-07-24 17:00 A (+1d) |  | 0% → 100% | 6.1d → none |  |  |
| 262 | Cancel track | 2015-08-03 08:00 → 2015-07-29 10:24 A (-5d) | 2015-08-03 10:24 → 2015-07-29 13:48 A (-5d) |  | 0% → 100% | 0d → none |  | constraint start no earlier than 2015-08-03 08:00 → start no earlier than 2015-07-27 08:00 |
| 263 | **Favorite module** | 2015-08-03 10:24 → 2015-07-29 13:48 A (-5d) | 2015-08-12 11:12 → 2015-08-10 17:00 A (-2d) | 7.1d → 8.4d | 0% → 100% | 15.1d → none |  |  |
| 264 | View favorite places | 2015-08-03 10:24 → 2015-07-29 13:48 A (-5d) | 2015-08-03 15:24 → 2015-07-30 08:48 A (-4d) |  | 0% → 100% | 15.1d → none |  |  |
| 265 | Add favorite places | 2015-08-03 15:24 → 2015-07-30 08:48 A (-4d) | 2015-08-05 09:36 → 2015-07-31 13:48 A (-5d) |  | 0% → 100% | 15.1d → none |  |  |
| 266 | Edit favorite places | 2015-08-05 09:36 → 2015-07-31 13:48 A (-5d) | 2015-08-06 11:12 → 2015-08-03 15:24 A (-3d) |  | 0% → 100% | 15.1d → none |  |  |
| 267 | Delete favorite places | 2015-08-06 11:12 → 2015-08-04 10:24 A (-2d) | 2015-08-06 14:36 → 2015-08-04 13:48 A (-2d) |  | 0% → 100% | 15.1d → none |  |  |
| 268 | Search favorite places | 2015-08-06 14:36 → 2015-08-05 08:48 A (-1d) | 2015-08-07 08:48 → 2015-08-05 17:00 A (-2d) |  | 0% → 100% | 15.1d → none |  |  |
| 269 | View favorite buses | 2015-08-07 08:48 → 2015-08-06 08:00 A (-1d) | 2015-08-07 13:48 → 2015-08-07 09:36 A |  | 0% → 100% | 15.1d → none |  |  |
| 270 | Add favorite buses | 2015-08-07 13:48 → 2015-08-07 09:36 A | 2015-08-11 14:36 → 2015-08-10 10:24 A (-1d) |  | 0% → 100% | 15.1d → none |  |  |
| 271 | Delete favorite buses | 2015-08-11 14:36 → 2015-08-10 10:24 A (-1d) | 2015-08-11 17:00 → 2015-08-10 13:48 A (-1d) |  | 0% → 100% | 15.1d → none |  |  |
| 272 | Search favorite buses | 2015-08-12 08:00 → 2015-08-10 13:48 A (-2d) | 2015-08-12 11:12 → 2015-08-10 17:00 A (-2d) |  | 0% → 100% | 15.1d → none |  |  |
| 273 | Web service | 2015-07-23 16:12 → 2015-07-27 08:00 A (+4d) | 2015-07-30 16:12 → 2015-07-30 17:00 A | 5d → 4d | 0% → 100% | 1.4d → none |  |  |
| 274 | Complete coding | 2015-08-03 10:24 → 2015-07-30 17:00 A (-4d) | 2015-08-03 10:24 → 2015-07-30 17:00 A (-4d) |  | 0% → 100% | 0d → none |  |  |
| 275 | **Progress report 4** | 2015-08-03 10:24 → 2015-07-31 08:00 A (-3d) | 2015-08-03 15:24 → 2015-07-31 12:00 A (-3d) |  | 0% → 100% | 0d → none |  |  |
| 276 | Develop Progress Report 4 | 2015-08-03 10:24 → 2015-07-31 08:00 A (-3d) | 2015-08-03 13:48 → 2015-07-31 10:24 A (-3d) |  | 0% → 100% | 0d → none |  |  |
| 277 | Review Progress Report 4 | 2015-08-03 13:48 → 2015-07-31 10:24 A (-3d) | 2015-08-03 14:36 → 2015-07-31 11:12 A (-3d) |  | 0% → 100% | 0d → none |  |  |
| 278 | Update Progress Report 4 | 2015-08-03 14:36 → 2015-07-31 11:12 A (-3d) | 2015-08-03 15:24 → 2015-07-31 12:00 A (-3d) |  | 0% → 100% | 0d → none |  |  |
| 279 | Complete Progress Report 4 | 2015-08-03 15:24 → 2015-07-31 12:00 A (-3d) | 2015-08-03 15:24 → 2015-07-31 12:00 A (-3d) |  | 0% → 100% | 0d → none |  |  |
| 280 | **Report no.4** | 2015-08-03 13:48 → 2015-07-31 10:24 A (-3d) | 2015-08-07 13:48 → 2015-08-06 12:00 A (-1d) | 4d → 4.2d | 0% → 100% | 0d → none |  |  |

| ID | Task | Start | Finish | Duration | Complete | Total float | Predecessors | Other |
| --- | --- | --- | --- | --- | --- | --- | --- | --- |
| 281 | Develop Report no.4 (draft version) | 2015-08-03 13:48 → 2015-07-31 10:24 A (-3d) | 2015-08-04 13:48 → 2015-08-03 12:00 A (-1d) |  | 0% → 100% | 0d → none |  |  |
| 282 | Review Report no.4 (draft version) | 2015-08-04 13:48 → 2015-08-03 13:00 A (-1d) | 2015-08-05 13:48 → 2015-08-04 12:00 A (-1d) |  | 0% → 100% | 0d → none |  |  |
| 283 | Update Report no.4 (draft version) | 2015-08-05 13:48 → 2015-08-04 12:00 A (-1d) | 2015-08-06 13:48 → 2015-08-05 12:00 A (-1d) |  | 0% → 100% | 0d → none |  |  |
| 284 | Submit Report no.4 (first version) | 2015-08-06 13:48 → 2015-08-05 12:00 A (-1d) | 2015-08-06 13:48 → 2015-08-05 12:00 A (-1d) |  | 0% → 100% | 0d → none |  |  |
| 285 | Revise after got comments for Report no.4 | 2015-08-06 13:48 → 2015-08-05 12:00 A (-1d) | 2015-08-07 13:48 → 2015-08-06 12:00 A (-1d) |  | 0% → 100% | 0d → none |  |  |
| 286 | Submit Report no.4 (final version) | 2015-08-07 13:48 → 2015-08-06 12:00 A (-1d) | 2015-08-07 13:48 → 2015-08-06 12:00 A (-1d) |  | 0% → 100% | 0d → none |  |  |
| 287 | **Testing** | 2015-07-15 11:12 → 2015-07-10 08:00 A (-5d) | 2015-08-18 14:36 → 2015-08-13 09:36 A (-5d) | 24.3d → 24.2d | 0% → 100% | 8.9d → none |  |  |
| 288 | **Execute test & fix bugs** | 2015-07-15 11:12 → 2015-07-10 08:00 A (-5d) | 2015-08-17 12:00 → 2015-08-12 11:12 A (-5d) | 23.1d → 23.4d | 0% → 100% | 8.9d → none |  |  |
| 289 | **Round 1** | 2015-07-15 11:12 → 2015-07-10 08:00 A (-5d) | 2015-08-12 16:12 → 2015-08-06 10:24 A (-6d) | 20.5d → 19.3d | 0% → 100% | 8.9d → none |  |  |
| 290 | **Execute unit test** | 2015-07-15 11:12 → 2015-07-10 08:00 A (-5d) | 2015-08-12 16:12 → 2015-08-06 10:24 A (-6d) | 20.5d → 19.3d | 0% → 100% | 8.9d → none |  |  |
| 291 | Bus driver module | 2015-07-21 08:00 → 2015-07-10 08:00 A (-11d) | 2015-07-21 15:24 → 2015-07-10 14:36 A (-11d) | 0.8d → 0.7d | 0% → 100% | 5.5d → none |  |  |
| 292 | Common module | 2015-07-23 13:48 → 2015-07-24 08:00 A (+1d) | 2015-07-23 17:00 → 2015-07-24 10:24 A (+1d) | 0.4d → 0.3d | 0% → 100% | 3.3d → none |  |  |
| 293 | Account Management module | 2015-07-20 08:00 → 2015-07-24 16:12 A (+4d) | 2015-07-20 17:00 → 2015-07-27 10:24 A (+7d) | 1d → 0.4d | 0% → 100% | 6.3d → none |  |  |
| 294 | Bus module | 2015-07-22 15:24 → 2015-07-21 09:36 A (-1d) | 2015-07-23 13:48 → 2015-07-21 15:24 A (-2d) | 0.8d → 0.6d | 0% → 100% | 3.7d → none |  |  |
| 295 | Path Finder module | 2015-07-21 15:24 → 2015-07-23 08:00 A (+2d) | 2015-07-22 15:24 → 2015-07-23 13:48 A (+1d) | 1d → 0.6d | 0% → 100% | 4.5d → none |  |  |
| 296 | Reminder module | 2015-07-15 11:12 → 2015-07-16 08:00 A (+1d) | 2015-07-16 09:36 → 2015-07-16 12:00 A | 0.8d → 0.5d | 0% → 100% | 9.1d → none |  |  |
| 297 | Track module | 2015-08-03 10:24 → 2015-07-29 13:48 A (-5d) | 2015-08-04 10:24 → 2015-07-30 13:48 A (-5d) |  | 0% → 100% | 21.7d → none |  | constraint start no earlier than 2015-07-31 08:00 → finish no earlier than 2015-07-21 17:00 |
| 298 | Favorite module | 2015-08-12 11:12 → 2015-08-03 08:48 A (-9d) | 2015-08-12 16:12 → 2015-08-06 10:24 A (-6d) | 0.5d → 0.4d | 0% → 100% | 15.1d → none | 203, 272 → 203, 297 | constraint start no earlier than 2015-08-05 08:00 → start no earlier than 2015-08-03 08:00 |
| 299 | Fix bugs unit test | 2015-07-23 17:00 → 2015-07-27 10:24 A (+4d) | 2015-07-28 17:00 → 2015-07-29 10:24 A (+1d) | 3d → 2d | 0% → 100% | 3.3d → none |  |  |
| 300 | Execute integration test | 2015-08-03 10:24 → 2015-07-31 08:00 A (-3d) | 2015-08-03 16:12 → 2015-07-31 13:48 A (-3d) |  | 0% → 100% | 0d → none |  |  |
| 301 | Fix bugs integration test | 2015-08-03 16:12 → 2015-07-31 13:48 A (-3d) | 2015-08-04 16:12 → 2015-08-03 13:48 A (-1d) |  | 0% → 100% | 0d → none |  |  |
| 302 | Execute system test | 2015-08-04 16:12 → 2015-08-03 13:48 A (-1d) | 2015-08-05 11:12 → 2015-08-04 08:48 A (-1d) |  | 0% → 100% | 0d → none |  |  |
| 303 | Fix bugs system test | 2015-08-05 11:12 → 2015-08-04 08:48 A (-1d) | 2015-08-05 16:12 → 2015-08-04 13:48 A (-1d) |  | 0% → 100% | 0d → none |  |  |
| 304 | **Round 2** | 2015-08-05 16:12 → 2015-08-04 13:48 A (-1d) | 2015-08-14 12:00 → 2015-08-11 11:12 A (-3d) | 6.6d → 4.8d | 0% → 100% | 1.9d → none |  |  |
| 305 | **Execute unit test** | 2015-08-05 16:12 → 2015-08-04 13:48 A (-1d) | 2015-08-11 11:12 → 2015-08-07 10:24 A (-4d) | 3.5d → 2.7d | 0% → 100% | 1.9d → none |  |  |
| 306 | Bus driver module | 2015-08-06 14:36 → 2015-08-05 08:00 A (-1d) | 2015-08-07 09:36 → 2015-08-05 11:12 A (-2d) | 0.5d → 0.4d | 0% → 100% | 1.4d → none |  |  |
| 307 | Common module | 2015-08-10 08:48 → 2015-08-06 08:00 A (-4d) | 2015-08-10 11:12 → 2015-08-06 09:36 A (-4d) | 0.3d → 0.2d | 0% → 100% | 0.2d → none |  |  |
| 308 | Account Management module | 2015-08-10 11:12 → 2015-08-06 13:00 A (-4d) | 2015-08-10 13:48 → 2015-08-06 13:48 A (-4d) | 0.2d → 0.1d | 0% → 100% | 0d → none |  |  |
| 309 | Bus module | 2015-08-07 09:36 → 2015-08-05 13:48 A (-2d) | 2015-08-07 14:36 → 2015-08-05 17:00 A (-2d) | 0.5d → 0.4d | 0% → 100% | 0.9d → none |  |  |
| 310 | Path Finder module | 2015-08-05 16:12 → 2015-08-04 13:48 A (-1d) | 2015-08-06 14:36 → 2015-08-05 09:36 A (-1d) | 0.8d → 0.6d | 0% → 100% | 1.9d → none |  |  |
| 311 | Reminder module | 2015-08-11 08:48 → 2015-08-07 08:00 A (-4d) | 2015-08-11 11:12 → 2015-08-07 10:24 A (-4d) |  | 0% → 100% | 16.6d → none |  |  |
| 312 | Track module | 2015-08-10 13:48 → 2015-08-06 13:48 A (-4d) | 2015-08-11 08:48 → 2015-08-07 08:48 A (-4d) |  | 0% → 100% | 16.9d → none |  |  |
| 313 | Favorite module | 2015-08-07 14:36 → 2015-08-06 08:00 A (-1d) | 2015-08-10 08:48 → 2015-08-06 10:24 A (-4d) | 0.4d → 0.3d | 0% → 100% | 0.5d → none |  |  |
| 314 | Fix bugs unit test | 2015-08-10 13:48 → 2015-08-06 13:48 A (-4d) | 2015-08-11 13:48 → 2015-08-07 08:48 A (-4d) | 1d → 0.5d | 0% → 100% | 0d → none |  |  |
| 315 | Execute integration test | 2015-08-11 13:48 → 2015-08-07 08:48 A (-4d) | 2015-08-12 11:12 → 2015-08-07 13:48 A (-5d) | 0.8d → 0.5d | 0% → 100% | 0d → none |  |  |
| 316 | Fix bugs integration test | 2015-08-12 11:12 → 2015-08-07 13:48 A (-5d) | 2015-08-13 11:12 → 2015-08-10 10:24 A (-3d) | 1d → 0.7d | 0% → 100% | 0d → none |  |  |
| 317 | Execute system test | 2015-08-13 11:12 → 2015-08-10 10:24 A (-3d) | 2015-08-13 16:12 → 2015-08-10 15:24 A (-3d) |  | 0% → 100% | 0d → none |  |  |
| 318 | Fix bugs system test | 2015-08-13 16:12 → 2015-08-10 15:24 A (-3d) | 2015-08-14 12:00 → 2015-08-11 11:12 A (-3d) |  | 0% → 100% | 0d → none |  |  |
| 319 | Execute acceptance test & collect data | 2015-08-14 13:00 → 2015-08-11 11:12 A (-3d) | 2015-08-17 12:00 → 2015-08-12 11:12 A (-5d) |  | 0% → 100% | 0d → none |  |  |
| 320 | Complete execute test | 2015-08-17 12:00 → 2015-08-12 11:12 A (-5d) | 2015-08-17 12:00 → 2015-08-12 11:12 A (-5d) |  | 0% → 100% | 0d → none |  |  |
| 321 | **Test Report** | 2015-08-17 13:00 → 2015-08-12 11:12 A (-5d) | 2015-08-18 14:36 → 2015-08-13 09:36 A (-5d) | 1.2d → 0.8d | 0% → 100% | 0d → none |  |  |
| 322 | Develop test report | 2015-08-17 13:00 → 2015-08-12 11:12 A (-5d) | 2015-08-17 16:12 → 2015-08-12 15:24 A (-5d) |  | 0% → 100% | 0d → none |  |  |
| 323 | Review test report | 2015-08-17 16:12 → 2015-08-12 15:24 A (-5d) | 2015-08-18 10:24 → 2015-08-12 17:00 A (-6d) | 0.4d → 0.2d | 0% → 100% | 0d → none |  |  |
| 324 | Update test report | 2015-08-18 10:24 → 2015-08-13 08:00 A (-5d) | 2015-08-18 14:36 → 2015-08-13 09:36 A (-5d) | 0.4d → 0.2d | 0% → 100% | 0d → none |  |  |
| 325 | Complete test report | 2015-08-18 14:36 → 2015-08-13 09:36 A (-5d) | 2015-08-18 14:36 → 2015-08-13 09:36 A (-5d) |  | 0% → 100% | 0d → none |  |  |
| 326 | **Quality report** | 2015-08-18 14:36 → 2015-08-13 09:36 A (-5d) | 2015-08-19 11:12 → 2015-08-13 16:12 A (-6d) |  | 0% → 100% | 0d → none |  |  |
| 327 | Develop quality report | 2015-08-18 14:36 → 2015-08-13 09:36 A (-5d) | 2015-08-18 17:00 → 2015-08-13 12:00 A (-5d) |  | 0% → 100% | 0d → none |  |  |
| 328 | Review quality report | 2015-08-19 08:00 → 2015-08-13 13:00 A (-6d) | 2015-08-19 09:36 → 2015-08-13 14:36 A (-6d) |  | 0% → 100% | 0d → none |  |  |
| 329 | Update quality report | 2015-08-19 09:36 → 2015-08-13 14:36 A (-6d) | 2015-08-19 11:12 → 2015-08-13 16:12 A (-6d) |  | 0% → 100% | 0d → none |  |  |
| 330 | Complete quality report | 2015-08-19 11:12 → 2015-08-13 16:12 A (-6d) | 2015-08-19 11:12 → 2015-08-13 16:12 A (-6d) |  | 0% → 100% | 0d → none |  |  |
| 331 | **Progress report 5** | 2015-08-19 11:12 → 2015-08-13 16:12 A (-6d) | 2015-08-19 16:12 → 2015-08-14 11:12 A (-5d) |  | 0% → 100% | 0d → none |  |  |
| 332 | Develop Progress Report 5 | 2015-08-19 11:12 → 2015-08-13 16:12 A (-6d) | 2015-08-19 14:36 → 2015-08-14 09:36 A (-5d) |  | 0% → 100% | 0d → none |  |  |
| 333 | Review Progress Report 5 | 2015-08-19 14:36 → 2015-08-14 09:36 A (-5d) | 2015-08-19 15:24 → 2015-08-14 10:24 A (-5d) |  | 0% → 100% | 0d → none |  |  |
| 334 | Update Progress Report 5 | 2015-08-19 15:24 → 2015-08-14 10:24 A (-5d) | 2015-08-19 16:12 → 2015-08-14 11:12 A (-5d) |  | 0% → 100% | 0d → none |  |  |
| 335 | Complete Progress Report 5 | 2015-08-19 16:12 → 2015-08-14 11:12 A (-5d) | 2015-08-19 16:12 → 2015-08-14 11:12 A (-5d) |  | 0% → 100% | 0d → none |  |  |
| 336 | **Report no.5** | 2015-08-19 16:12 → 2015-08-14 11:12 A (-5d) | 2015-08-20 11:12 → 2015-08-14 16:12 A (-6d) |  | 0% → 100% | 0d → none |  |  |
| 337 | Develop Report no.5 (draft version) | 2015-08-19 16:12 → 2015-08-14 11:12 A (-5d) | 2015-08-19 17:00 → 2015-08-14 12:00 A (-5d) |  | 0% → 100% | 0d → none |  |  |
| 338 | Review Report no.5 (draft version) | 2015-08-20 08:00 → 2015-08-14 13:00 A (-6d) | 2015-08-20 09:36 → 2015-08-14 14:36 A (-6d) |  | 0% → 100% | 0d → none |  |  |
| 339 | Update Report no.5 (draft version) | 2015-08-20 09:36 → 2015-08-14 14:36 A (-6d) | 2015-08-20 10:24 → 2015-08-14 15:24 A (-6d) |  | 0% → 100% | 0d → none |  |  |
| 340 | Submit Report no.5 (first version) | 2015-08-20 10:24 → 2015-08-14 15:24 A (-6d) | 2015-08-20 10:24 → 2015-08-14 15:24 A (-6d) |  | 0% → 100% | 0d → none |  |  |
| 341 | Revise after got comments for Report no.5 | 2015-08-20 10:24 → 2015-08-14 15:24 A (-6d) | 2015-08-20 11:12 → 2015-08-14 16:12 A (-6d) |  | 0% → 100% | 0d → none |  |  |
| 342 | Submit Report no.5 (final version) | 2015-08-20 11:12 → 2015-08-14 16:12 A (-6d) | 2015-08-20 11:12 → 2015-08-14 16:12 A (-6d) |  | 0% → 100% | 0d → none |  |  |
| 343 | **Termination** | 2015-08-20 11:12 → 2015-08-14 16:12 A (-6d) | 2015-09-02 17:00 → 2015-08-28 12:00 A (-5d) |  | 0% → 100% | 0d → none |  |  |
| 344 | **Report no.6** | 2015-08-20 11:12 → 2015-08-14 16:12 A (-6d) | 2015-09-01 12:00 → 2015-08-26 17:00 A (-6d) |  | 0% → 100% | 0d → none |  |  |
| 345 | Complete source code & final report | 2015-08-20 11:12 → 2015-08-14 16:12 A (-6d) | 2015-08-24 16:12 → 2015-08-19 11:12 A (-5d) |  | 0% → 100% | 0d → none |  |  |
| 346 | Develop installation guide | 2015-08-24 16:12 → 2015-08-19 11:12 A (-5d) | 2015-08-25 11:12 → 2015-08-19 16:12 A (-6d) |  | 0% → 100% | 0d → none |  |  |
| 347 | Develop user guideline | 2015-08-25 11:12 → 2015-08-19 16:12 A (-6d) | 2015-08-26 09:36 → 2015-08-20 14:36 A (-6d) |  | 0% → 100% | 0d → none |  |  |
| 348 | Complete Project Result Assessment | 2015-08-26 09:36 → 2015-08-20 14:36 A (-6d) | 2015-08-27 09:36 → 2015-08-21 14:36 A (-6d) |  | 0% → 100% | 0d → none |  |  |
| 349 | Conduct lessons learned | 2015-08-27 09:36 → 2015-08-21 14:36 A (-6d) | 2015-08-27 15:24 → 2015-08-24 10:24 A (-3d) |  | 0% → 100% | 0d → none |  |  |
| 350 | Complete Presentation slide | 2015-08-27 15:24 → 2015-08-24 10:24 A (-3d) | 2015-08-28 15:24 → 2015-08-25 10:24 A (-3d) |  | 0% → 100% | 0d → none |  |  |

| ID | Task | Start | Finish | Complete | Total float |
| --- | --- | --- | --- | --- | --- |
| 351 | Review Report no.6 (draft version) | 2015-08-28 15:24 → 2015-08-25 10:24 A (-3d) | 2015-08-31 15:24 → 2015-08-26 10:24 A (-5d) | 0% → 100% | 0d → none |
| 352 | Update Report no.6 (draft version) | 2015-08-31 15:24 → 2015-08-26 10:24 A (-5d) | 2015-09-01 10:24 → 2015-08-26 15:24 A (-6d) | 0% → 100% | 0d → none |
| 353 | Submit Report no.6 (first version) | 2015-09-01 10:24 → 2015-08-26 15:24 A (-6d) | 2015-09-01 10:24 → 2015-08-26 15:24 A (-6d) | 0% → 100% | 0d → none |
| 354 | Revise after got comments for Report no.6 | 2015-09-01 10:24 → 2015-08-26 15:24 A (-6d) | 2015-09-01 12:00 → 2015-08-26 17:00 A (-6d) | 0% → 100% | 0d → none |
| 355 | Submit Report no.6 (final version) | 2015-09-01 12:00 → 2015-08-26 17:00 A (-6d) | 2015-09-01 12:00 → 2015-08-26 17:00 A (-6d) | 0% → 100% | 0d → none |
| 356 | Submit Final report & CD source code | 2015-09-01 12:00 → 2015-08-26 17:00 A (-6d) | 2015-09-01 12:00 → 2015-08-26 17:00 A (-6d) | 0% → 100% | 0d → none |
| 357 | **Pre-closing** | 2015-09-01 13:00 → 2015-08-27 08:00 A (-5d) | 2015-09-02 12:00 → 2015-08-27 17:00 A (-6d) | 0% → 100% | 0d → none |
| 358 | Training presentation | 2015-09-01 13:00 → 2015-08-27 08:00 A (-5d) | 2015-09-02 12:00 → 2015-08-27 17:00 A (-6d) | 0% → 100% | 0d → none |
| 359 | **Closing** | 2015-09-02 13:00 → 2015-08-28 08:00 A (-5d) | 2015-09-02 17:00 → 2015-08-28 12:00 A (-5d) | 0% → 100% | 0d → none |
| 360 | Present Capstone Project & Completed | 2015-09-02 13:00 → 2015-08-28 08:00 A (-5d) | 2015-09-02 17:00 → 2015-08-28 12:00 A (-5d) | 0% → 100% | 0d → none |

## Version 3 (saved 2015-09-01)

Last finish 2015-08-28 → 2015-09-04 (+7d).

Changed:

| ID | Task | Start | Finish | Duration |
| --- | --- | --- | --- | --- |
| 1 | **BL** |  | 2015-08-28 12:00 A → 2015-09-04 17:00 A (+7d) | 74.5d → 80d |
| 2 | **Initiation** |  | 2015-05-25 16:12 A → 2015-05-27 14:36 A (+2d) | 10.9d → 12.7d |
| 10 | **Technologies** |  | 2015-05-25 16:12 A → 2015-05-27 14:36 A (+2d) | 4.2d → 6d |
| 12 | Install and configure Android Studio and Android SDK |  | 2015-05-25 16:12 A → 2015-05-27 14:36 A (+2d) | 0.6d → 0.5d |
| 13 | Install and configure NetBeans, PHP |  | 2015-05-25 09:36 A → 2015-05-27 11:12 A (+2d) |  |
| 14 | Study web service | 2015-05-25 09:36 A → 2015-05-27 11:12 A (+2d) | 2015-05-25 10:24 A → 2015-05-27 12:00 A (+2d) |  |
| 34 | **Project plan** |  | 2015-05-25 10:24 A → 2015-05-27 14:36 A (+2d) | 7.3d → 9.7d |
| 38 | Create Configuration Management Plan version 1.0 | 2015-05-20 13:00 A → 2015-05-22 16:12 A (+2d) | 2015-05-21 10:24 A → 2015-05-25 14:36 A (+4d) |  |
| 39 | Create Project Plan (first version) | 2015-05-21 10:24 A → 2015-05-25 14:36 A (+4d) | 2015-05-22 15:24 A → 2015-05-27 09:36 A (+5d) |  |
| 40 | Review Project Plan (first version) | 2015-05-22 15:24 A → 2015-05-27 09:36 A (+5d) | 2015-05-25 10:24 A → 2015-05-27 14:36 A (+2d) |  |
| 41 | Complete Project Plan (final version) | 2015-05-25 10:24 A → 2015-05-27 14:36 A (+2d) | 2015-05-25 10:24 A → 2015-05-27 14:36 A (+2d) |  |
| 47 | Submit PP, URS, Concept Design | 2015-05-25 10:24 A → 2015-05-27 14:36 A (+2d) | 2015-05-25 10:24 A → 2015-05-27 14:36 A (+2d) |  |
| 48 | **Solution** | 2015-05-25 10:24 A → 2015-05-27 14:36 A (+2d) | 2015-07-09 17:00 A → 2015-07-14 12:00 A (+5d) | 28.7d → 28.8d |
| 49 | **Requirements** | 2015-05-25 10:24 A → 2015-05-27 14:36 A (+2d) | 2015-06-03 12:00 A → 2015-06-05 16:12 A (+2d) |  |
| 50 | **Software Requirements Specification** | 2015-05-25 10:24 A → 2015-05-27 14:36 A (+2d) | 2015-06-03 12:00 A → 2015-06-05 16:12 A (+2d) |  |
| 51 | **Functional Requirement Specification** | 2015-05-25 10:24 A → 2015-05-27 14:36 A (+2d) | 2015-06-01 09:36 A → 2015-06-03 13:48 A (+2d) |  |
| 52 | **Bus Driver Module** | 2015-05-25 10:24 A → 2015-05-27 14:36 A (+2d) | 2015-05-26 09:36 A → 2015-05-28 13:48 A (+2d) |  |
| 53 | Send bus info module | 2015-05-25 10:24 A → 2015-05-27 14:36 A (+2d) | 2015-05-26 09:36 A → 2015-05-28 13:48 A (+2d) |  |
| 54 | **Bus Rider Module** | 2015-05-25 10:24 A → 2015-05-27 14:36 A (+2d) | 2015-06-01 09:36 A → 2015-06-03 13:48 A (+2d) |  |
| 55 | **Common module** | 2015-05-27 15:24 A → 2015-06-01 09:36 A (+5d) | 2015-05-28 10:24 A → 2015-06-01 14:36 A (+4d) |  |
| 56 | Change app setting | 2015-05-27 15:24 A → 2015-06-01 09:36 A (+5d) | 2015-05-28 10:24 A → 2015-06-01 14:36 A (+4d) |  |
| 57 | **Account Management module** | 2015-05-26 09:36 A → 2015-05-28 13:48 A (+2d) | 2015-05-27 15:24 A → 2015-06-01 09:36 A (+5d) |  |
| 58 | Log in | 2015-05-26 09:36 A → 2015-05-28 13:48 A (+2d) | 2015-05-26 15:24 A → 2015-05-29 09:36 A (+3d) |  |
| 59 | Log out | 2015-05-26 15:24 A → 2015-05-29 09:36 A (+3d) | 2015-05-27 08:48 A → 2015-05-29 12:00 A (+2d) |  |
| 60 | Change account info | 2015-05-27 08:48 A → 2015-05-29 13:00 A (+2d) | 2015-05-27 10:24 A → 2015-05-29 14:36 A (+2d) |  |
| 61 | Forgot password | 2015-05-27 10:24 A → 2015-05-29 14:36 A (+2d) | 2015-05-27 15:24 A → 2015-06-01 09:36 A (+5d) |  |
| 62 | **Bus module** | 2015-05-25 10:24 A → 2015-05-27 14:36 A (+2d) | 2015-05-27 17:00 A → 2015-06-01 11:12 A (+5d) |  |
| 63 | View bus list | 2015-05-25 10:24 A → 2015-05-27 14:36 A (+2d) | 2015-05-25 13:48 A → 2015-05-27 17:00 A (+2d) |  |
| 64 | View bus info | 2015-05-25 13:48 A → 2015-05-28 08:00 A (+3d) | 2015-05-25 16:12 A → 2015-05-28 10:24 A (+3d) |  |
| 65 | View bus route | 2015-05-25 16:12 A → 2015-05-28 10:24 A (+3d) | 2015-05-26 10:24 A → 2015-05-28 14:36 A (+2d) |  |
| 66 | View nearest bus | 2015-05-26 10:24 A → 2015-05-28 14:36 A (+2d) | 2015-05-26 16:12 A → 2015-05-29 10:24 A (+3d) |  |
| 67 | View bus map | 2015-05-26 16:12 A → 2015-05-29 10:24 A (+3d) | 2015-05-27 12:00 A → 2015-05-29 16:12 A (+2d) |  |
| 68 | View bus near me | 2015-05-27 13:00 A → 2015-05-29 16:12 A (+2d) | 2015-05-27 17:00 A → 2015-06-01 11:12 A (+5d) |  |
| 69 | **Path Finder module** | 2015-05-26 09:36 A → 2015-05-28 13:48 A (+2d) | 2015-05-28 16:12 A → 2015-06-02 10:24 A (+5d) |  |
| 70 | Find path | 2015-05-26 09:36 A → 2015-05-28 13:48 A (+2d) | 2015-05-27 09:36 A → 2015-05-29 13:48 A (+2d) |  |
| 71 | View paths found | 2015-05-27 09:36 A → 2015-05-29 13:48 A (+2d) | 2015-05-27 13:48 A → 2015-05-29 17:00 A (+2d) |  |
| 72 | View path detail | 2015-05-27 13:48 A → 2015-06-01 08:00 A (+5d) | 2015-05-28 10:24 A → 2015-06-01 14:36 A (+4d) |  |
| 73 | View direction | 2015-05-28 10:24 A → 2015-06-01 14:36 A (+4d) | 2015-05-28 16:12 A → 2015-06-02 10:24 A (+5d) |  |
| 74 | **Reminder module** | 2015-05-28 16:12 A → 2015-06-02 10:24 A (+5d) | 2015-06-01 09:36 A → 2015-06-03 13:48 A (+2d) |  |
| 75 | View bus reminder | 2015-05-28 16:12 A → 2015-06-02 10:24 A (+5d) | 2015-05-29 11:12 A → 2015-06-02 15:24 A (+4d) |  |
| 76 | Add reminder | 2015-05-29 11:12 A → 2015-06-02 15:24 A (+4d) | 2015-05-29 13:48 A → 2015-06-02 17:00 A (+4d) |  |
| 77 | Edit reminder | 2015-05-29 13:48 A → 2015-06-03 08:00 A (+5d) | 2015-05-29 16:12 A → 2015-06-03 10:24 A (+5d) |  |
| 78 | Delete reminder | 2015-05-29 16:12 A → 2015-06-03 10:24 A (+5d) | 2015-05-29 17:00 A → 2015-06-03 11:12 A (+5d) |  |
| 79 | Suspend/Unsuspend a chosen reminder | 2015-06-01 08:00 A → 2015-06-03 11:12 A (+2d) | 2015-06-01 09:36 A → 2015-06-03 13:48 A (+2d) |  |
| 80 | **Track module** | 2015-05-25 10:24 A → 2015-05-27 14:36 A (+2d) | 2015-05-26 12:00 A → 2015-05-28 16:12 A (+2d) |  |
| 81 | Tracking | 2015-05-25 10:24 A → 2015-05-27 14:36 A (+2d) | 2015-05-26 10:24 A → 2015-05-28 14:36 A (+2d) |  |
| 82 | Cancel track | 2015-05-26 10:24 A → 2015-05-28 14:36 A (+2d) | 2015-05-26 12:00 A → 2015-05-28 16:12 A (+2d) |  |
| 83 | **Favorite module** | 2015-05-26 13:00 A → 2015-05-28 16:12 A (+2d) | 2015-05-28 15:24 A → 2015-06-02 09:36 A (+5d) |  |
| 84 | View favorite places | 2015-05-26 13:00 A → 2015-05-28 16:12 A (+2d) | 2015-05-26 16:12 A → 2015-05-29 10:24 A (+3d) |  |
| 85 | Add favorite places | 2015-05-26 16:12 A → 2015-05-29 10:24 A (+3d) | 2015-05-27 08:48 A → 2015-05-29 12:00 A (+2d) |  |
| 86 | Edit favorite places | 2015-05-27 08:48 A → 2015-05-29 13:00 A (+2d) | 2015-05-27 11:12 A → 2015-05-29 15:24 A (+2d) |  |
| 87 | Delete favorite places | 2015-05-27 11:12 A → 2015-05-29 15:24 A (+2d) | 2015-05-27 13:48 A → 2015-05-29 17:00 A (+2d) |  |
| 88 | Search favorite places | 2015-05-27 13:48 A → 2015-06-01 08:00 A (+5d) | 2015-05-27 15:24 A → 2015-06-01 09:36 A (+5d) |  |
| 89 | View favorite buses | 2015-05-27 15:24 A → 2015-06-01 09:36 A (+5d) | 2015-05-28 09:36 A → 2015-06-01 13:48 A (+4d) |  |
| 90 | Add favorite buses | 2015-05-28 09:36 A → 2015-06-01 13:48 A (+4d) | 2015-05-28 11:12 A → 2015-06-01 15:24 A (+4d) |  |
| 91 | Delete favorite buses | 2015-05-28 11:12 A → 2015-06-01 15:24 A (+4d) | 2015-05-28 13:48 A → 2015-06-01 17:00 A (+4d) |  |
| 92 | Search favorite buses | 2015-05-28 13:48 A → 2015-06-02 08:00 A (+5d) | 2015-05-28 15:24 A → 2015-06-02 09:36 A (+5d) |  |
| 93 | **Non-functional Requirement Specification** | 2015-05-28 15:24 A → 2015-06-02 09:36 A (+5d) | 2015-06-01 10:24 A → 2015-06-03 14:36 A (+2d) |  |
| 94 | Develop User Interface Requirement | 2015-05-28 15:24 A → 2015-06-02 09:36 A (+5d) | 2015-05-29 15:24 A → 2015-06-03 09:36 A (+5d) |  |
| 95 | Develop Performance Requirement | 2015-05-29 15:24 A → 2015-06-03 09:36 A (+5d) | 2015-06-01 10:24 A → 2015-06-03 14:36 A (+2d) |  |
| 96 | Review Software Requirement Specification with checklist | 2015-06-01 15:24 A → 2015-06-04 09:36 A (+3d) | 2015-06-02 17:00 A → 2015-06-05 11:12 A (+3d) |  |
| 97 | Update Software Requirement Specification | 2015-06-03 08:00 A → 2015-06-05 11:12 A (+2d) | 2015-06-03 12:00 A → 2015-06-05 16:12 A (+2d) |  |
| 98 | Complete Software Requirement Specification | 2015-06-03 12:00 A → 2015-06-05 16:12 A (+2d) | 2015-06-03 12:00 A → 2015-06-05 16:12 A (+2d) |  |
| 99 | **Design** | 2015-05-29 15:24 A → 2015-06-03 09:36 A (+5d) | 2015-07-08 11:12 A → 2015-07-10 16:12 A (+2d) | 22.6d → 22.7d |
| 100 | **Design Review checklist** | 2015-05-29 15:24 A → 2015-06-03 09:36 A (+5d) | 2015-06-02 08:48 A → 2015-06-04 12:00 A (+2d) |  |
| 101 | Develop review checklist | 2015-05-29 15:24 A → 2015-06-03 09:36 A (+5d) | 2015-06-01 15:24 A → 2015-06-04 09:36 A (+3d) |  |
| 102 | Review review checklist | 2015-06-01 15:24 A → 2015-06-04 09:36 A (+3d) | 2015-06-01 16:12 A → 2015-06-04 10:24 A (+3d) |  |
| 103 | Update review checklist | 2015-06-01 16:12 A → 2015-06-04 10:24 A (+3d) | 2015-06-02 08:48 A → 2015-06-04 12:00 A (+2d) |  |
| 104 | Complete review checklist | 2015-06-02 08:48 A → 2015-06-04 12:00 A (+2d) | 2015-06-02 08:48 A → 2015-06-04 12:00 A (+2d) |  |
| 105 | **Architecture design** | 2015-06-03 13:00 A → 2015-06-05 16:12 A (+2d) | 2015-06-05 12:00 A → 2015-06-09 16:12 A (+4d) |  |

| ID | Task | Start | Finish | Duration |
| --- | --- | --- | --- | --- |
| 106 | Define system structure and collect system features | 2015-06-03 13:00 A → 2015-06-05 16:12 A (+2d) | 2015-06-04 12:00 A → 2015-06-08 16:12 A (+4d) |  |
| 107 | Study & choose System Architecture | 2015-06-04 13:00 A → 2015-06-08 16:12 A (+4d) | 2015-06-04 17:00 A → 2015-06-09 11:12 A (+5d) |  |
| 108 | Review Architecture Design with checklist | 2015-06-05 08:00 A → 2015-06-09 11:12 A (+4d) | 2015-06-05 10:24 A → 2015-06-09 14:36 A (+4d) |  |
| 109 | Update Architecture Design | 2015-06-05 10:24 A → 2015-06-09 14:36 A (+4d) | 2015-06-05 12:00 A → 2015-06-09 16:12 A (+4d) |  |
| 110 | Complete System Architecture version 1.0 | 2015-06-05 12:00 A → 2015-06-09 16:12 A (+4d) | 2015-06-05 12:00 A → 2015-06-09 16:12 A (+4d) |  |
| 111 | **Detailed design** | 2015-06-05 13:00 A → 2015-06-09 16:12 A (+4d) | 2015-07-08 11:12 A → 2015-07-10 16:12 A (+2d) | 17.9d → 18d |
| 112 | **User Interface design** | 2015-06-05 13:00 A → 2015-06-09 16:12 A (+4d) | 2015-07-06 17:00 A → 2015-07-10 09:36 A (+4d) | 16.5d → 17.3d |
| 113 | **Bus Driver Module** | 2015-06-10 08:00 A → 2015-06-09 16:12 A (-1d) | 2015-06-10 11:12 A → 2015-06-12 14:36 A (+2d) | 0.4d → 2.8d |
| 114 | Send bus info module | 2015-06-10 08:00 A → 2015-06-09 16:12 A (-1d) | 2015-06-10 11:12 A → 2015-06-12 14:36 A (+2d) |  |
| 115 | **Bus Rider Module** | 2015-06-05 13:00 A → 2015-06-09 16:12 A (+4d) | 2015-07-06 17:00 A → 2015-07-10 09:36 A (+4d) | 16.5d → 17.3d |
| 116 | **Common module** | 2015-06-10 08:00 A → 2015-06-09 16:12 A (-1d) | 2015-06-10 11:12 A → 2015-06-12 14:36 A (+2d) | 0.4d → 2.8d |
| 117 | Change app setting | 2015-06-10 08:00 A → 2015-06-09 16:12 A (-1d) | 2015-06-10 11:12 A → 2015-06-12 14:36 A (+2d) |  |
| 118 | **Account Management module** | 2015-06-18 08:00 A → 2015-06-09 16:12 A (-9d) | 2015-06-19 10:24 A → 2015-06-30 17:00 A (+11d) | 1.3d → 10.1d |
| 119 | Log in | 2015-06-18 08:00 A → 2015-06-09 16:12 A (-9d) | 2015-06-18 12:00 A → 2015-06-30 09:36 A (+12d) |  |
| 120 | Log out | 2015-06-18 13:00 A → 2015-06-30 09:36 A (+12d) | 2015-06-18 15:24 A → 2015-06-30 12:00 A (+12d) |  |
| 121 | Change account info | 2015-06-18 15:24 A → 2015-06-30 13:00 A (+12d) | 2015-06-18 17:00 A → 2015-06-30 14:36 A (+12d) |  |
| 122 | Forgot password | 2015-06-19 08:00 A → 2015-06-30 14:36 A (+11d) | 2015-06-19 10:24 A → 2015-06-30 17:00 A (+11d) |  |
| 123 | **Bus module** | 2015-06-16 15:24 A → 2015-06-09 16:12 A (-7d) | 2015-07-06 15:24 A → 2015-07-09 17:00 A (+3d) | 9d → 17.1d |
| 124 | View bus list | 2015-06-16 15:24 A → 2015-06-09 16:12 A (-7d) | 2015-06-17 08:48 A → 2015-06-19 08:48 A (+2d) |  |
| 125 | View bus info | 2015-06-17 08:48 A → 2015-06-19 08:48 A (+2d) | 2015-06-19 11:12 A → 2015-06-30 11:12 A (+11d) |  |
| 126 | View bus route | 2015-06-19 11:12 A → 2015-06-30 11:12 A (+11d) | 2015-06-29 10:24 A → 2015-07-01 10:24 A (+2d) |  |
| 127 | View nearest bus | 2015-06-30 09:36 A → 2015-07-03 08:00 A (+3d) | 2015-06-30 16:12 A → 2015-07-03 14:36 A (+3d) |  |
| 128 | View bus map | 2015-07-02 08:00 A → 2015-07-07 09:36 A (+5d) | 2015-07-02 15:24 A → 2015-07-07 17:00 A (+5d) |  |
| 129 | View bus near me | 2015-07-06 09:36 A → 2015-07-09 11:12 A (+3d) | 2015-07-06 15:24 A → 2015-07-09 17:00 A (+3d) |  |
| 130 | **Path Finder module** | 2015-06-05 13:00 A → 2015-06-09 16:12 A (+4d) | 2015-06-09 17:00 A → 2015-06-12 11:12 A (+3d) |  |
| 131 | Find path | 2015-06-05 13:00 A → 2015-06-09 16:12 A (+4d) | 2015-06-08 12:00 A → 2015-06-10 16:12 A (+2d) |  |
| 132 | View paths found | 2015-06-08 13:00 A → 2015-06-10 16:12 A (+2d) | 2015-06-08 16:12 A → 2015-06-11 10:24 A (+3d) |  |
| 133 | View path detail | 2015-06-08 16:12 A → 2015-06-11 10:24 A (+3d) | 2015-06-09 12:00 A → 2015-06-11 16:12 A (+2d) |  |
| 134 | View direction | 2015-06-09 13:00 A → 2015-06-11 16:12 A (+2d) | 2015-06-09 17:00 A → 2015-06-12 11:12 A (+3d) |  |
| 135 | **Reminder module** | 2015-07-01 10:24 A → 2015-07-06 13:00 A (+5d) | 2015-07-06 09:36 A → 2015-07-09 11:12 A (+3d) |  |
| 136 | View bus reminder | 2015-07-01 10:24 A → 2015-07-06 13:00 A (+5d) | 2015-07-01 15:24 A → 2015-07-06 17:00 A (+5d) |  |
| 137 | Add reminder | 2015-07-01 15:24 A → 2015-07-07 08:00 A (+6d) | 2015-07-01 17:00 A → 2015-07-07 09:36 A (+6d) |  |
| 138 | Edit reminder | 2015-07-03 11:12 A → 2015-07-08 13:48 A (+5d) | 2015-07-03 14:36 A → 2015-07-08 16:12 A (+5d) |  |
| 139 | Delete reminder | 2015-07-03 14:36 A → 2015-07-08 16:12 A (+5d) | 2015-07-03 15:24 A → 2015-07-08 17:00 A (+5d) |  |
| 140 | Suspend/Unsuspend a chosen reminder | 2015-07-06 08:00 A → 2015-07-09 09:36 A (+3d) | 2015-07-06 09:36 A → 2015-07-09 11:12 A (+3d) |  |
| 141 | **Track module** | 2015-06-15 15:24 A → 2015-06-09 16:12 A (-6d) | 2015-06-17 17:00 A → 2015-06-29 16:12 A (+12d) | 2.2d → 9d |
| 142 | Tracking | 2015-06-15 15:24 A → 2015-06-09 16:12 A (-6d) | 2015-06-17 15:24 A → 2015-06-29 14:36 A (+12d) |  |
| 143 | Cancel track | 2015-06-17 15:24 A → 2015-06-29 14:36 A (+12d) | 2015-06-17 17:00 A → 2015-06-29 16:12 A (+12d) |  |
| 144 | **Favorite module** | 2015-06-29 10:24 A → 2015-06-29 16:12 A | 2015-07-06 17:00 A → 2015-07-10 09:36 A (+4d) | 5.7d → 8.3d |
| 145 | View favorite places | 2015-06-29 10:24 A → 2015-06-29 16:12 A | 2015-06-29 14:36 A → 2015-06-30 10:24 A (+1d) |  |
| 146 | Add favorite places | 2015-06-29 14:36 A → 2015-07-01 10:24 A (+2d) | 2015-06-29 16:12 A → 2015-07-01 12:00 A (+2d) |  |
| 147 | Edit favorite places | 2015-06-29 16:12 A → 2015-07-02 14:36 A (+3d) | 2015-06-30 09:36 A → 2015-07-02 17:00 A (+2d) |  |
| 148 | Delete favorite places | 2015-06-30 16:12 A → 2015-07-06 08:48 A (+6d) | 2015-07-01 08:48 A → 2015-07-06 10:24 A (+5d) |  |
| 149 | Search favorite places | 2015-07-01 08:48 A → 2015-07-06 10:24 A (+5d) | 2015-07-01 10:24 A → 2015-07-06 12:00 A (+5d) |  |
| 150 | View favorite buses | 2015-07-02 15:24 A → 2015-07-08 08:00 A (+6d) | 2015-07-03 09:36 A → 2015-07-08 11:12 A (+5d) |  |
| 151 | Add favorite buses | 2015-07-03 09:36 A → 2015-07-08 11:12 A (+5d) | 2015-07-03 11:12 A → 2015-07-08 13:48 A (+5d) |  |
| 152 | Delete favorite buses | 2015-07-03 15:24 A → 2015-07-09 08:00 A (+6d) | 2015-07-03 17:00 A → 2015-07-09 09:36 A (+6d) |  |
| 153 | Search favorite buses | 2015-07-06 15:24 A → 2015-07-10 08:00 A (+4d) | 2015-07-06 17:00 A → 2015-07-10 09:36 A (+4d) |  |
| 154 | Review Detailed Design with checklist | 2015-07-07 08:00 A → 2015-07-10 09:36 A (+3d) | 2015-07-07 09:36 A → 2015-07-10 11:12 A (+3d) |  |
| 155 | Update Detailed Design | 2015-07-07 09:36 A → 2015-07-10 11:12 A (+3d) | 2015-07-07 14:36 A → 2015-07-10 16:12 A (+3d) |  |
| 156 | Complete Detailed Design version 1.0 | 2015-07-08 11:12 A → 2015-07-10 16:12 A (+2d) | 2015-07-08 11:12 A → 2015-07-10 16:12 A (+2d) |  |
| 157 | **Database design** | 2015-06-05 13:00 A → 2015-06-09 16:12 A (+4d) | 2015-06-17 10:24 A → 2015-06-29 09:36 A (+12d) | 7.8d → 8.3d |
| 158 | Create Databse Design draft version | 2015-06-05 13:00 A → 2015-06-09 16:12 A (+4d) | 2015-06-15 15:24 A → 2015-06-18 14:36 A (+3d) |  |
| 159 | Review Database Design with checklist | 2015-06-15 15:24 A → 2015-06-18 14:36 A (+3d) | 2015-06-16 10:24 A → 2015-06-19 09:36 A (+3d) |  |
| 160 | Update Database Design | 2015-06-16 10:24 A → 2015-06-19 09:36 A (+3d) | 2015-06-17 10:24 A → 2015-06-29 09:36 A (+12d) |  |
| 161 | Complete Database Design version 1.0 | 2015-06-17 10:24 A → 2015-06-29 09:36 A (+12d) | 2015-06-17 10:24 A → 2015-06-29 09:36 A (+12d) |  |
| 162 | **Class design** | 2015-06-17 10:24 A → 2015-06-29 09:36 A (+12d) | 2015-06-29 10:24 A → 2015-07-06 11:12 A (+7d) | 3d → 5.2d |
| 163 | Define class/component | 2015-06-17 10:24 A → 2015-06-29 09:36 A (+12d) | 2015-06-19 10:24 A → 2015-07-02 14:36 A (+13d) | 2d → 3.2d |
| 164 | Review Class Design with checklist | 2015-06-19 13:48 A → 2015-07-03 14:36 A (+14d) | 2015-06-19 17:00 A → 2015-07-06 08:48 A (+17d) |  |
| 165 | Update Class Design | 2015-06-29 08:00 A → 2015-07-06 08:48 A (+7d) | 2015-06-29 10:24 A → 2015-07-06 11:12 A (+7d) |  |
| 166 | Complete Class Design version 1.0 | 2015-06-29 10:24 A → 2015-07-06 11:12 A (+7d) | 2015-06-29 10:24 A → 2015-07-06 11:12 A (+7d) |  |
| 167 | Complete design | 2015-07-01 08:00 A → 2015-07-10 16:12 A (+9d) | 2015-07-01 08:00 A → 2015-07-10 16:12 A (+9d) |  |
| 168 | **Progress Report 2** | 2015-07-08 11:12 A → 2015-07-10 16:12 A (+2d) | 2015-07-09 17:00 A → 2015-07-14 12:00 A (+5d) |  |
| 169 | Develop Progress Report 2 | 2015-07-08 11:12 A → 2015-07-10 16:12 A (+2d) | 2015-07-09 15:24 A → 2015-07-14 10:24 A (+5d) |  |
| 170 | Review Progress Report 2 | 2015-07-09 15:24 A → 2015-07-14 10:24 A (+5d) | 2015-07-09 16:12 A → 2015-07-14 11:12 A (+5d) |  |
| 171 | Update Progress Report 2 | 2015-07-09 16:12 A → 2015-07-14 11:12 A (+5d) | 2015-07-09 17:00 A → 2015-07-14 12:00 A (+5d) |  |
| 172 | Complete Progress Report 2 | 2015-07-09 17:00 A → 2015-07-14 12:00 A (+5d) | 2015-07-09 17:00 A → 2015-07-14 12:00 A (+5d) |  |
| 173 | Submit SRS,AD,DD | 2015-07-01 08:00 A → 2015-07-10 16:12 A (+9d) | 2015-07-01 08:00 A → 2015-07-10 16:12 A (+9d) |  |
| 174 | **Coding & Unit Testing** | 2015-07-08 11:12 A → 2015-07-10 16:12 A (+2d) | 2015-07-08 16:12 A → 2015-07-13 11:12 A (+5d) |  |
| 175 | **Bus Driver Module** | 2015-07-08 11:12 A → 2015-07-10 16:12 A (+2d) | 2015-07-08 16:12 A → 2015-07-13 11:12 A (+5d) |  |

| ID | Task | Start | Finish | Duration |
| --- | --- | --- | --- | --- |
| 176 | Send bus info module | 2015-07-08 11:12 A → 2015-07-10 16:12 A (+2d) | 2015-07-08 16:12 A → 2015-07-13 11:12 A (+5d) |  |
| 177 | **Testing** | 2015-06-05 13:00 A → 2015-06-09 16:12 A (+4d) | 2015-07-02 15:24 A → 2015-07-07 09:36 A (+5d) |  |
| 178 | **Test review checklist** | 2015-06-05 13:00 A → 2015-06-09 16:12 A (+4d) | 2015-06-10 14:36 A → 2015-06-12 16:12 A (+2d) | 3.2d → 3d |
| 179 | **Test plan review checklist** | 2015-06-05 13:00 A → 2015-06-09 16:12 A (+4d) | 2015-06-10 10:24 A → 2015-06-12 12:00 A (+2d) | 2.8d → 2.6d |
| 180 | Develop test plan review checklist | 2015-06-05 13:00 A → 2015-06-09 16:12 A (+4d) | 2015-06-08 08:48 A → 2015-06-10 12:00 A (+2d) |  |
| 181 | Review test plan review checklist | 2015-06-08 08:48 A → 2015-06-10 13:00 A (+2d) | 2015-06-08 12:00 A → 2015-06-10 16:12 A (+2d) |  |
| 182 | Update test plan review checklist | 2015-06-10 08:48 A → 2015-06-12 10:24 A (+2d) | 2015-06-10 10:24 A → 2015-06-12 12:00 A (+2d) |  |
| 183 | Complete test plan review checklist | 2015-06-10 10:24 A → 2015-06-12 12:00 A (+2d) | 2015-06-10 10:24 A → 2015-06-12 12:00 A (+2d) |  |
| 184 | **Test case review checklist** | 2015-06-08 08:48 A → 2015-06-09 16:12 A (+1d) | 2015-06-10 14:36 A → 2015-06-12 16:12 A (+2d) | 2.6d → 3d |
| 185 | Develop test case review checklist | 2015-06-08 08:48 A → 2015-06-09 16:12 A (+1d) | 2015-06-09 08:48 A → 2015-06-11 11:12 A (+2d) |  |
| 186 | Review test case review checklist | 2015-06-09 08:48 A → 2015-06-11 11:12 A (+2d) | 2015-06-09 12:00 A → 2015-06-11 15:24 A (+2d) |  |
| 187 | Update test case review checklist | 2015-06-10 10:24 A → 2015-06-12 13:00 A (+2d) | 2015-06-10 14:36 A → 2015-06-12 16:12 A (+2d) |  |
| 188 | Complete test case review checklist | 2015-06-10 14:36 A → 2015-06-12 16:12 A (+2d) | 2015-06-10 14:36 A → 2015-06-12 16:12 A (+2d) |  |
| 189 | Complete review checklist | 2015-06-10 14:36 A → 2015-06-12 16:12 A (+2d) | 2015-06-10 14:36 A → 2015-06-12 16:12 A (+2d) |  |
| 190 | **Test plan** | 2015-06-09 08:48 A → 2015-06-09 16:12 A | 2015-06-11 08:48 A → 2015-06-15 10:24 A (+4d) | 2d → 3.4d |
| 191 | Develop test plan | 2015-06-09 08:48 A → 2015-06-09 16:12 A | 2015-06-10 08:48 A → 2015-06-12 10:24 A (+2d) |  |
| 192 | Review test plan | 2015-06-10 10:24 A → 2015-06-12 13:00 A (+2d) | 2015-06-10 15:24 A → 2015-06-12 17:00 A (+2d) |  |
| 193 | Update test plan | 2015-06-10 15:24 A → 2015-06-15 08:00 A (+5d) | 2015-06-11 08:48 A → 2015-06-15 10:24 A (+4d) |  |
| 194 | Complete test plan | 2015-06-11 08:48 A → 2015-06-15 10:24 A (+4d) | 2015-06-11 08:48 A → 2015-06-15 10:24 A (+4d) |  |
| 195 | **Test case** | 2015-06-11 08:48 A → 2015-06-15 10:24 A (+4d) | 2015-07-02 15:24 A → 2015-07-07 09:36 A (+5d) | 10.7d → 10.9d |
| 196 | **Unit test** | 2015-06-11 08:48 A → 2015-06-15 10:24 A (+4d) | 2015-06-16 15:24 A → 2015-06-18 17:00 A (+2d) |  |
| 197 | **Develop unit test case** | 2015-06-11 08:48 A → 2015-06-15 10:24 A (+4d) | 2015-06-12 15:24 A → 2015-06-16 17:00 A (+4d) |  |
| 198 | Bus driver module | 2015-06-11 08:48 A → 2015-06-15 10:24 A (+4d) | 2015-06-11 13:48 A → 2015-06-15 15:24 A (+4d) |  |
| 199 | Bus module | 2015-06-11 13:48 A → 2015-06-15 15:24 A (+4d) | 2015-06-12 13:48 A → 2015-06-16 15:24 A (+4d) |  |
| 200 | Setting module | 2015-06-12 13:48 A → 2015-06-16 15:24 A (+4d) | 2015-06-12 15:24 A → 2015-06-16 17:00 A (+4d) |  |
| 201 | Review unit test case | 2015-06-12 15:24 A → 2015-06-17 08:00 A (+5d) | 2015-06-15 15:24 A → 2015-06-17 17:00 A (+2d) |  |
| 202 | Update unit test case | 2015-06-15 15:24 A → 2015-06-18 08:00 A (+3d) | 2015-06-16 15:24 A → 2015-06-18 17:00 A (+2d) |  |
| 203 | Complete unit test case | 2015-06-16 15:24 A → 2015-06-18 17:00 A (+2d) | 2015-06-16 15:24 A → 2015-06-18 17:00 A (+2d) |  |
| 204 | **Integration test** | 2015-06-16 15:24 A → 2015-06-19 09:36 A (+3d) | 2015-06-29 15:24 A → 2015-07-02 09:36 A (+3d) |  |
| 205 | Develop integration test case | 2015-06-16 15:24 A → 2015-06-19 09:36 A (+3d) | 2015-06-18 15:24 A → 2015-06-30 09:36 A (+12d) |  |
| 206 | Review integration test case | 2015-06-18 15:24 A → 2015-06-30 09:36 A (+12d) | 2015-06-19 15:24 A → 2015-07-01 09:36 A (+12d) |  |
| 207 | Update integration test case | 2015-06-19 15:24 A → 2015-07-01 09:36 A (+12d) | 2015-06-29 15:24 A → 2015-07-02 09:36 A (+3d) |  |
| 208 | Complete integration test case | 2015-06-29 15:24 A → 2015-07-02 09:36 A (+3d) | 2015-06-29 15:24 A → 2015-07-02 09:36 A (+3d) |  |
| 209 | **System test** | 2015-06-29 15:24 A → 2015-07-02 09:36 A (+3d) | 2015-07-02 15:24 A → 2015-07-07 09:36 A (+5d) |  |
| 210 | Develop system test case | 2015-06-29 15:24 A → 2015-07-02 09:36 A (+3d) | 2015-06-30 15:24 A → 2015-07-03 09:36 A (+3d) |  |
| 211 | Review system test case | 2015-06-30 15:24 A → 2015-07-03 09:36 A (+3d) | 2015-07-01 15:24 A → 2015-07-06 09:36 A (+5d) |  |
| 212 | Update system test case | 2015-07-01 15:24 A → 2015-07-06 09:36 A (+5d) | 2015-07-02 15:24 A → 2015-07-07 09:36 A (+5d) |  |
| 213 | Complete system test case | 2015-07-02 15:24 A → 2015-07-07 09:36 A (+5d) | 2015-07-02 15:24 A → 2015-07-07 09:36 A (+5d) |  |
| 214 | **Progress report 3** | 2015-07-02 15:24 A → 2015-07-07 09:36 A (+5d) | 2015-07-03 10:24 A → 2015-07-07 14:36 A (+4d) |  |
| 215 | Develop Progress Report 3 | 2015-07-02 15:24 A → 2015-07-07 09:36 A (+5d) | 2015-07-03 08:48 A → 2015-07-07 12:00 A (+4d) |  |
| 216 | Review Progress Report 3 | 2015-07-03 08:48 A → 2015-07-07 13:00 A (+4d) | 2015-07-03 09:36 A → 2015-07-07 13:48 A (+4d) |  |
| 217 | Update Progress Report 3 | 2015-07-03 09:36 A → 2015-07-07 13:48 A (+4d) | 2015-07-03 10:24 A → 2015-07-07 14:36 A (+4d) |  |
| 218 | Complete Progress Report 3 | 2015-07-03 10:24 A → 2015-07-07 14:36 A (+4d) | 2015-07-03 10:24 A → 2015-07-07 14:36 A (+4d) |  |
| 219 | **Report no.3** | 2015-07-02 15:24 A → 2015-07-07 09:36 A (+5d) | 2015-07-09 17:00 A → 2015-07-14 12:00 A (+5d) | 5.2d → 5.3d |
| 220 | Develop Report no.3 (draft version) | 2015-07-02 15:24 A → 2015-07-07 09:36 A (+5d) | 2015-07-02 17:00 A → 2015-07-07 11:12 A (+5d) |  |
| 221 | Review Report no.3 (draft version) | 2015-07-03 08:00 A → 2015-07-07 11:12 A (+4d) | 2015-07-06 08:48 A → 2015-07-08 12:00 A (+2d) |  |
| 222 | Update Report no.3 (draft version) | 2015-07-06 08:48 A → 2015-07-08 13:00 A (+2d) | 2015-07-06 13:48 A → 2015-07-08 17:00 A (+2d) |  |
| 223 | Submit Report no.3 (first version) | 2015-07-06 13:48 A → 2015-07-08 17:00 A (+2d) | 2015-07-06 13:48 A → 2015-07-08 17:00 A (+2d) |  |
| 224 | Revise after got comments for Report no.3 | 2015-07-06 13:48 A → 2015-07-09 08:00 A (+3d) | 2015-07-07 11:12 A → 2015-07-09 15:24 A (+2d) |  |
| 225 | Submit Report no.3 (final version) | 2015-07-09 17:00 A → 2015-07-14 12:00 A (+5d) | 2015-07-09 17:00 A → 2015-07-14 12:00 A (+5d) |  |
| 226 | **Construction** | 2015-07-10 08:00 A → 2015-07-14 13:00 A (+4d) | 2015-08-14 16:12 A → 2015-08-26 09:36 A (+12d) | 25.9d → 30.7d |
| 227 | **Code Review checklist** | 2015-07-15 08:48 A → 2015-07-14 13:00 A (-1d) | 2015-07-17 11:12 A → 2015-07-16 15:24 A (-1d) |  |
| 228 | Develop review checklist | 2015-07-15 08:48 A → 2015-07-14 13:00 A (-1d) | 2015-07-16 10:24 A → 2015-07-15 14:36 A (-1d) |  |
| 229 | Review review checklist | 2015-07-16 10:24 A → 2015-07-15 14:36 A (-1d) | 2015-07-16 16:12 A → 2015-07-16 10:24 A |  |
| 230 | Update review checklist | 2015-07-16 16:12 A → 2015-07-16 10:24 A | 2015-07-17 11:12 A → 2015-07-16 15:24 A (-1d) |  |
| 231 | Complete review checklist | 2015-07-17 11:12 A → 2015-07-16 15:24 A (-1d) | 2015-07-17 11:12 A → 2015-07-16 15:24 A (-1d) |  |
| 232 | **Coding & Unit testing (continue)** | 2015-07-10 08:00 A → 2015-07-14 13:00 A (+4d) | 2015-08-10 17:00 A → 2015-08-21 10:24 A (+11d) | 22d → 27.8d |
| 233 | **Bus Rider Module** | 2015-07-10 08:00 A → 2015-07-14 13:00 A (+4d) | 2015-08-10 17:00 A → 2015-08-21 10:24 A (+11d) | 22d → 27.8d |
| 234 | **Common module** | 2015-07-23 08:00 A → 2015-08-03 15:24 A (+11d) | 2015-07-23 17:00 A → 2015-08-04 15:24 A (+12d) |  |
| 235 | Change app setting | 2015-07-23 08:00 A → 2015-08-03 15:24 A (+11d) | 2015-07-23 17:00 A → 2015-08-04 15:24 A (+12d) |  |
| 236 | **Account Management module** | 2015-07-17 08:00 A → 2015-07-23 13:48 A (+6d) | 2015-07-24 16:12 A → 2015-08-03 15:24 A (+10d) | 5.9d → 7.2d |
| 237 | Log in | 2015-07-17 08:00 A → 2015-07-23 13:48 A (+6d) | 2015-07-17 13:48 A → 2015-07-24 09:36 A (+7d) |  |
| 238 | Sign up | 2015-07-17 13:48 A → 2015-07-24 09:36 A (+7d) | 2015-07-20 11:12 A → 2015-07-24 17:00 A (+4d) |  |
| 239 | Log out | 2015-07-17 13:48 A → 2015-07-24 09:36 A (+7d) | 2015-07-17 16:12 A → 2015-07-24 12:00 A (+7d) |  |
| 240 | Change password | 2015-07-17 16:12 A → 2015-07-28 13:00 A (+11d) | 2015-07-20 10:24 A → 2015-07-28 16:12 A (+8d) |  |
| 241 | Forgot password | 2015-07-24 13:00 A → 2015-08-03 11:12 A (+10d) | 2015-07-24 16:12 A → 2015-08-03 15:24 A (+10d) |  |
| 242 | **Bus module** | 2015-07-10 08:00 A → 2015-07-15 14:36 A (+5d) | 2015-07-21 09:36 A → 2015-08-03 11:12 A (+13d) | 7.2d → 12.7d |
| 243 | View bus list | 2015-07-10 08:00 A → 2015-07-15 14:36 A (+5d) | 2015-07-10 12:00 A → 2015-07-16 16:12 A (+6d) | 0.5d → 0.7d |
| 244 | View bus info | 2015-07-10 13:00 A → 2015-07-16 16:12 A (+6d) | 2015-07-10 17:00 A → 2015-07-17 12:00 A (+7d) | 0.5d → 0.6d |
| 245 | View bus route | 2015-07-13 08:00 A → 2015-07-17 13:00 A (+4d) | 2015-07-13 12:00 A → 2015-07-20 10:24 A (+7d) | 0.5d → 0.8d |

| ID | Task | Start | Finish | Duration |
| --- | --- | --- | --- | --- |
| 246 | View nearest bus | 2015-07-13 13:00 A → 2015-07-20 10:24 A (+7d) | 2015-07-14 09:36 A → 2015-07-21 14:36 A (+7d) | 0.7d → 1.4d |
| 247 | View bus map | 2015-07-14 15:24 A → 2015-07-22 11:12 A (+8d) | 2015-07-15 14:36 A → 2015-07-23 13:48 A (+8d) | 0.9d → 1.2d |
| 248 | View bus near me | 2015-07-20 08:00 A → 2015-07-30 16:12 A (+10d) | 2015-07-21 09:36 A → 2015-08-03 11:12 A (+13d) | 1.2d → 1.5d |
| 249 | **Path Finder module** | 2015-07-10 08:00 A → 2015-07-14 13:00 A (+4d) | 2015-07-22 17:00 A → 2015-07-30 16:12 A (+8d) | 9d → 12.4d |
| 250 | Find path | 2015-07-10 08:00 A → 2015-07-14 13:00 A (+4d) | 2015-07-13 12:00 A → 2015-07-16 14:36 A (+3d) | 1.5d → 2.2d |
| 251 | View paths found | 2015-07-16 10:36 A → 2015-07-16 14:36 A | 2015-07-16 16:24 A → 2015-07-17 14:36 A (+1d) | 0.6d → 1d |
| 252 | View path detail | 2015-07-17 15:36 A → 2015-07-17 14:36 A | 2015-07-20 14:00 A → 2015-07-22 11:12 A (+2d) | 0.8d → 1.3d |
| 253 | View direction | 2015-07-22 08:00 A → 2015-07-28 16:12 A (+6d) | 2015-07-22 17:00 A → 2015-07-30 16:12 A (+8d) | 1d → 2d |
| 254 | **Reminder module** | 2015-07-10 08:00 A → 2015-07-20 10:24 A (+10d) | 2015-07-15 17:00 A → 2015-07-28 16:12 A (+13d) | 4d → 6.6d |
| 255 | View bus reminder | 2015-07-10 08:00 A → 2015-07-20 10:24 A (+10d) | 2015-07-14 11:12 A → 2015-07-23 14:36 A (+9d) | 1d → 2d |
| 256 | Add reminder | 2015-07-14 11:12 A → 2015-07-23 14:36 A (+9d) | 2015-07-14 15:24 A → 2015-07-24 09:36 A (+10d) | 0.4d → 0.5d |
| 257 | Edit reminder | 2015-07-14 15:24 A → 2015-07-24 09:36 A (+10d) | 2015-07-15 11:12 A → 2015-07-24 15:24 A (+9d) |  |
| 258 | Delete reminder | 2015-07-15 11:12 A → 2015-07-24 15:24 A (+9d) | 2015-07-15 13:48 A → 2015-07-27 16:12 A (+12d) | 0.2d → 1.1d |
| 259 | Suspend/Unsuspend a chosen reminder | 2015-07-15 13:48 A → 2015-07-27 16:12 A (+12d) | 2015-07-15 17:00 A → 2015-07-28 16:12 A (+13d) | 0.4d → 1d |
| 260 | **Track module** | 2015-07-24 08:00 A → 2015-07-24 13:00 A | 2015-07-29 13:48 A → 2015-08-11 10:24 A (+13d) | 3.6d → 11.8d |
| 261 | Tracking | 2015-07-24 08:00 A → 2015-07-24 13:00 A | 2015-07-24 17:00 A → 2015-07-28 12:00 A (+4d) | 1d → 2d |
| 262 | Cancel track | 2015-07-29 10:24 A → 2015-08-10 15:24 A (+12d) | 2015-07-29 13:48 A → 2015-08-11 10:24 A (+13d) | 0.3d → 0.5d |
| 263 | **Favorite module** | 2015-07-29 13:48 A → 2015-08-11 10:24 A (+13d) | 2015-08-10 17:00 A → 2015-08-21 10:24 A (+11d) | 8.4d → 8d |
| 264 | View favorite places | 2015-07-29 13:48 A → 2015-08-11 10:24 A (+13d) | 2015-07-30 08:48 A → 2015-08-11 15:24 A (+12d) |  |
| 265 | Add favorite places | 2015-07-30 08:48 A → 2015-08-11 15:24 A (+12d) | 2015-07-31 13:48 A → 2015-08-13 10:24 A (+13d) |  |
| 266 | Edit favorite places | 2015-07-31 13:48 A → 2015-08-13 10:24 A (+13d) | 2015-08-03 15:24 A → 2015-08-14 12:00 A (+11d) |  |
| 267 | Delete favorite places | 2015-08-04 10:24 A → 2015-08-14 13:00 A (+10d) | 2015-08-04 13:48 A → 2015-08-14 15:24 A (+10d) |  |
| 268 | Search favorite places | 2015-08-05 08:48 A → 2015-08-14 15:24 A (+9d) | 2015-08-05 17:00 A → 2015-08-17 14:36 A (+12d) |  |
| 269 | View favorite buses | 2015-08-06 08:00 A → 2015-08-17 14:36 A (+11d) | 2015-08-07 09:36 A → 2015-08-18 16:12 A (+11d) |  |
| 270 | Add favorite buses | 2015-08-07 09:36 A → 2015-08-18 16:12 A (+11d) | 2015-08-10 10:24 A → 2015-08-19 17:00 A (+9d) |  |
| 271 | Delete favorite buses | 2015-08-10 10:24 A → 2015-08-20 08:00 A (+10d) | 2015-08-10 13:48 A → 2015-08-20 16:12 A (+10d) |  |
| 272 | Search favorite buses | 2015-08-10 13:48 A → 2015-08-20 16:12 A (+10d) | 2015-08-10 17:00 A → 2015-08-21 10:24 A (+11d) |  |
| 273 | Web service | 2015-07-27 08:00 A → 2015-08-04 15:24 A (+8d) | 2015-07-30 17:00 A → 2015-08-10 15:24 A (+11d) |  |
| 274 | Complete coding | 2015-07-30 17:00 A → 2015-08-11 10:24 A (+12d) | 2015-07-30 17:00 A → 2015-08-11 10:24 A (+12d) |  |
| 275 | **Progress report 4** | 2015-07-31 08:00 A → 2015-08-11 10:24 A (+11d) | 2015-07-31 12:00 A → 2015-08-11 15:24 A (+11d) |  |
| 276 | Develop Progress Report 4 | 2015-07-31 08:00 A → 2015-08-11 10:24 A (+11d) | 2015-07-31 10:24 A → 2015-08-11 13:48 A (+11d) |  |
| 277 | Review Progress Report 4 | 2015-07-31 10:24 A → 2015-08-11 13:48 A (+11d) | 2015-07-31 11:12 A → 2015-08-11 14:36 A (+11d) |  |
| 278 | Update Progress Report 4 | 2015-07-31 11:12 A → 2015-08-11 14:36 A (+11d) | 2015-07-31 12:00 A → 2015-08-11 15:24 A (+11d) |  |
| 279 | Complete Progress Report 4 | 2015-07-31 12:00 A → 2015-08-11 15:24 A (+11d) | 2015-07-31 12:00 A → 2015-08-11 15:24 A (+11d) |  |
| 280 | **Report no.4** | 2015-07-31 10:24 A → 2015-08-11 13:48 A (+11d) | 2015-08-06 12:00 A → 2015-08-17 15:24 A (+11d) |  |
| 281 | Develop Report no.4 (draft version) | 2015-07-31 10:24 A → 2015-08-11 13:48 A (+11d) | 2015-08-03 12:00 A → 2015-08-12 15:24 A (+9d) |  |
| 282 | Review Report no.4 (draft version) | 2015-08-03 13:00 A → 2015-08-12 15:24 A (+9d) | 2015-08-04 12:00 A → 2015-08-13 15:24 A (+9d) |  |
| 283 | Update Report no.4 (draft version) | 2015-08-04 12:00 A → 2015-08-13 15:24 A (+9d) | 2015-08-05 12:00 A → 2015-08-14 15:24 A (+9d) |  |
| 284 | Submit Report no.4 (first version) | 2015-08-05 12:00 A → 2015-08-14 15:24 A (+9d) | 2015-08-05 12:00 A → 2015-08-14 15:24 A (+9d) |  |
| 285 | Revise after got comments for Report no.4 | 2015-08-05 12:00 A → 2015-08-14 15:24 A (+9d) | 2015-08-06 12:00 A → 2015-08-17 15:24 A (+11d) |  |
| 286 | Submit Report no.4 (final version) | 2015-08-06 12:00 A → 2015-08-17 15:24 A (+11d) | 2015-08-06 12:00 A → 2015-08-17 15:24 A (+11d) |  |
| 287 | **Testing** | 2015-07-10 08:00 A → 2015-07-14 13:00 A (+4d) | 2015-08-13 09:36 A → 2015-08-24 12:00 A (+11d) | 24.2d → 29d |
| 288 | **Execute test & fix bugs** | 2015-07-10 08:00 A → 2015-07-14 13:00 A (+4d) | 2015-08-12 11:12 A → 2015-08-21 14:36 A (+9d) | 23.4d → 28.2d |
| 289 | **Round 1** | 2015-07-10 08:00 A → 2015-07-14 13:00 A (+4d) | 2015-08-06 10:24 A → 2015-08-18 14:36 A (+12d) | 19.3d → 25.2d |
| 290 | **Execute unit test** | 2015-07-10 08:00 A → 2015-07-14 13:00 A (+4d) | 2015-08-06 10:24 A → 2015-08-18 14:36 A (+12d) | 19.3d → 25.2d |
| 291 | Bus driver module | 2015-07-10 08:00 A → 2015-07-14 13:00 A (+4d) | 2015-07-10 14:36 A → 2015-07-15 09:36 A (+5d) |  |
| 292 | Common module | 2015-07-24 08:00 A → 2015-08-04 15:24 A (+11d) | 2015-07-24 10:24 A → 2015-08-05 08:48 A (+12d) |  |
| 293 | Account Management module | 2015-07-24 16:12 A → 2015-08-03 15:24 A (+10d) | 2015-07-27 10:24 A → 2015-08-04 09:36 A (+8d) |  |
| 294 | Bus module | 2015-07-21 09:36 A → 2015-08-03 11:12 A (+13d) | 2015-07-21 15:24 A → 2015-08-03 17:00 A (+13d) |  |
| 295 | Path Finder module | 2015-07-23 08:00 A → 2015-07-30 16:12 A (+7d) | 2015-07-23 13:48 A → 2015-07-31 12:00 A (+8d) |  |
| 296 | Reminder module | 2015-07-16 08:00 A → 2015-07-28 16:12 A (+12d) | 2015-07-16 12:00 A → 2015-07-29 11:12 A (+13d) |  |
| 297 | Track module | 2015-07-29 13:48 A → 2015-08-11 10:24 A (+13d) | 2015-07-30 13:48 A → 2015-08-12 10:24 A (+13d) |  |
| 298 | Favorite module | 2015-08-03 08:48 A → 2015-08-12 10:24 A (+9d) | 2015-08-06 10:24 A → 2015-08-18 14:36 A (+12d) |  |
| 299 | Fix bugs unit test | 2015-07-27 10:24 A → 2015-08-05 08:48 A (+9d) | 2015-07-29 10:24 A → 2015-08-07 08:48 A (+9d) |  |
| 300 | Execute integration test | 2015-07-31 08:00 A → 2015-08-11 10:24 A (+11d) | 2015-07-31 13:48 A → 2015-08-11 16:12 A (+11d) |  |
| 301 | Fix bugs integration test | 2015-07-31 13:48 A → 2015-08-11 16:12 A (+11d) | 2015-08-03 13:48 A → 2015-08-12 16:12 A (+9d) |  |
| 302 | Execute system test | 2015-08-03 13:48 A → 2015-08-12 16:12 A (+9d) | 2015-08-04 08:48 A → 2015-08-13 11:12 A (+9d) |  |
| 303 | Fix bugs system test | 2015-08-04 08:48 A → 2015-08-13 11:12 A (+9d) | 2015-08-04 13:48 A → 2015-08-13 16:12 A (+9d) |  |
| 304 | **Round 2** | 2015-08-04 13:48 A → 2015-08-13 16:12 A (+9d) | 2015-08-11 11:12 A → 2015-08-20 14:36 A (+9d) |  |
| 305 | **Execute unit test** | 2015-08-04 13:48 A → 2015-08-13 16:12 A (+9d) | 2015-08-07 10:24 A → 2015-08-18 14:36 A (+11d) | 2.7d → 2.8d |
| 306 | Bus driver module | 2015-08-05 08:00 A → 2015-08-14 13:00 A (+9d) | 2015-08-05 11:12 A → 2015-08-14 16:12 A (+9d) |  |
| 307 | Common module | 2015-08-06 08:00 A → 2015-08-17 13:48 A (+11d) | 2015-08-06 09:36 A → 2015-08-17 15:24 A (+11d) |  |
| 308 | Account Management module | 2015-08-06 13:00 A → 2015-08-17 15:24 A (+11d) | 2015-08-06 13:48 A → 2015-08-17 16:12 A (+11d) |  |
| 309 | Bus module | 2015-08-05 13:48 A → 2015-08-14 16:12 A (+9d) | 2015-08-05 17:00 A → 2015-08-17 10:24 A (+12d) |  |
| 310 | Path Finder module | 2015-08-04 13:48 A → 2015-08-13 16:12 A (+9d) | 2015-08-05 09:36 A → 2015-08-14 12:00 A (+9d) |  |
| 311 | Reminder module | 2015-08-07 08:00 A → 2015-08-18 11:12 A (+11d) | 2015-08-07 10:24 A → 2015-08-18 14:36 A (+11d) |  |
| 312 | Track module | 2015-08-06 13:48 A → 2015-08-17 16:12 A (+11d) | 2015-08-07 08:48 A → 2015-08-18 11:12 A (+11d) |  |
| 313 | Favorite module | 2015-08-06 08:00 A → 2015-08-17 10:24 A (+11d) | 2015-08-06 10:24 A → 2015-08-17 13:48 A (+11d) |  |
| 314 | Fix bugs unit test | 2015-08-06 13:48 A → 2015-08-17 16:12 A (+11d) | 2015-08-07 08:48 A → 2015-08-18 11:12 A (+11d) |  |
| 315 | Execute integration test | 2015-08-07 08:48 A → 2015-08-18 11:12 A (+11d) | 2015-08-07 13:48 A → 2015-08-18 16:12 A (+11d) |  |

| ID | Task | Start | Finish | Duration |
| --- | --- | --- | --- | --- |
| 316 | Fix bugs integration test | 2015-08-07 13:48 A → 2015-08-18 16:12 A (+11d) | 2015-08-10 10:24 A → 2015-08-19 13:48 A (+9d) |  |
| 317 | Execute system test | 2015-08-10 10:24 A → 2015-08-19 13:48 A (+9d) | 2015-08-10 15:24 A → 2015-08-20 08:48 A (+10d) |  |
| 318 | Fix bugs system test | 2015-08-10 15:24 A → 2015-08-20 08:48 A (+10d) | 2015-08-11 11:12 A → 2015-08-20 14:36 A (+9d) |  |
| 319 | Execute acceptance test & collect data | 2015-08-11 11:12 A → 2015-08-20 14:36 A (+9d) | 2015-08-12 11:12 A → 2015-08-21 14:36 A (+9d) |  |
| 320 | Complete execute test | 2015-08-12 11:12 A → 2015-08-21 14:36 A (+9d) | 2015-08-12 11:12 A → 2015-08-21 14:36 A (+9d) |  |
| 321 | **Test Report** | 2015-08-12 11:12 A → 2015-08-21 14:36 A (+9d) | 2015-08-13 09:36 A → 2015-08-24 12:00 A (+11d) |  |
| 322 | Develop test report | 2015-08-12 11:12 A → 2015-08-21 14:36 A (+9d) | 2015-08-12 15:24 A → 2015-08-24 08:48 A (+12d) |  |
| 323 | Review test report | 2015-08-12 15:24 A → 2015-08-24 08:48 A (+12d) | 2015-08-12 17:00 A → 2015-08-24 10:24 A (+12d) |  |
| 324 | Update test report | 2015-08-13 08:00 A → 2015-08-24 10:24 A (+11d) | 2015-08-13 09:36 A → 2015-08-24 12:00 A (+11d) |  |
| 325 | Complete test report | 2015-08-13 09:36 A → 2015-08-24 12:00 A (+11d) | 2015-08-13 09:36 A → 2015-08-24 12:00 A (+11d) |  |
| 326 | **Quality report** | 2015-08-13 09:36 A → 2015-08-24 13:00 A (+11d) | 2015-08-13 16:12 A → 2015-08-25 09:36 A (+12d) |  |
| 327 | Develop quality report | 2015-08-13 09:36 A → 2015-08-24 13:00 A (+11d) | 2015-08-13 12:00 A → 2015-08-24 15:24 A (+11d) |  |
| 328 | Review quality report | 2015-08-13 13:00 A → 2015-08-24 15:24 A (+11d) | 2015-08-13 14:36 A → 2015-08-24 17:00 A (+11d) |  |
| 329 | Update quality report | 2015-08-13 14:36 A → 2015-08-25 08:00 A (+12d) | 2015-08-13 16:12 A → 2015-08-25 09:36 A (+12d) |  |
| 330 | Complete quality report | 2015-08-13 16:12 A → 2015-08-25 09:36 A (+12d) | 2015-08-13 16:12 A → 2015-08-25 09:36 A (+12d) |  |
| 331 | **Progress report 5** | 2015-08-13 16:12 A → 2015-08-25 09:36 A (+12d) | 2015-08-14 11:12 A → 2015-08-25 14:36 A (+11d) |  |
| 332 | Develop Progress Report 5 | 2015-08-13 16:12 A → 2015-08-25 09:36 A (+12d) | 2015-08-14 09:36 A → 2015-08-25 12:00 A (+11d) |  |
| 333 | Review Progress Report 5 | 2015-08-14 09:36 A → 2015-08-25 13:00 A (+11d) | 2015-08-14 10:24 A → 2015-08-25 13:48 A (+11d) |  |
| 334 | Update Progress Report 5 | 2015-08-14 10:24 A → 2015-08-25 13:48 A (+11d) | 2015-08-14 11:12 A → 2015-08-25 14:36 A (+11d) |  |
| 335 | Complete Progress Report 5 | 2015-08-14 11:12 A → 2015-08-25 14:36 A (+11d) | 2015-08-14 11:12 A → 2015-08-25 14:36 A (+11d) |  |
| 336 | **Report no.5** | 2015-08-14 11:12 A → 2015-08-25 14:36 A (+11d) | 2015-08-14 16:12 A → 2015-08-26 09:36 A (+12d) |  |
| 337 | Develop Report no.5 (draft version) | 2015-08-14 11:12 A → 2015-08-25 14:36 A (+11d) | 2015-08-14 12:00 A → 2015-08-25 15:24 A (+11d) |  |
| 338 | Review Report no.5 (draft version) | 2015-08-14 13:00 A → 2015-08-25 15:24 A (+11d) | 2015-08-14 14:36 A → 2015-08-25 17:00 A (+11d) |  |
| 339 | Update Report no.5 (draft version) | 2015-08-14 14:36 A → 2015-08-26 08:00 A (+12d) | 2015-08-14 15:24 A → 2015-08-26 08:48 A (+12d) |  |
| 340 | Submit Report no.5 (first version) | 2015-08-14 15:24 A → 2015-08-26 08:48 A (+12d) | 2015-08-14 15:24 A → 2015-08-26 08:48 A (+12d) |  |
| 341 | Revise after got comments for Report no.5 | 2015-08-14 15:24 A → 2015-08-26 08:48 A (+12d) | 2015-08-14 16:12 A → 2015-08-26 09:36 A (+12d) |  |
| 342 | Submit Report no.5 (final version) | 2015-08-14 16:12 A → 2015-08-26 09:36 A (+12d) | 2015-08-14 16:12 A → 2015-08-26 09:36 A (+12d) |  |
| 343 | **Termination** | 2015-08-14 16:12 A → 2015-08-26 09:36 A (+12d) | 2015-08-28 12:00 A → 2015-09-04 17:00 A (+7d) | 9.6d → 7.8d |
| 344 | **Report no.6** | 2015-08-14 16:12 A → 2015-08-26 09:36 A (+12d) | 2015-08-26 17:00 A → 2015-09-03 17:00 A (+8d) | 8.1d → 6.8d |
| 345 | Complete source code & final report | 2015-08-14 16:12 A → 2015-08-26 09:36 A (+12d) | 2015-08-19 11:12 A → 2015-08-28 14:36 A (+9d) |  |
| 346 | Develop installation guide | 2015-08-19 11:12 A → 2015-08-28 14:36 A (+9d) | 2015-08-19 16:12 A → 2015-08-28 16:12 A (+9d) | 0.5d → 0.2d |
| 347 | Develop user guideline | 2015-08-19 16:12 A → 2015-08-28 16:12 A (+9d) | 2015-08-20 14:36 A → 2015-08-31 14:36 A (+11d) |  |
| 348 | Complete Project Result Assessment | 2015-08-20 14:36 A → 2015-08-31 14:36 A (+11d) | 2015-08-21 14:36 A → 2015-09-01 09:36 A (+11d) | 1d → 0.5d |
| 349 | Conduct lessons learned | 2015-08-21 14:36 A → 2015-09-01 09:36 A (+11d) | 2015-08-24 10:24 A → 2015-09-01 13:48 A (+8d) | 0.6d → 0.4d |
| 350 | Complete Presentation slide | 2015-08-24 10:24 A → 2015-09-01 13:48 A (+8d) | 2015-08-25 10:24 A → 2015-09-02 13:48 A (+8d) |  |
| 351 | Review Report no.6 (draft version) | 2015-08-25 10:24 A → 2015-09-02 13:48 A (+8d) | 2015-08-26 10:24 A → 2015-09-03 10:24 A (+8d) | 1d → 0.7d |
| 352 | Update Report no.6 (draft version) | 2015-08-26 10:24 A → 2015-09-03 10:24 A (+8d) | 2015-08-26 15:24 A → 2015-09-03 15:24 A (+8d) |  |
| 353 | Submit Report no.6 (first version) | 2015-08-26 15:24 A → 2015-09-03 15:24 A (+8d) | 2015-08-26 15:24 A → 2015-09-03 15:24 A (+8d) |  |
| 354 | Revise after got comments for Report no.6 | 2015-08-26 15:24 A → 2015-09-03 15:24 A (+8d) | 2015-08-26 17:00 A → 2015-09-03 17:00 A (+8d) |  |
| 355 | Submit Report no.6 (final version) | 2015-08-26 17:00 A → 2015-09-03 17:00 A (+8d) | 2015-08-26 17:00 A → 2015-09-03 17:00 A (+8d) |  |
| 356 | Submit Final report & CD source code | 2015-08-26 17:00 A → 2015-09-03 17:00 A (+8d) | 2015-08-26 17:00 A → 2015-09-03 17:00 A (+8d) |  |
| 357 | **Pre-closing** | 2015-08-27 08:00 A → 2015-09-04 08:00 A (+8d) | 2015-08-27 17:00 A → 2015-09-04 12:00 A (+8d) | 1d → 0.5d |
| 358 | Training presentation | 2015-08-27 08:00 A → 2015-09-04 08:00 A (+8d) | 2015-08-27 17:00 A → 2015-09-04 12:00 A (+8d) | 1d → 0.5d |
| 359 | **Closing** | 2015-08-28 08:00 A → 2015-09-04 13:00 A (+7d) | 2015-08-28 12:00 A → 2015-09-04 17:00 A (+7d) |  |
| 360 | Present Capstone Project & Completed | 2015-08-28 08:00 A → 2015-09-04 13:00 A (+7d) | 2015-08-28 12:00 A → 2015-09-04 17:00 A (+7d) |  |
