How a schedule from MS Project changed from version to version. A marks actual dates.

## Version 1 (saved 2015-05-19, file BL_Project_Schedule_v0.9_EN.mpp)

Note of the change: Add Project Plan

| ID | WBS | Task | Duration | Start | Finish | Predecessors | Total float |
| --- | --- | --- | --- | --- | --- | --- | --- |
| 1 | 1 | **BL** | 1d | 2015-05-11 08:00 | 2015-05-11 17:00 |  |  |
| 2 | 1.1 | **Initiation** | 10.7d | 2015-05-11 08:00 | 2015-05-25 14:36 |  | -11.8d |
| 3 |  | System feasible study | 0.2d | 2015-05-11 08:00 | 2015-05-11 09:36 |  | -11.8d |
| 4 |  | Define business situation | 0.3d | 2015-05-11 09:36 | 2015-05-11 12:00 | 3 | -11.8d |
| 5 |  | Develop project idea | 1d | 2015-05-11 13:00 | 2015-05-12 12:00 | 4 | -11.8d |
| 6 |  | Define project and system scope | 0.2d | 2015-05-12 13:00 | 2015-05-12 14:36 | 5 | -11.8d |
| 7 |  | Prepare project | 0.5d | 2015-05-12 14:36 | 2015-05-13 09:36 | 6 | -11.8d |
| 8 |  | Kick-off meeting | 0.2d | 2015-05-13 09:36 | 2015-05-13 11:12 | 7 | -11.8d |
| 9 |  | Q & A Management | 0.5d | 2015-05-13 11:12 | 2015-05-13 16:12 | 8 | -11.8d |
| 10 | 1.1.8 | **Technologies** | 5.4d | 2015-05-13 16:12 | 2015-05-21 10:24 |  | -10.5d |
| 11 |  | Research development technologies | 1.9d | 2015-05-13 16:12 | 2015-05-15 15:24 | 9 | -10.5d |
| 12 |  | Install and configure Eclipse IDE and Android SDK | 0.5d | 2015-05-15 15:24 | 2015-05-18 10:24 | 11 | -10.5d |
| 13 |  | Training Java, Android SDK & Eclipse IDE | 3d | 2015-05-18 10:24 | 2015-05-21 10:24 | 12 | -10.5d |
| 14 |  | Install and configure Visual Studio, SQL Server | 0.5d | 2015-05-15 15:24 | 2015-05-18 10:24 | 11 | -8.7d |
| 15 |  | Study web service using .NET & SQL Server | 1d | 2015-05-18 10:24 | 2015-05-19 12:00 | 14 | -8.7d |
| 16 | 1.1.9 | **Requirements** | 6.7d | 2015-05-13 16:12 | 2015-05-22 13:48 |  | -11.8d |
| 17 | 1.1.9.1 | **User Requirements Specification** | 6.7d | 2015-05-13 16:12 | 2015-05-22 13:48 |  | -11.8d |
| 18 |  | Collect business requirements and processes | 1d | 2015-05-13 16:12 | 2015-05-14 16:12 | 9 | -11.8d |
| 19 |  | Create draft requirements | 1.9d | 2015-05-14 16:12 | 2015-05-18 15:24 | 18 | -11.8d |
| 20 |  | Complete draft requirements | 0.5d | 2015-05-18 15:24 | 2015-05-19 10:24 | 19 | -11.8d |
| 21 |  | Develop main function and processes | 3.3d | 2015-05-19 10:24 | 2015-05-22 13:48 | 20 | -11.8d |
| 22 |  | Complete User Requirement Specification | 0d | 2015-05-22 13:48 | 2015-05-22 13:48 | 21 | -11.8d |
| 23 | 1.1.10 | **Screen Prototypes** | 2d | 2015-05-19 10:24 | 2015-05-21 10:24 |  | -10.5d |
| 24 |  | Create draft screen prototypes | 1d | 2015-05-19 10:24 | 2015-05-20 10:24 | 20 | -10.5d |
| 25 |  | Review screen prototypes | 0.5d | 2015-05-20 10:24 | 2015-05-20 15:24 | 24 | -10.5d |
| 26 |  | Update screen prototypes | 0.5d | 2015-05-20 15:24 | 2015-05-21 10:24 | 25 | -10.5d |
| 27 |  | Complete screen prototypes | 0d | 2015-05-21 10:24 | 2015-05-21 10:24 | 26 | -10.5d |
| 28 | 1.1.11 | **Project plan** | 4d | 2015-05-13 16:12 | 2015-05-19 16:12 |  | -9.8d |
| 29 |  | Develop project definition | 0.5d | 2015-05-13 16:12 | 2015-05-14 11:12 | 8 | -9.8d |
| 30 |  | Develop Work Breakdown Structure | 0.7d | 2015-05-14 11:12 | 2015-05-15 08:48 | 29 | -9.8d |
| 31 |  | Create Project Schedule | 0.7d | 2015-05-15 08:48 | 2015-05-15 15:24 | 30 | -9.8d |
| 32 |  | Create Configuration Management Plan version 1.0 | 0.3d | 2015-05-15 15:24 | 2015-05-18 08:48 | 31 | -9.1d |
| 33 |  | Create Project Plan (first version) | 1d | 2015-05-18 08:48 | 2015-05-19 13:48 | 32 | -9.1d |
| 34 |  | Review Project Plan (first version) | 0.3d | 2015-05-19 13:48 | 2015-05-19 16:12 | 33 | -9.1d |
| 35 |  | Complete Project Plan (final version) | 0d | 2015-05-19 16:12 | 2015-05-19 16:12 | 34 | -9.1d |
| 36 | 1.1.12 | **SRS/PP Review checklist** | 2.8d | 2015-05-13 16:12 | 2015-05-18 14:36 |  | -7.9d |
| 37 |  | Develop review checklist | 1.5d | 2015-05-13 16:12 | 2015-05-18 11:12 | 9 | -7.9d |
| 38 |  | Review review checklist | 0.1d | 2015-05-18 11:12 | 2015-05-18 12:00 | 37 | -7.9d |
| 39 |  | Update review checklist | 0.2d | 2015-05-18 13:00 | 2015-05-18 14:36 | 38 | -7.9d |
| 40 |  | Complete review checklist | 0d | 2015-05-18 14:36 | 2015-05-18 14:36 | 39 | -7.9d |
| 41 | 1.1.13 | **Progress Report 1** | 0.5d | 2015-05-19 14:36 | 2015-05-20 09:36 |  | -9.4d |
| 42 |  | Develop Progress Report 1 | 0.3d | 2015-05-19 14:36 | 2015-05-19 17:00 | 31 | -9.4d |
| 43 |  | Review Progress Report 1 | 0.1d | 2015-05-20 08:00 | 2015-05-20 08:48 | 42 | -9.4d |
| 44 |  | Update Progress Report 1 | 0.1d | 2015-05-20 08:48 | 2015-05-20 09:36 | 43 | -9.4d |
| 45 |  | Complete Progress Report 1 | 0d | 2015-05-20 09:36 | 2015-05-20 09:36 | 44 | -9.4d |
| 46 |  | Review Report no.1 (draft version) | 0.5d | 2015-05-22 13:48 | 2015-05-25 08:48 | 13, 15, 22, 27, 35, 40, 45 | -11.8d |
| 47 |  | Update Report no.1 (draft version) | 0.5d | 2015-05-25 08:48 | 2015-05-25 13:48 | 46 | -11.8d |
| 48 |  | Submit Report no.1 (first version) | 0d | 2015-05-25 13:48 | 2015-05-25 13:48 | 47 | -11.8d |
| 49 |  | Revise after got comments for Report no.1 | 0.1d | 2015-05-25 13:48 | 2015-05-25 14:36 | 48 | -11.8d |
| 50 |  | Submit Report no.1 (final version) | 0d | 2015-05-25 14:36 | 2015-05-25 14:36 | 49 | -11.8d |
| 51 | 1.2 | **Solution** | 12.6d | 2015-05-11 08:00 | 2015-05-27 13:48 |  | -11.6d |
| 52 | 1.2.1 | **Requirements** | 1.9d | 2015-05-25 14:36 | 2015-05-27 13:48 |  | -11.8d |
| 53 | 1.2.1.1 | **Software Requirements Specification** | 1.9d | 2015-05-25 14:36 | 2015-05-27 13:48 |  | -11.8d |
| 54 | 1.2.1.1.1 | **Functional Requirement Specification** | 1.9d | 2015-05-25 14:36 | 2015-05-27 13:48 |  | -11.8d |
| 55 | 1.2.1.1.1.1 | **Bus Driver Module** | 0.4d | 2015-05-25 14:36 | 2015-05-26 08:48 |  | -11.8d |
| 56 |  | Send bus info module | 0.4d | 2015-05-25 14:36 | 2015-05-26 08:48 | 50 | -11.8d |
| 57 | 1.2.1.1.1.2 | **Bus Rider Module** | 1.5d | 2015-05-26 08:48 | 2015-05-27 13:48 |  | -11.8d |
| 58 | 1.2.1.1.1.2.1 | **Account module** | 1.5d | 2015-05-26 08:48 | 2015-05-27 13:48 |  | -11.8d |
| 59 |  | Sign up module | 0.1d | 2015-05-26 08:48 | 2015-05-26 09:36 | 56 | -11.8d |
| 60 |  | Sign in/ sign out module | 0.1d | 2015-05-26 09:36 | 2015-05-26 10:24 | 59 | -11.8d |
| 61 |  | Edit profile module | 0.1d | 2015-05-26 10:24 | 2015-05-26 11:12 | 60 | -11.8d |
| 62 |  | Forgot password module | 0.1d | 2015-05-26 11:12 | 2015-05-26 12:00 | 61 | -11.8d |
| 63 |  | Sync module | 0.1d | 2015-05-26 13:00 | 2015-05-26 13:48 | 62 | -11.8d |
| 64 |  | Connect Facebook module | 0.1d | 2015-05-26 13:48 | 2015-05-26 14:36 | 63 | -11.8d |
| 65 |  | Show Favorite place module | 0.1d | 2015-05-26 14:36 | 2015-05-26 15:24 | 64 | -11.8d |
| 66 |  | Show Favorite bus module | 0.1d | 2015-05-27 10:24 | 2015-05-27 11:12 | 65 | -11.6d |
| 67 |  | Add/remove Favorite place module | 0.1d | 2015-05-27 11:12 | 2015-05-27 12:00 | 66 | -11.6d |
| 68 |  | About module | 0.1d | 2015-05-27 13:00 | 2015-05-27 13:48 | 67 | -11.6d |
| 69 | 1.2.1.1.1.2.2 | **Bus module** | 1d | 2015-05-26 08:48 | 2015-05-27 08:48 |  | -11.1d |
| 70 |  | Bus list module | 0.1d | 2015-05-26 08:48 | 2015-05-26 09:36 | 56 | -11.1d |

| ID | WBS | Task | Duration | Start | Finish | Predecessors | Total float |
| --- | --- | --- | --- | --- | --- | --- | --- |
| 71 |  | Bus info module | 0.1d | 2015-05-26 09:36 | 2015-05-26 10:24 | 70 | -11.1d |
| 72 |  | Bus route module | 0.1d | 2015-05-26 10:24 | 2015-05-26 11:12 | 71 | -11.1d |
| 73 |  | Bus nearest module | 0.1d | 2015-05-26 11:12 | 2015-05-26 12:00 | 72 | -11.1d |
| 74 |  | Bus map module | 0.1d | 2015-05-26 13:00 | 2015-05-26 13:48 | 73 | -11.1d |
| 75 |  | Set/unset favorite bus module | 0.1d | 2015-05-26 13:48 | 2015-05-26 14:36 | 74 | -11.1d |
| 76 |  | Remind module | 0.1d | 2015-05-26 14:36 | 2015-05-26 15:24 | 75 | -11.1d |
| 77 |  | Track module | 0.1d | 2015-05-26 15:24 | 2015-05-26 16:12 | 76 | -11.1d |
| 78 |  | Get notification module | 0.1d | 2015-05-26 16:12 | 2015-05-26 17:00 | 77 | -11.1d |
| 79 |  | Swap direction module | 0.1d | 2015-05-27 08:00 | 2015-05-27 08:48 | 78 | -11.1d |
| 80 | 1.2.1.1.1.2.3 | **Shigeki module** | 0.6d | 2015-05-26 08:48 | 2015-05-26 14:36 |  | -10.7d |
| 81 |  | Achievement module | 0.1d | 2015-05-26 08:48 | 2015-05-26 09:36 | 56 | -10.7d |
| 82 |  | Collection module | 0.1d | 2015-05-26 09:36 | 2015-05-26 10:24 | 81 | -10.7d |
| 83 |  | Mission module | 0.1d | 2015-05-26 10:24 | 2015-05-26 11:12 | 82 | -10.7d |
| 84 |  | Statistic module | 0.1d | 2015-05-26 11:12 | 2015-05-26 12:00 | 83 | -10.7d |
| 85 |  | Rank module | 0.1d | 2015-05-26 13:00 | 2015-05-26 13:48 | 84 | -10.7d |
| 86 |  | Scan QR code module | 0.1d | 2015-05-26 13:48 | 2015-05-26 14:36 | 85 | -10.7d |
| 87 | 1.2.1.1.1.2.4 | **Search module** | 0.4d | 2015-05-26 08:48 | 2015-05-26 12:00 |  | -11.5d |
| 88 |  | Search bus module | 0.1d | 2015-05-26 08:48 | 2015-05-26 09:36 | 56 | -11.5d |
| 89 |  | Search route module | 0.1d | 2015-05-26 09:36 | 2015-05-26 10:24 | 88 | -11.5d |
| 90 |  | Search Favorite bus module | 0.1d | 2015-05-26 10:24 | 2015-05-26 11:12 | 89 | -11.5d |
| 91 |  | Search Favorite place module | 0.1d | 2015-05-26 11:12 | 2015-05-26 12:00 | 90 | -11.5d |
| 92 |  | Setting module | 0.2d | 2015-05-26 13:00 | 2015-05-26 14:36 | 91 | -11.5d |
| 93 | 1.2.1.1.2 | **Non-functional Requirement Specification** | 0.8d | 2015-05-26 14:36 | 2015-05-27 12:00 |  | -11.5d |
| 94 |  | Develop User Interface Requirement | 0.6d | 2015-05-26 14:36 | 2015-05-27 10:24 | 92 | -11.5d |
| 95 |  | Develop Performance Requirement | 0.2d | 2015-05-27 10:24 | 2015-05-27 12:00 | 94 | -11.5d |
| 96 |  | Complete Software Requirement Specification | 0d | 2015-05-27 13:48 | 2015-05-27 13:48 | 68, 79, 86, 91, 92, 95 | -11.6d |
| 97 | 1.2.2 | **Design** | 1d | 2015-05-11 08:00 | 2015-05-11 17:00 |  | 0d |
| 98 | 1.2.2.1 | **Architecture design** | 1d | 2015-05-11 08:00 | 2015-05-11 17:00 |  | 0d |
| 99 |  | Define system structure and collect system features | 1d | 2015-05-11 08:00 | 2015-05-11 17:00 |  | 0d |
| 100 |  | Study & choose System Architecture | 0.5d | 2015-05-11 08:00 | 2015-05-11 12:00 |  | 0.5d |
| 101 |  | Complete System Architecture version 1.0 | 0d | 2015-05-11 08:00 | 2015-05-11 08:00 |  | 1d |
| 102 | 1.2.2.2 | **Detailed design** | 1d | 2015-05-11 08:00 | 2015-05-11 17:00 |  | 0d |
| 103 | 1.2.2.2.1 | **User Interface design** | 0.5d | 2015-05-11 08:00 | 2015-05-11 12:00 |  | 0.5d |
| 104 | 1.2.2.2.1.1 | **Bus Driver Module** | 0.4d | 2015-05-11 08:00 | 2015-05-11 11:12 |  | 0.6d |
| 105 |  | Send bus info module | 0.4d | 2015-05-11 08:00 | 2015-05-11 11:12 |  | 0.6d |
| 106 | 1.2.2.2.1.2 | **Bus Rider Module** | 0.5d | 2015-05-11 08:00 | 2015-05-11 12:00 |  | 0.5d |
| 107 | 1.2.2.2.1.2.1 | **Account module** | 0.3d | 2015-05-11 08:00 | 2015-05-11 10:24 |  | 0.7d |
| 108 |  | Sign up module | 0.1d | 2015-05-11 08:00 | 2015-05-11 08:48 |  | 0.9d |
| 109 |  | Sign in/ sign out module | 0.1d | 2015-05-11 08:00 | 2015-05-11 08:48 |  | 0.9d |
| 110 |  | Edit profile module | 0.2d | 2015-05-11 08:00 | 2015-05-11 09:36 |  | 0.8d |
| 111 |  | Forgot password module | 0.1d | 2015-05-11 08:00 | 2015-05-11 08:48 |  | 0.9d |
| 112 |  | Sync module | 0.3d | 2015-05-11 08:00 | 2015-05-11 10:24 |  | 0.7d |
| 113 |  | Connect Facebook module | 0.1d | 2015-05-11 08:00 | 2015-05-11 08:48 |  | 0.9d |
| 114 |  | Show Favorite place module | 0.1d | 2015-05-11 08:00 | 2015-05-11 08:48 |  | 0.9d |
| 115 |  | Show Favorite bus module | 0.1d | 2015-05-11 08:00 | 2015-05-11 08:48 |  | 0.9d |
| 116 |  | Add/remove Favorite place module | 0.1d | 2015-05-11 08:00 | 2015-05-11 08:48 |  | 0.9d |
| 117 |  | About module | 0.1d | 2015-05-11 08:00 | 2015-05-11 08:48 |  | 0.9d |
| 118 | 1.2.2.2.1.2.2 | **Bus module** | 0.3d | 2015-05-11 08:00 | 2015-05-11 10:24 |  | 0.7d |
| 119 |  | Bus list module | 0.1d | 2015-05-11 08:00 | 2015-05-11 08:48 |  | 0.9d |
| 120 |  | Bus info module | 0.3d | 2015-05-11 08:00 | 2015-05-11 10:24 |  | 0.7d |
| 121 |  | Bus route module | 0.2d | 2015-05-11 08:00 | 2015-05-11 09:36 |  | 0.8d |
| 122 |  | Bus nearest module | 0.3d | 2015-05-11 08:00 | 2015-05-11 10:24 |  | 0.7d |
| 123 |  | Bus map module | 0.2d | 2015-05-11 08:00 | 2015-05-11 09:36 |  | 0.8d |
| 124 |  | Set/unset favorite bus module | 0.1d | 2015-05-11 08:00 | 2015-05-11 08:48 |  | 0.9d |
| 125 |  | Remind module | 0.3d | 2015-05-11 08:00 | 2015-05-11 10:24 |  | 0.7d |
| 126 |  | Track module | 0.2d | 2015-05-11 08:00 | 2015-05-11 09:36 |  | 0.8d |
| 127 |  | Get notification module | 0.3d | 2015-05-11 08:00 | 2015-05-11 10:24 |  | 0.7d |
| 128 |  | Swap direction module | 0.1d | 2015-05-11 08:00 | 2015-05-11 08:48 |  | 0.9d |
| 129 | 1.2.2.2.1.2.3 | **Shigeki module** | 0.3d | 2015-05-11 08:00 | 2015-05-11 10:24 |  | 0.7d |
| 130 |  | Achievement module | 0.3d | 2015-05-11 08:00 | 2015-05-11 10:24 |  | 0.7d |
| 131 |  | Collection module | 0.3d | 2015-05-11 08:00 | 2015-05-11 10:24 |  | 0.7d |
| 132 |  | Mission module | 0.3d | 2015-05-11 08:00 | 2015-05-11 10:24 |  | 0.7d |
| 133 |  | Statistic module | 0.3d | 2015-05-11 08:00 | 2015-05-11 10:24 |  | 0.7d |
| 134 |  | Rank module | 0.1d | 2015-05-11 08:00 | 2015-05-11 08:48 |  | 0.9d |
| 135 |  | Scan QR code module | 0.3d | 2015-05-11 08:00 | 2015-05-11 10:24 |  | 0.7d |
| 136 | 1.2.2.2.1.2.4 | **Search module** | 0.3d | 2015-05-11 08:00 | 2015-05-11 10:24 |  | 0.7d |
| 137 |  | Search bus module | 0.1d | 2015-05-11 08:00 | 2015-05-11 08:48 |  | 0.9d |
| 138 |  | Search route module | 0.3d | 2015-05-11 08:00 | 2015-05-11 10:24 |  | 0.7d |
| 139 |  | Search Favorite bus module | 0.1d | 2015-05-11 08:00 | 2015-05-11 08:48 |  | 0.9d |
| 140 |  | Search Favorite place module | 0.1d | 2015-05-11 08:00 | 2015-05-11 08:48 |  | 0.9d |

| ID | WBS | Task | Duration | Start | Finish | Total float |
| --- | --- | --- | --- | --- | --- | --- |
| 141 |  | Setting module | 0.5d | 2015-05-11 08:00 | 2015-05-11 12:00 | 0.5d |
| 142 | 1.2.2.2.2 | **Database design** | 0.5d | 2015-05-11 08:00 | 2015-05-11 12:00 | 0.5d |
| 143 |  | Complete Database Design version 1.0 | 0.5d | 2015-05-11 08:00 | 2015-05-11 12:00 | 0.5d |
| 144 | 1.2.2.2.3 | **Class design** | 1d | 2015-05-11 08:00 | 2015-05-11 17:00 | 0d |
| 145 |  | Define class/component | 1d | 2015-05-11 08:00 | 2015-05-11 17:00 | 0d |
| 146 |  | Complete Class Design version 1.0 | 1d | 2015-05-11 08:00 | 2015-05-11 17:00 | 0d |
| 147 |  | Progress Report 2 | 1d | 2015-05-11 08:00 | 2015-05-11 17:00 | 0d |
| 148 |  | Q & A Management (update) | 1d | 2015-05-11 08:00 | 2015-05-11 17:00 | 0d |
| 149 | 1.2.5 | **Design Review checklist** | 1d | 2015-05-11 08:00 | 2015-05-11 17:00 | 0d |
| 150 |  | Develop review checklist | 1d | 2015-05-11 08:00 | 2015-05-11 17:00 | 0d |
| 151 |  | Review review checklist | 1d | 2015-05-11 08:00 | 2015-05-11 17:00 | 0d |
| 152 |  | Update review checklist | 1d | 2015-05-11 08:00 | 2015-05-11 17:00 | 0d |
| 153 |  | Complete review checklist | 1d | 2015-05-11 08:00 | 2015-05-11 17:00 | 0d |
| 154 | 1.2.6 | **Report no.2** | 1d | 2015-05-11 08:00 | 2015-05-11 17:00 | 0d |
| 155 |  | Develop Report no.2 (draft version) | 1d | 2015-05-11 08:00 | 2015-05-11 17:00 | 0d |
| 156 |  | Review Report no.2 (draft version) | 1d | 2015-05-11 08:00 | 2015-05-11 17:00 | 0d |
| 157 |  | Update Report no.2 (draft version) | 1d | 2015-05-11 08:00 | 2015-05-11 17:00 | 0d |
| 158 |  | Submit Report no.2 (first version) | 1d | 2015-05-11 08:00 | 2015-05-11 17:00 | 0d |
| 159 |  | Revise after got comments for Report no.2 | 1d | 2015-05-11 08:00 | 2015-05-11 17:00 | 0d |
| 160 |  | Submit Report no.2 (final version) | 1d | 2015-05-11 08:00 | 2015-05-11 17:00 | 0d |
| 161 | 1.2.7 | **Coding & Unit Testing** | 1d | 2015-05-11 08:00 | 2015-05-11 17:00 | 0d |
| 162 | 1.2.7.1 | **Bus Driver Module** | 1d | 2015-05-11 08:00 | 2015-05-11 17:00 | 0d |
| 163 |  | Send bus info module | 1d | 2015-05-11 08:00 | 2015-05-11 17:00 | 0d |
| 164 | 1.2.7.2 | **Bus Rider Module** | 1d | 2015-05-11 08:00 | 2015-05-11 17:00 | 0d |
| 165 | 1.2.7.2.1 | **Account module** | 1d | 2015-05-11 08:00 | 2015-05-11 17:00 | 0d |
| 166 |  | Sign up module | 1d | 2015-05-11 08:00 | 2015-05-11 17:00 | 0d |
| 167 |  | Sign in/ sign out module | 1d | 2015-05-11 08:00 | 2015-05-11 17:00 | 0d |
| 168 |  | Edit profile module | 1d | 2015-05-11 08:00 | 2015-05-11 17:00 | 0d |
| 169 |  | Forgot password module | 1d | 2015-05-11 08:00 | 2015-05-11 17:00 | 0d |
| 170 | 1.2.8 | **Testing** | 1d | 2015-05-11 08:00 | 2015-05-11 17:00 | 0d |
| 171 |  | Develop test plan | 1d | 2015-05-11 08:00 | 2015-05-11 17:00 | 0d |
| 172 |  | Review test plan | 1d | 2015-05-11 08:00 | 2015-05-11 17:00 | 0d |
| 173 |  | Update test plan | 1d | 2015-05-11 08:00 | 2015-05-11 17:00 | 0d |
| 174 | 1.3 | **Construction** | 1d | 2015-05-11 08:00 | 2015-05-11 17:00 | 0d |
| 175 | 1.3.1 | **Coding & Unit testing (continue)** | 1d | 2015-05-11 08:00 | 2015-05-11 17:00 | 0d |
| 176 | 1.3.1.1 | **Sync module** | 1d | 2015-05-11 08:00 | 2015-05-11 17:00 | 0d |
| 177 |  | Connect Facebook module | 1d | 2015-05-11 08:00 | 2015-05-11 17:00 | 0d |
| 178 |  | Show Favorite place module | 1d | 2015-05-11 08:00 | 2015-05-11 17:00 | 0d |
| 179 |  | Show Favorite bus module | 1d | 2015-05-11 08:00 | 2015-05-11 17:00 | 0d |
| 180 |  | Add/remove Favorite place module | 1d | 2015-05-11 08:00 | 2015-05-11 17:00 | 0d |
| 181 |  | About module | 1d | 2015-05-11 08:00 | 2015-05-11 17:00 | 0d |
| 182 | 1.3.1.2 | **Bus module** | 1d | 2015-05-11 08:00 | 2015-05-11 17:00 | 0d |
| 183 |  | Bus list module | 1d | 2015-05-11 08:00 | 2015-05-11 17:00 | 0d |
| 184 |  | Bus info module | 1d | 2015-05-11 08:00 | 2015-05-11 17:00 | 0d |
| 185 |  | Bus route module | 1d | 2015-05-11 08:00 | 2015-05-11 17:00 | 0d |
| 186 |  | Bus nearest module | 1d | 2015-05-11 08:00 | 2015-05-11 17:00 | 0d |
| 187 |  | Bus map module | 1d | 2015-05-11 08:00 | 2015-05-11 17:00 | 0d |
| 188 |  | Set/unset favorite bus module | 1d | 2015-05-11 08:00 | 2015-05-11 17:00 | 0d |
| 189 |  | Remind module | 1d | 2015-05-11 08:00 | 2015-05-11 17:00 | 0d |
| 190 |  | Track module | 1d | 2015-05-11 08:00 | 2015-05-11 17:00 | 0d |
| 191 |  | Get notification module | 1d | 2015-05-11 08:00 | 2015-05-11 17:00 | 0d |
| 192 |  | Swap direction module | 1d | 2015-05-11 08:00 | 2015-05-11 17:00 | 0d |
| 193 | 1.3.1.3 | **Shigeki module** | 1d | 2015-05-11 08:00 | 2015-05-11 17:00 | 0d |
| 194 |  | Achievement module | 1d | 2015-05-11 08:00 | 2015-05-11 17:00 | 0d |
| 195 |  | Collection module | 1d | 2015-05-11 08:00 | 2015-05-11 17:00 | 0d |
| 196 |  | Mission module | 1d | 2015-05-11 08:00 | 2015-05-11 17:00 | 0d |
| 197 |  | Statistic module | 1d | 2015-05-11 08:00 | 2015-05-11 17:00 | 0d |
| 198 |  | Rank module | 1d | 2015-05-11 08:00 | 2015-05-11 17:00 | 0d |
| 199 |  | Scan QR code module | 1d | 2015-05-11 08:00 | 2015-05-11 17:00 | 0d |
| 200 | 1.3.1.4 | **Search module** | 1d | 2015-05-11 08:00 | 2015-05-11 17:00 | 0d |
| 201 |  | Search bus module | 1d | 2015-05-11 08:00 | 2015-05-11 17:00 | 0d |
| 202 |  | Search route module | 1d | 2015-05-11 08:00 | 2015-05-11 17:00 | 0d |
| 203 |  | Search Favorite bus module | 1d | 2015-05-11 08:00 | 2015-05-11 17:00 | 0d |
| 204 |  | Complete coding | 1d | 2015-05-11 08:00 | 2015-05-11 17:00 | 0d |
| 205 | 1.3.2 | **Test review checklist** | 1d | 2015-05-11 08:00 | 2015-05-11 17:00 | 0d |
| 206 |  | Develop review checklist | 1d | 2015-05-11 08:00 | 2015-05-11 17:00 | 0d |
| 207 |  | Review review checklist | 1d | 2015-05-11 08:00 | 2015-05-11 17:00 | 0d |
| 208 |  | Update review checklist | 1d | 2015-05-11 08:00 | 2015-05-11 17:00 | 0d |
| 209 |  | Complete review checklist | 1d | 2015-05-11 08:00 | 2015-05-11 17:00 | 0d |
| 210 | 1.3.3 | **Testing** | 1d | 2015-05-11 08:00 | 2015-05-11 17:00 | 0d |

| ID | WBS | Task | Duration | Start | Finish | Total float |
| --- | --- | --- | --- | --- | --- | --- |
| 211 | 1.3.3.1 | **Unit test** | 1d | 2015-05-11 08:00 | 2015-05-11 17:00 | 0d |
| 212 |  | Develop unit test case | 1d | 2015-05-11 08:00 | 2015-05-11 17:00 | 0d |
| 213 |  | Review unit test case | 1d | 2015-05-11 08:00 | 2015-05-11 17:00 | 0d |
| 214 |  | Update unit test case | 1d | 2015-05-11 08:00 | 2015-05-11 17:00 | 0d |
| 215 | 1.3.3.2 | **Integration test** | 1d | 2015-05-11 08:00 | 2015-05-11 17:00 | 0d |
| 216 |  | Develop integration test case | 1d | 2015-05-11 08:00 | 2015-05-11 17:00 | 0d |
| 217 |  | Review integration test case | 1d | 2015-05-11 08:00 | 2015-05-11 17:00 | 0d |
| 218 |  | Update integration test case | 1d | 2015-05-11 08:00 | 2015-05-11 17:00 | 0d |
| 219 | 1.3.3.3 | **System test** | 1d | 2015-05-11 08:00 | 2015-05-11 17:00 | 0d |
| 220 |  | Develop system test case | 1d | 2015-05-11 08:00 | 2015-05-11 17:00 | 0d |
| 221 |  | Review system test case | 1d | 2015-05-11 08:00 | 2015-05-11 17:00 | 0d |
| 222 |  | Update system test case | 1d | 2015-05-11 08:00 | 2015-05-11 17:00 | 0d |
| 223 | 1.3.3.4 | **Execute test & fix bugs** | 1d | 2015-05-11 08:00 | 2015-05-11 17:00 | 0d |
| 224 | 1.3.3.4.1 | **Round 1** | 1d | 2015-05-11 08:00 | 2015-05-11 17:00 | 0d |
| 225 |  | Execute unit test | 1d | 2015-05-11 08:00 | 2015-05-11 17:00 | 0d |
| 226 |  | Fix bugs unit test | 1d | 2015-05-11 08:00 | 2015-05-11 17:00 | 0d |
| 227 |  | Execute integration test | 1d | 2015-05-11 08:00 | 2015-05-11 17:00 | 0d |
| 228 |  | Fix bugs integration test | 1d | 2015-05-11 08:00 | 2015-05-11 17:00 | 0d |
| 229 |  | Execute system test | 1d | 2015-05-11 08:00 | 2015-05-11 17:00 | 0d |
| 230 |  | Fix bugs system test | 1d | 2015-05-11 08:00 | 2015-05-11 17:00 | 0d |
| 231 | 1.3.3.4.2 | **Round 2** | 1d | 2015-05-11 08:00 | 2015-05-11 17:00 | 0d |
| 232 |  | Execute unit test | 1d | 2015-05-11 08:00 | 2015-05-11 17:00 | 0d |
| 233 |  | Fix bugs unit test | 1d | 2015-05-11 08:00 | 2015-05-11 17:00 | 0d |
| 234 |  | Execute integration test | 1d | 2015-05-11 08:00 | 2015-05-11 17:00 | 0d |
| 235 |  | Fix bugs integration test | 1d | 2015-05-11 08:00 | 2015-05-11 17:00 | 0d |
| 236 |  | Execute system test | 1d | 2015-05-11 08:00 | 2015-05-11 17:00 | 0d |
| 237 |  | Fix bugs system test | 1d | 2015-05-11 08:00 | 2015-05-11 17:00 | 0d |
| 238 |  | Execute acceptance test & collect data | 1d | 2015-05-11 08:00 | 2015-05-11 17:00 | 0d |
| 239 | 1.3.3.5 | **Test Report** | 1d | 2015-05-11 08:00 | 2015-05-11 17:00 | 0d |
| 240 |  | Develop test report | 1d | 2015-05-11 08:00 | 2015-05-11 17:00 | 0d |
| 241 |  | Review test report | 1d | 2015-05-11 08:00 | 2015-05-11 17:00 | 0d |
| 242 |  | Update test report | 1d | 2015-05-11 08:00 | 2015-05-11 17:00 | 0d |
| 243 |  | Complete test report | 1d | 2015-05-11 08:00 | 2015-05-11 17:00 | 0d |
| 244 |  | Q & A Management (update) | 1d | 2015-05-11 08:00 | 2015-05-11 17:00 | 0d |
| 245 |  | Progress report 3 | 1d | 2015-05-11 08:00 | 2015-05-11 17:00 | 0d |
| 246 | 1.3.6 | **Report no.3** | 1d | 2015-05-11 08:00 | 2015-05-11 17:00 | 0d |
| 247 |  | Develop Report no.3 (draft version) | 1d | 2015-05-11 08:00 | 2015-05-11 17:00 | 0d |
| 248 |  | Review Report no.3 (draft version) | 1d | 2015-05-11 08:00 | 2015-05-11 17:00 | 0d |
| 249 |  | Update Report no.3 (draft version) | 1d | 2015-05-11 08:00 | 2015-05-11 17:00 | 0d |
| 250 |  | Submit Report no.3 (first version) | 1d | 2015-05-11 08:00 | 2015-05-11 17:00 | 0d |
| 251 |  | Revise after got comments for Report no.3 | 1d | 2015-05-11 08:00 | 2015-05-11 17:00 | 0d |
| 252 |  | Submit Report no.3 (final version) | 1d | 2015-05-11 08:00 | 2015-05-11 17:00 | 0d |
| 253 | 1.3.7 | **Code Review checklist** | 1d | 2015-05-11 08:00 | 2015-05-11 17:00 | 0d |
| 254 |  | Develop review checklist | 1d | 2015-05-11 08:00 | 2015-05-11 17:00 | 0d |
| 255 |  | Review review checklist | 1d | 2015-05-11 08:00 | 2015-05-11 17:00 | 0d |
| 256 |  | Update review checklist | 1d | 2015-05-11 08:00 | 2015-05-11 17:00 | 0d |
| 257 |  | Complete review checklist | 1d | 2015-05-11 08:00 | 2015-05-11 17:00 | 0d |
| 258 |  | Progress report 4 | 1d | 2015-05-11 08:00 | 2015-05-11 17:00 | 0d |
| 259 | 1.3.9 | **Report no.4** | 1d | 2015-05-11 08:00 | 2015-05-11 17:00 | 0d |
| 260 |  | Develop Report no.4 (draft version) | 1d | 2015-05-11 08:00 | 2015-05-11 17:00 | 0d |
| 261 |  | Review Report no.4 (draft version) | 1d | 2015-05-11 08:00 | 2015-05-11 17:00 | 0d |
| 262 |  | Update Report no.4 (draft version) | 1d | 2015-05-11 08:00 | 2015-05-11 17:00 | 0d |
| 263 |  | Submit Report no.4 (first version) | 1d | 2015-05-11 08:00 | 2015-05-11 17:00 | 0d |
| 264 |  | Revise after got comments for Report no.4 | 1d | 2015-05-11 08:00 | 2015-05-11 17:00 | 0d |
| 265 |  | Submit Report no.4 (final version) | 1d | 2015-05-11 08:00 | 2015-05-11 17:00 | 0d |
| 266 | 1.3.10 | **Quality report** | 1d | 2015-05-11 08:00 | 2015-05-11 17:00 | 0d |
| 267 |  | Develop quality report | 1d | 2015-05-11 08:00 | 2015-05-11 17:00 | 0d |
| 268 |  | Review quality report | 1d | 2015-05-11 08:00 | 2015-05-11 17:00 | 0d |
| 269 |  | Update quality report | 1d | 2015-05-11 08:00 | 2015-05-11 17:00 | 0d |
| 270 |  | Complete quality report | 1d | 2015-05-11 08:00 | 2015-05-11 17:00 | 0d |
| 271 |  | Progress report 5 | 1d | 2015-05-11 08:00 | 2015-05-11 17:00 | 0d |
| 272 | 1.3.12 | **Report no.5** | 1d | 2015-05-11 08:00 | 2015-05-11 17:00 | 0d |
| 273 |  | Develop Report no.5 (draft version) | 1d | 2015-05-11 08:00 | 2015-05-11 17:00 | 0d |
| 274 |  | Review Report no.5 (draft version) | 1d | 2015-05-11 08:00 | 2015-05-11 17:00 | 0d |
| 275 |  | Update Report no.5 (draft version) | 1d | 2015-05-11 08:00 | 2015-05-11 17:00 | 0d |
| 276 |  | Submit Report no.5 (first version) | 1d | 2015-05-11 08:00 | 2015-05-11 17:00 | 0d |
| 277 |  | Revise after got comments for Report no.5 | 1d | 2015-05-11 08:00 | 2015-05-11 17:00 | 0d |
| 278 |  | Submit Report no.5 (final version) | 1d | 2015-05-11 08:00 | 2015-05-11 17:00 | 0d |
| 279 | 1.4 | **Termination** | 1d | 2015-05-11 08:00 | 2015-05-11 17:00 | 0d |
| 280 | 1.4.1 | **Report no.6** | 1d | 2015-05-11 08:00 | 2015-05-11 17:00 | 0d |

| ID | WBS | Task | Duration | Start | Finish | Total float |
| --- | --- | --- | --- | --- | --- | --- |
| 281 |  | Complete source code & final report | 1d | 2015-05-11 08:00 | 2015-05-11 17:00 | 0d |
| 282 |  | Develop installation guide | 1d | 2015-05-11 08:00 | 2015-05-11 17:00 | 0d |
| 283 |  | Develop user guideline | 1d | 2015-05-11 08:00 | 2015-05-11 17:00 | 0d |
| 284 |  | Complete Project Result Assessment | 1d | 2015-05-11 08:00 | 2015-05-11 17:00 | 0d |
| 285 |  | Conduct lessons learned | 1d | 2015-05-11 08:00 | 2015-05-11 17:00 | 0d |
| 286 |  | Complete Presentation slide | 1d | 2015-05-11 08:00 | 2015-05-11 17:00 | 0d |
| 287 |  | Review Report no.6 (draft version) | 1d | 2015-05-11 08:00 | 2015-05-11 17:00 | 0d |
| 288 |  | Update Report no.6 (draft version) | 1d | 2015-05-11 08:00 | 2015-05-11 17:00 | 0d |
| 289 |  | Submit Report no.6 (first version) | 1d | 2015-05-11 08:00 | 2015-05-11 17:00 | 0d |
| 290 |  | Revise after got comments for Report no.6 | 1d | 2015-05-11 08:00 | 2015-05-11 17:00 | 0d |
| 291 |  | Submit Report no.6 (final version) | 1d | 2015-05-11 08:00 | 2015-05-11 17:00 | 0d |
| 292 |  | Submit Final report & CD source code | 1d | 2015-05-11 08:00 | 2015-05-11 17:00 | 0d |
| 293 | 1.4.2 | **Pre-closing** | 1d | 2015-05-11 08:00 | 2015-05-11 17:00 | 0d |
| 294 |  | Training presentation | 1d | 2015-05-11 08:00 | 2015-05-11 17:00 | 0d |
| 295 | 1.4.3 | **Closing** | 1d | 2015-05-11 08:00 | 2015-05-11 17:00 | 0d |
| 296 |  | Present Capstone Project & Completed | 1d | 2015-05-11 08:00 | 2015-05-11 17:00 | 0d |

## Version 2 (saved 2015-05-20, file BL_Project_Schedule_v0.9_EN.mpp)

Note of the change: add progress report

Last finish 2015-05-27 → 2015-06-10 (+14d).

Added:

| ID | Task | Duration | Start | Finish | Predecessors | Resources |
| --- | --- | --- | --- | --- | --- | --- |
| 16 | **SRS/PP/Concept design Review checklist** | 2.8d | 2015-05-14 16:12 | 2015-05-19 14:36 |  |  |
| 27 | Review User Requirement Specification with checklist | 0.3d | 2015-05-19 14:36 | 2015-05-19 17:00 | 26, 20 | NamNT; MaiTTT; PhuongBB |
| 28 | Update User Requirement Specification | 0.3d | 2015-05-19 17:00 | 2015-05-21 08:48 | 27 | CuongNLT; MaiTTT; PhuongBB; AnhTT; NamNT |
| 98 | Review Software Requirement Specification with checklist | 1d | 2015-05-25 11:12 | 2015-05-26 11:12 | 70, 81, 88, 93, 94, 97, 64 | MaiTTT; PhuongBB |
| 99 | Update Software Requirement Specification | 0.5d | 2015-05-26 11:12 | 2015-05-26 16:12 | 98 | NamNT; CuongNLT; MaiTTT; PhuongBB; AnhTT |
| 110 | Review Architecture Design with checklist | 0.3d | 2015-05-29 10:24 | 2015-05-29 13:48 | 106, 109 | MaiTTT; PhuongBB |
| 111 | Update Architecture Design | 0.3d | 2015-05-29 13:48 | 2015-05-29 16:12 | 110 | AnhTT; NamNT; CuongNLT |
| 153 | Review Detailed Design with checklist | 1d | 2015-06-04 16:12 | 2015-06-08 09:36 | 106, 116, 122, 128, 139, 146, 152 | MaiTTT; PhuongBB |
| 154 | Update Detailed Design | 1.4d | 2015-06-08 09:36 | 2015-06-09 17:00 | 153 | NamNT; CuongNLT; MaiTTT; PhuongBB; AnhTT |
| 155 | Complete Detailed Design version 1.0 | 0d | 2015-06-01 17:00 | 2015-06-01 17:00 | 152 | NamNT |
| 157 | Create Databse Design draft version | 1d | 2015-05-29 16:12 | 2015-06-01 16:12 | 112 | AnhTT |
| 158 | Review Database Design with checklist | 0.5d | 2015-06-01 16:12 | 2015-06-02 11:12 | 105, 157 | MaiTTT; PhuongBB |
| 159 | Update Database Design | 0.3d | 2015-06-02 11:12 | 2015-06-02 14:36 | 158 | AnhTT |
| 163 | Review Class Design with checklist | 0.5d | 2015-06-04 14:36 | 2015-06-05 09:36 | 162 | MaiTTT; PhuongBB |
| 164 | Update Class Design | 0.3d | 2015-06-05 09:36 | 2015-06-05 12:00 | 163 | AnhTT |
| 167 | Develop Progress Report 2 | 0.3d | 2015-06-05 13:00 | 2015-06-05 15:24 | 155, 160, 165 | NamNT |
| 168 | Review Progress Report 2 | 0.1d | 2015-06-05 15:24 | 2015-06-05 16:12 | 167 | MaiTTT |
| 169 | Update Progress Report 2 | 0.1d | 2015-06-05 16:12 | 2015-06-05 17:00 | 168 | NamNT |
| 170 | Complete Progress Report 2 | 0d | 2015-06-05 17:00 | 2015-06-05 17:00 | 169 | NamNT |
| 189 | **Test plan** | 17.8d | 2015-05-11 08:00 | 2015-06-03 15:24 |  |  |
| 193 | Complete test plan | 0d | 2015-05-11 08:00 | 2015-05-11 08:00 |  | MaiTTT |
| 195 | **Test plan review checklist** | 18d | 2015-05-11 08:00 | 2015-06-03 17:00 |  |  |
| 196 | Develop test plan review checklist | 0.3d | 2015-05-13 11:12 | 2015-05-13 14:36 |  | PhuongBB |
| 197 | Review test plan review checklist | 0.2d | 2015-06-03 15:24 | 2015-06-03 17:00 |  | MaiTTT |
| 198 | Update test plan review checklist | 0.1d | 2015-05-19 16:12 | 2015-05-19 17:00 |  | PhuongBB |
| 199 | Complete test plan review checklist | 0d | 2015-05-11 08:00 | 2015-05-11 08:00 |  | PhuongBB |
| 200 | **Test case review checklist** | 18.2d | 2015-05-11 08:00 | 2015-06-04 09:36 |  |  |
| 201 | Develop test case review checklist | 0.5d | 2015-05-25 08:00 | 2015-05-28 17:00 |  | MaiTTT |
| 202 | Review test case review checklist | 0.3d | 2015-05-13 14:36 | 2015-05-20 08:48 |  | PhuongBB |
| 203 | Update test case review checklist | 0.2d | 2015-06-04 08:00 | 2015-06-04 09:36 |  | MaiTTT |
| 204 | Complete test case review checklist | 0d | 2015-05-11 08:00 | 2015-05-11 08:00 |  | MaiTTT |
| 206 | **Test case** | 1d? | 2015-05-11 08:00 | 2015-05-11 17:00 |  |  |
| 208 | **Develop unit test case** | 1d? | 2015-05-11 08:00 | 2015-05-11 17:00 |  |  |
| 209 | Bus driver module | 1d | 2015-05-11 08:00 | 2015-05-11 17:00 |  |  |
| 210 | Account module | 1d? | 2015-05-11 08:00 | 2015-05-11 17:00 |  |  |
| 211 | Sync module | 1d? | 2015-05-11 08:00 | 2015-05-11 17:00 |  |  |
| 212 | Bus module | 1d | 2015-05-11 08:00 | 2015-05-11 17:00 |  |  |
| 213 | Shigeki module | 1d | 2015-05-11 08:00 | 2015-05-11 17:00 |  |  |
| 214 | Search module | 1d | 2015-05-11 08:00 | 2015-05-11 17:00 |  |  |
| 215 | Setting module | 1d? | 2015-05-11 08:00 | 2015-05-11 17:00 |  |  |
| 218 | Complete unit test case | 0d | 2015-05-11 08:00 | 2015-05-11 08:00 |  |  |
| 223 | Complete integration test case | 0d | 2015-05-11 08:00 | 2015-05-11 08:00 |  |  |
| 228 | Complete system test case | 0d | 2015-05-11 08:00 | 2015-05-11 08:00 |  |  |
| 245 | **Bus Rider Module** | 1d | 2015-05-11 08:00 | 2015-05-11 17:00 |  |  |
| 275 | Q & A Management (update) | 1d | 2015-05-11 08:00 | 2015-05-11 17:00 |  |  |
| 288 | Bus driver module | 1d | 2015-05-11 08:00 | 2015-05-11 17:00 |  |  |
| 289 | Account module | 1d? | 2015-05-11 08:00 | 2015-05-11 17:00 |  |  |
| 290 | Sync module | 1d? | 2015-05-11 08:00 | 2015-05-11 17:00 |  |  |
| 291 | Bus module | 1d | 2015-05-11 08:00 | 2015-05-11 17:00 |  |  |
| 292 | Shigeki module | 1d | 2015-05-11 08:00 | 2015-05-11 17:00 |  |  |
| 293 | Search module | 1d | 2015-05-11 08:00 | 2015-05-11 17:00 |  |  |
| 294 | Setting module | 1d? | 2015-05-11 08:00 | 2015-05-11 17:00 |  |  |
| 302 | Bus driver module | 1d | 2015-05-11 08:00 | 2015-05-11 17:00 |  |  |
| 303 | Account module | 1d? | 2015-05-11 08:00 | 2015-05-11 17:00 |  |  |
| 304 | Sync module | 1d? | 2015-05-11 08:00 | 2015-05-11 17:00 |  |  |
| 305 | Bus module | 1d | 2015-05-11 08:00 | 2015-05-11 17:00 |  |  |
| 306 | Shigeki module | 1d | 2015-05-11 08:00 | 2015-05-11 17:00 |  |  |
| 307 | Search module | 1d | 2015-05-11 08:00 | 2015-05-11 17:00 |  |  |
| 308 | Setting module | 1d? | 2015-05-11 08:00 | 2015-05-11 17:00 |  |  |
| 315 | Complete execute test | 1d? | 2015-05-11 08:00 | 2015-05-11 17:00 |  |  |

Removed: 36 SRS/PP Review checklist; 212 Develop unit test case; 254 Develop review checklist; 255 Review review checklist; 256 Update review checklist

Changed:

| ID | Task | Start | Finish | Duration | Total float | Predecessors | Other |
| --- | --- | --- | --- | --- | --- | --- | --- |
| 2 | **Initiation** |  | 2015-05-25 14:36 → 2015-05-21 12:00 (-4d) | 10.7d → 8.5d | -11.8d → -21.5d |  |  |
| 10 | **Technologies** |  | 2015-05-21 10:24 → 2015-05-20 16:12 (-1d) | 5.4d → 5d | -10.5d → -21.3d |  |  |
| 11 | Research development technologies |  | 2015-05-15 15:24 → 2015-05-15 08:48 | 1.9d → 1.2d | -10.5d → -21.3d |  |  |
| 12 | Install and configure Eclipse IDE and Android SDK | 2015-05-15 15:24 → 2015-05-15 08:48 | 2015-05-18 10:24 → 2015-05-15 13:48 (-3d) |  | -10.5d → -21.3d |  |  |
| 13 | Training Java, Android SDK & Eclipse IDE | 2015-05-18 10:24 → 2015-05-15 13:48 (-3d) | 2015-05-21 10:24 → 2015-05-20 16:12 (-1d) | 3d → 2d | -10.5d → -21.3d |  |  |
| 15 | Study web service using .NET & SQL Server |  | 2015-05-19 12:00 → 2015-05-19 14:36 |  | -8.7d → -20.1d |  |  |
| 17 | Develop review checklist | 2015-05-13 16:12 → 2015-05-14 16:12 (+1d) | 2015-05-18 11:12 → 2015-05-18 12:00 |  | -7.9d → -21.5d |  |  |
| 18 | Review review checklist | 2015-05-18 11:12 → 2015-05-18 13:00 | 2015-05-18 12:00 → 2015-05-19 12:00 (+1d) | 0.1d → 0.2d | -7.9d → -21.5d |  |  |
| 19 | Update review checklist | 2015-05-18 13:00 → 2015-05-19 13:00 (+1d) | 2015-05-18 14:36 → 2015-05-19 14:36 (+1d) |  | -7.9d → -21.5d |  |  |
| 20 | Complete review checklist | 2015-05-18 14:36 → 2015-05-19 14:36 (+1d) | 2015-05-18 14:36 → 2015-05-19 14:36 (+1d) |  | -7.9d → -21.5d |  |  |
| 21 | **Requirements** |  | 2015-05-22 13:48 → 2015-05-21 08:48 (-1d) | 6.7d → 5.2d | -11.8d → -21.5d |  |  |
| 22 | **User Requirements Specification** |  | 2015-05-22 13:48 → 2015-05-19 14:36 (-3d) | 6.7d → 3.8d | -11.8d → -21.5d |  |  |
| 24 | Create draft requirements |  | 2015-05-18 15:24 → 2015-05-15 16:12 (-3d) | 1.9d → 1d | -11.8d → -21.5d |  |  |
| 25 | Complete draft requirements | 2015-05-18 15:24 → 2015-05-15 16:12 (-3d) | 2015-05-19 10:24 → 2015-05-18 11:12 (-1d) |  | -11.8d → -21.5d |  |  |
| 26 | Develop main function and processes | 2015-05-19 10:24 → 2015-05-18 11:12 (-1d) | 2015-05-22 13:48 → 2015-05-19 14:36 (-3d) | 3.3d → 1.3d | -11.8d → -21.5d |  | resources CuongNLT; MaiTTT; PhuongBB; AnhTT; NamNT → CuongNLT; MaiTTT; PhuongBB; AnhTT |
| 29 | Complete User Requirement Specification | 2015-05-22 13:48 → 2015-05-21 08:48 (-1d) | 2015-05-22 13:48 → 2015-05-21 08:48 (-1d) |  | -11.8d → -21.5d | 26 → 28 |  |
| 30 | **Concept design** | 2015-05-19 10:24 → 2015-05-18 11:12 (-1d) | 2015-05-21 10:24 → 2015-05-20 14:36 (-1d) | 2d → 2.3d | -10.5d → -21.1d |  | was named Screen Prototypes |
| 31 | Create draft concept design | 2015-05-19 10:24 → 2015-05-18 11:12 (-1d) | 2015-05-20 10:24 → 2015-05-19 11:12 (-1d) |  | -10.5d → -20.8d |  | was named Create draft screen prototypes |
| 32 | Review concept design with checklist | 2015-05-20 10:24 → 2015-05-19 14:36 (-1d) | 2015-05-20 15:24 → 2015-05-20 09:36 |  | -10.5d → -21.1d | 31 → 31, 20 | was named Review screen prototypes |
| 33 | Update concept design | 2015-05-20 15:24 → 2015-05-20 09:36 | 2015-05-21 10:24 → 2015-05-20 14:36 (-1d) |  | -10.5d → -21.1d |  | was named Update screen prototypes |
| 34 | Complete concept design | 2015-05-21 10:24 → 2015-05-20 14:36 (-1d) | 2015-05-21 10:24 → 2015-05-20 14:36 (-1d) |  | -10.5d → -21.1d |  | was named Complete screen prototypes |
| 35 | **Project plan** |  | 2015-05-19 16:12 → 2015-05-20 13:48 (+1d) | 4d → 4.7d | -9.8d → -21d |  |  |
| 39 | Create Configuration Management Plan version 1.0 |  | 2015-05-18 08:48 → 2015-05-18 13:48 |  | -9.1d → -21d |  |  |
| 40 | Create Project Plan (first version) | 2015-05-18 08:48 → 2015-05-18 13:48 |  |  | -9.1d → -21d |  |  |
| 41 | Review Project Plan (first version) | 2015-05-19 13:48 → 2015-05-20 10:24 (+1d) | 2015-05-19 16:12 → 2015-05-20 13:48 (+1d) |  | -9.1d → -21d |  |  |
| 42 | Complete Project Plan (final version) | 2015-05-19 16:12 → 2015-05-20 13:48 (+1d) | 2015-05-19 16:12 → 2015-05-20 13:48 (+1d) |  | -9.1d → -21d |  |  |
| 43 | **Progress Report 1** | 2015-05-19 14:36 → 2015-05-19 13:48 | 2015-05-20 09:36 → 2015-05-20 11:12 | 0.5d → 0.8d | -9.4d → -20.9d |  |  |
| 44 | Develop Progress Report 1 | 2015-05-19 14:36 → 2015-05-19 13:48 | 2015-05-19 17:00 → 2015-05-19 16:12 |  | -9.4d → -20.9d |  |  |
| 45 | Review Progress Report 1 | 2015-05-20 08:00 → 2015-05-20 09:36 | 2015-05-20 08:48 → 2015-05-20 10:24 |  | -9.4d → -20.8d |  |  |
| 46 | Update Progress Report 1 | 2015-05-20 08:48 → 2015-05-20 10:24 | 2015-05-20 09:36 → 2015-05-20 11:12 |  | -9.4d → -20.8d |  |  |
| 47 | Complete Progress Report 1 | 2015-05-20 09:36 → 2015-05-20 11:12 | 2015-05-20 09:36 → 2015-05-20 11:12 |  | -9.4d → -20.8d |  |  |
| 48 | Review Report no.1 (draft version) | 2015-05-22 13:48 → 2015-05-21 08:48 (-1d) | 2015-05-25 08:48 → 2015-05-21 10:24 (-4d) | 0.5d → 0.2d | -11.8d → -21.5d |  | resources CuongNLT; NamNT → CuongNLT; MaiTTT |
| 49 | Update Report no.1 (draft version) | 2015-05-25 08:48 → 2015-05-21 10:24 (-4d) | 2015-05-25 13:48 → 2015-05-21 11:12 (-4d) | 0.5d → 0.1d | -11.8d → -21.5d |  |  |
| 50 | Submit Report no.1 (first version) | 2015-05-25 13:48 → 2015-05-21 11:12 (-4d) | 2015-05-25 13:48 → 2015-05-21 11:12 (-4d) |  | -11.8d → -21.5d |  |  |
| 51 | Revise after got comments for Report no.1 | 2015-05-25 13:48 → 2015-05-21 11:12 (-4d) | 2015-05-25 14:36 → 2015-05-21 12:00 (-4d) |  | -11.8d → -21.5d |  |  |
| 52 | Submit Report no.1 (final version) | 2015-05-25 14:36 → 2015-05-21 12:00 (-4d) | 2015-05-25 14:36 → 2015-05-21 12:00 (-4d) |  | -11.8d → -21.5d |  |  |
| 53 | **Solution** |  | 2015-05-27 13:48 → 2015-06-10 12:00 (+14d) | 12.6d → 22.5d? | -11.6d → -21.5d |  |  |
| 54 | **Requirements** | 2015-05-25 14:36 → 2015-05-21 13:00 (-4d) | 2015-05-27 13:48 → 2015-05-26 16:12 (-1d) | 1.9d → 3.4d | -11.8d → -21.5d |  |  |
| 55 | **Software Requirements Specification** | 2015-05-25 14:36 → 2015-05-21 13:00 (-4d) | 2015-05-27 13:48 → 2015-05-26 16:12 (-1d) | 1.9d → 3.4d | -11.8d → -21.5d |  |  |
| 56 | **Functional Requirement Specification** | 2015-05-25 14:36 → 2015-05-21 13:00 (-4d) | 2015-05-27 13:48 → 2015-05-22 16:12 (-5d) | 1.9d → 1.4d | -11.8d → -21.5d |  |  |
| 57 | **Bus Driver Module** | 2015-05-25 14:36 → 2015-05-21 13:00 (-4d) | 2015-05-26 08:48 → 2015-05-21 16:12 (-5d) |  | -11.8d → -21.5d |  |  |
| 58 | Send bus info module | 2015-05-25 14:36 → 2015-05-21 13:00 (-4d) | 2015-05-26 08:48 → 2015-05-21 16:12 (-5d) |  | -11.8d → -21.5d |  | resources NamNT → AnhTT |
| 59 | **Bus Rider Module** | 2015-05-26 08:48 → 2015-05-21 16:12 (-5d) | 2015-05-27 13:48 → 2015-05-22 16:12 (-5d) | 1.5d → 1d | -11.8d → -21.5d |  |  |
| 60 | **Account module** | 2015-05-26 08:48 → 2015-05-21 16:12 (-5d) | 2015-05-27 13:48 → 2015-05-22 10:24 (-5d) | 1.5d → 0.4d | -11.8d → -20.4d |  |  |
| 61 | Sign up module | 2015-05-26 08:48 → 2015-05-21 16:12 (-5d) | 2015-05-26 09:36 → 2015-05-21 17:00 (-5d) |  | -11.8d → -20.4d |  |  |
| 62 | Sign in/ sign out module | 2015-05-26 09:36 → 2015-05-22 08:00 (-4d) | 2015-05-26 10:24 → 2015-05-22 08:48 (-4d) |  | -11.8d → -20.4d |  |  |
| 63 | Edit profile module | 2015-05-26 10:24 → 2015-05-22 08:48 (-4d) | 2015-05-26 11:12 → 2015-05-22 09:36 (-4d) |  | -11.8d → -20.4d |  |  |
| 64 | Forgot password module | 2015-05-26 11:12 → 2015-05-22 09:36 (-4d) | 2015-05-26 12:00 → 2015-05-22 10:24 (-4d) |  | -11.8d → -20.4d |  |  |
| 65 | **Sync module** | 2015-05-26 13:00 → 2015-05-21 16:12 (-5d) | 2015-05-26 13:48 → 2015-05-22 11:12 (-4d) | 0.1d → 0.5d | -11.8d → -20.5d | 64 → none | resources CuongNLT → none |
| 66 | Connect Facebook module | 2015-05-26 13:48 → 2015-05-21 16:12 (-5d) | 2015-05-26 14:36 → 2015-05-21 17:00 (-5d) |  | -11.8d → -20.5d | 65 → 58 | resources CuongNLT → AnhTT |
| 67 | Show Favorite place module | 2015-05-26 14:36 → 2015-05-22 08:00 (-4d) | 2015-05-26 15:24 → 2015-05-22 08:48 (-4d) |  | -11.8d → -20.5d |  | resources CuongNLT → AnhTT |
| 68 | Show Favorite bus module | 2015-05-27 10:24 → 2015-05-22 08:48 (-5d) | 2015-05-27 11:12 → 2015-05-22 09:36 (-5d) |  | -11.6d → -20.5d |  | resources CuongNLT → AnhTT |
| 69 | Add/remove Favorite place module | 2015-05-27 11:12 → 2015-05-22 09:36 (-5d) | 2015-05-27 12:00 → 2015-05-22 10:24 (-5d) |  | -11.6d → -20.5d |  | resources CuongNLT → AnhTT |
| 70 | About module | 2015-05-27 13:00 → 2015-05-22 10:24 (-5d) | 2015-05-27 13:48 → 2015-05-22 11:12 (-5d) |  | -11.6d → -20.5d |  | resources CuongNLT → AnhTT |
| 71 | **Bus module** | 2015-05-26 08:48 → 2015-05-21 16:12 (-5d) | 2015-05-27 08:48 → 2015-05-22 16:12 (-5d) |  | -11.1d → -21d |  |  |
| 72 | Bus list module | 2015-05-26 08:48 → 2015-05-21 16:12 (-5d) | 2015-05-26 09:36 → 2015-05-21 17:00 (-5d) |  | -11.1d → -21d |  |  |
| 73 | Bus info module | 2015-05-26 09:36 → 2015-05-22 08:00 (-4d) | 2015-05-26 10:24 → 2015-05-22 08:48 (-4d) |  | -11.1d → -21d |  |  |
| 74 | Bus route module | 2015-05-26 10:24 → 2015-05-22 08:48 (-4d) | 2015-05-26 11:12 → 2015-05-22 09:36 (-4d) |  | -11.1d → -21d |  |  |
| 75 | Bus nearest module | 2015-05-26 11:12 → 2015-05-22 09:36 (-4d) | 2015-05-26 12:00 → 2015-05-22 10:24 (-4d) |  | -11.1d → -21d |  |  |
| 76 | Bus map module | 2015-05-26 13:00 → 2015-05-22 10:24 (-4d) | 2015-05-26 13:48 → 2015-05-22 11:12 (-4d) |  | -11.1d → -21d |  |  |
| 77 | Set/unset favorite bus module | 2015-05-26 13:48 → 2015-05-22 11:12 (-4d) | 2015-05-26 14:36 → 2015-05-22 12:00 (-4d) |  | -11.1d → -21d |  |  |
| 78 | Remind module | 2015-05-26 14:36 → 2015-05-22 13:00 (-4d) | 2015-05-26 15:24 → 2015-05-22 13:48 (-4d) |  | -11.1d → -21d |  |  |
| 79 | Track module | 2015-05-26 15:24 → 2015-05-22 13:48 (-4d) | 2015-05-26 16:12 → 2015-05-22 14:36 (-4d) |  | -11.1d → -21d |  |  |
| 80 | Get notification module | 2015-05-26 16:12 → 2015-05-22 14:36 (-4d) | 2015-05-26 17:00 → 2015-05-22 15:24 (-4d) |  | -11.1d → -21d |  |  |
| 81 | Swap direction module | 2015-05-27 08:00 → 2015-05-22 15:24 (-5d) | 2015-05-27 08:48 → 2015-05-22 16:12 (-5d) |  | -11.1d → -21d |  |  |
| 82 | **Shigeki module** | 2015-05-26 08:48 → 2015-05-21 16:12 (-5d) | 2015-05-26 14:36 → 2015-05-22 12:00 (-4d) |  | -10.7d → -20.6d |  |  |
| 83 | Achievement module | 2015-05-26 08:48 → 2015-05-21 16:12 (-5d) | 2015-05-26 09:36 → 2015-05-21 17:00 (-5d) |  | -10.7d → -20.6d |  |  |
| 84 | Collection module | 2015-05-26 09:36 → 2015-05-22 08:00 (-4d) | 2015-05-26 10:24 → 2015-05-22 08:48 (-4d) |  | -10.7d → -20.6d |  |  |
| 85 | Mission module | 2015-05-26 10:24 → 2015-05-22 08:48 (-4d) | 2015-05-26 11:12 → 2015-05-22 09:36 (-4d) |  | -10.7d → -20.6d |  |  |
| 86 | Statistic module | 2015-05-26 11:12 → 2015-05-22 09:36 (-4d) | 2015-05-26 12:00 → 2015-05-22 10:24 (-4d) |  | -10.7d → -20.6d |  |  |

| ID | Task | Start | Finish | Duration | Total float | Predecessors | Other |
| --- | --- | --- | --- | --- | --- | --- | --- |
| 87 | Rank module | 2015-05-26 13:00 → 2015-05-22 10:24 (-4d) | 2015-05-26 13:48 → 2015-05-22 11:12 (-4d) |  | -10.7d → -20.6d |  |  |
| 88 | Scan QR code module | 2015-05-26 13:48 → 2015-05-22 11:12 (-4d) | 2015-05-26 14:36 → 2015-05-22 12:00 (-4d) |  | -10.7d → -20.6d |  |  |
| 89 | **Search module** | 2015-05-26 08:48 → 2015-05-21 16:12 (-5d) | 2015-05-26 12:00 → 2015-05-22 10:24 (-4d) |  | -11.5d → -21.5d |  |  |
| 90 | Search bus module | 2015-05-26 08:48 → 2015-05-21 16:12 (-5d) | 2015-05-26 09:36 → 2015-05-21 17:00 (-5d) |  | -11.5d → -21.5d |  |  |
| 91 | Search route module | 2015-05-26 09:36 → 2015-05-22 08:00 (-4d) | 2015-05-26 10:24 → 2015-05-22 08:48 (-4d) |  | -11.5d → -21.5d |  |  |
| 92 | Search Favorite bus module | 2015-05-26 10:24 → 2015-05-22 08:48 (-4d) | 2015-05-26 11:12 → 2015-05-22 09:36 (-4d) |  | -11.5d → -21.5d |  |  |
| 93 | Search Favorite place module | 2015-05-26 11:12 → 2015-05-22 09:36 (-4d) | 2015-05-26 12:00 → 2015-05-22 10:24 (-4d) |  | -11.5d → -21.5d |  |  |
| 94 | Setting module | 2015-05-26 13:00 → 2015-05-22 10:24 (-4d) | 2015-05-26 14:36 → 2015-05-22 12:00 (-4d) |  | -11.5d → -21.5d |  |  |
| 95 | **Non-functional Requirement Specification** | 2015-05-26 14:36 → 2015-05-22 13:00 (-4d) | 2015-05-27 12:00 → 2015-05-25 11:12 (-2d) | 0.8d → 0.9d | -11.5d → -21.5d |  |  |
| 96 | Develop User Interface Requirement | 2015-05-26 14:36 → 2015-05-22 13:00 (-4d) | 2015-05-27 10:24 → 2015-05-22 17:00 (-5d) | 0.6d → 0.5d | -11.5d → -21.5d |  | resources NamNT; CuongNLT → NamNT; CuongNLT; AnhTT |
| 97 | Develop Performance Requirement | 2015-05-27 10:24 → 2015-05-25 08:00 (-2d) | 2015-05-27 12:00 → 2015-05-25 11:12 (-2d) | 0.2d → 0.4d | -11.5d → -21.5d |  | resources CuongNLT → CuongNLT; NamNT; AnhTT |
| 100 | Complete Software Requirement Specification | 2015-05-27 13:48 → 2015-05-26 16:12 (-1d) | 2015-05-27 13:48 → 2015-05-26 16:12 (-1d) |  | -11.6d → -21.5d | 70, 81, 88, 93, 94, 97 → 99 |  |
| 101 | **Design** | 2015-05-11 08:00 → 2015-05-26 16:12 (+15d) | 2015-05-11 17:00 → 2015-06-09 17:00 (+29d) | 1d → 10.1d | 0d → -21.5d |  |  |
| 102 | **Design Review checklist** | 2015-05-11 08:00 → 2015-05-26 16:12 (+15d) | 2015-05-11 17:00 → 2015-05-29 10:24 (+18d) | 1d → 2.4d | 0d → -21.5d |  |  |
| 103 | Develop review checklist | 2015-05-11 08:00 → 2015-05-26 16:12 (+15d) | 2015-05-11 17:00 → 2015-05-28 17:00 (+17d) | 1d → 2.1d | 0d → -21.5d | none → 100 | resources none → MaiTTT; PhuongBB |
| 104 | Review review checklist | 2015-05-11 08:00 → 2015-05-29 08:00 (+18d) | 2015-05-11 17:00 → 2015-05-29 08:48 (+18d) | 1d → 0.1d | 0d → -21.5d | none → 103 | resources none → MaiTTT; PhuongBB |
| 105 | Update review checklist | 2015-05-11 08:00 → 2015-05-29 08:48 (+18d) | 2015-05-11 17:00 → 2015-05-29 10:24 (+18d) | 1d → 0.2d | 0d → -21.5d | none → 104 | resources none → MaiTTT; PhuongBB |
| 106 | Complete review checklist | 2015-05-11 08:00 → 2015-05-29 10:24 (+18d) | 2015-05-11 17:00 → 2015-05-29 10:24 (+18d) | 1d → 0d | 0d → -21.5d | none → 105 | resources none → MaiTTT; PhuongBB |
| 107 | **Architecture design** | 2015-05-11 08:00 → 2015-05-26 16:12 (+15d) | 2015-05-11 17:00 → 2015-05-29 16:12 (+18d) | 1d → 3d | 0d → -21.5d |  |  |
| 108 | Define system structure and collect system features | 2015-05-11 08:00 → 2015-05-26 16:12 (+15d) | 2015-05-11 17:00 → 2015-05-27 16:12 (+16d) |  | 0d → -20.6d | none → 100 | resources none → AnhTT; NamNT; CuongNLT |
| 109 | Study & choose System Architecture | 2015-05-11 08:00 → 2015-05-27 16:12 (+16d) | 2015-05-11 12:00 → 2015-05-28 11:12 (+17d) |  | 0.5d → -20.6d | none → 108 | resources none → AnhTT; NamNT; CuongNLT |
| 112 | Complete System Architecture version 1.0 | 2015-05-11 08:00 → 2015-05-29 16:12 (+18d) | 2015-05-11 08:00 → 2015-05-29 16:12 (+18d) |  | 1d → -21.5d | none → 111 | resources none → AnhTT; NamNT; CuongNLT |
| 113 | **Detailed design** | 2015-05-11 08:00 → 2015-05-29 16:12 (+18d) | 2015-05-11 17:00 → 2015-06-09 17:00 (+29d) | 1d → 7.1d | 0d → -21d |  |  |
| 114 | **User Interface design** | 2015-05-11 08:00 → 2015-05-29 16:12 (+18d) | 2015-05-11 12:00 → 2015-06-04 16:12 (+24d) | 0.5d → 4d | 0.5d → -21d |  |  |
| 115 | **Bus Driver Module** | 2015-05-11 08:00 → 2015-05-29 16:12 (+18d) | 2015-05-11 11:12 → 2015-06-04 16:12 (+24d) | 0.4d → 4d | 0.6d → -21d |  |  |
| 116 | Send bus info module | 2015-05-11 08:00 → 2015-05-29 16:12 (+18d) | 2015-05-11 11:12 → 2015-06-04 16:12 (+24d) |  | 0.6d → -21d | none → 112 | resources none → AnhTT |
| 117 | **Bus Rider Module** | 2015-05-11 08:00 → 2015-05-29 16:12 (+18d) | 2015-05-11 12:00 → 2015-06-04 15:24 (+24d) | 0.5d → 3.9d | 0.5d → -20.9d |  |  |
| 118 | **Account module** | 2015-05-11 08:00 → 2015-05-29 16:12 (+18d) | 2015-05-11 10:24 → 2015-06-01 11:12 (+21d) | 0.3d → 0.5d | 0.7d → -20.4d |  |  |
| 119 | Sign up module | 2015-05-11 08:00 → 2015-05-29 16:12 (+18d) | 2015-05-11 08:48 → 2015-05-29 17:00 (+18d) |  | 0.9d → -20.4d | none → 112 | resources none → CuongNLT |
| 120 | Sign in/ sign out module | 2015-05-11 08:00 → 2015-06-01 08:00 (+21d) | 2015-05-11 08:48 → 2015-06-01 08:48 (+21d) |  | 0.9d → -20.4d | none → 119 | resources none → CuongNLT |
| 121 | Edit profile module | 2015-05-11 08:00 → 2015-06-01 08:48 (+21d) | 2015-05-11 09:36 → 2015-06-01 10:24 (+21d) |  | 0.8d → -20.4d | none → 120 | resources none → CuongNLT |
| 122 | Forgot password module | 2015-05-11 08:00 → 2015-06-01 10:24 (+21d) | 2015-05-11 08:48 → 2015-06-01 11:12 (+21d) |  | 0.9d → -20.4d | none → 121 | resources none → CuongNLT |
| 123 | **Sync module** | 2015-05-11 08:00 → 2015-06-01 16:12 (+21d) | 2015-05-11 10:24 → 2015-06-04 15:24 (+24d) | 0.3d → 2.9d | 0.7d → -20.9d |  |  |
| 124 | Connect Facebook module | 2015-05-11 08:00 → 2015-06-01 16:12 (+21d) | 2015-05-11 08:48 → 2015-06-01 17:00 (+21d) |  | 0.9d → -20.9d | none → 122 | resources none → AnhTT |
| 125 | Show Favorite place module | 2015-05-11 08:00 → 2015-06-02 08:00 (+22d) | 2015-05-11 08:48 → 2015-06-02 08:48 (+22d) |  | 0.9d → -20.9d | none → 124 | resources none → AnhTT |
| 126 | Show Favorite bus module | 2015-05-11 08:00 → 2015-06-02 08:48 (+22d) | 2015-05-11 08:48 → 2015-06-02 09:36 (+22d) |  | 0.9d → -20.9d | none → 125 | resources none → AnhTT |
| 127 | Add/remove Favorite place module | 2015-05-11 08:00 → 2015-06-02 09:36 (+22d) | 2015-05-11 08:48 → 2015-06-02 10:24 (+22d) |  | 0.9d → -20.9d | none → 126 | resources none → AnhTT |
| 128 | About module | 2015-05-11 08:00 → 2015-06-04 14:36 (+24d) | 2015-05-11 08:48 → 2015-06-04 15:24 (+24d) |  | 0.9d → -20.9d | none → 127 | resources none → AnhTT |
| 129 | **Bus module** | 2015-05-11 08:00 → 2015-05-29 16:12 (+18d) | 2015-05-11 10:24 → 2015-06-03 12:00 (+23d) | 0.3d → 2.6d | 0.7d → -19.6d |  |  |
| 130 | Bus list module | 2015-05-11 08:00 → 2015-05-29 16:12 (+18d) | 2015-05-11 08:48 → 2015-05-29 17:00 (+18d) |  | 0.9d → -19.6d | none → 112 | resources none → MaiTTT |
| 131 | Bus info module | 2015-05-11 08:00 → 2015-06-01 08:00 (+21d) | 2015-05-11 10:24 → 2015-06-01 10:24 (+21d) |  | 0.7d → -19.6d | none → 130 | resources none → MaiTTT |
| 132 | Bus route module | 2015-05-11 08:00 → 2015-06-01 10:24 (+21d) | 2015-05-11 09:36 → 2015-06-01 12:00 (+21d) |  | 0.8d → -19.6d | none → 131 | resources none → MaiTTT |
| 133 | Bus nearest module | 2015-05-11 08:00 → 2015-06-01 13:00 (+21d) | 2015-05-11 10:24 → 2015-06-01 15:24 (+21d) |  | 0.7d → -19.6d | none → 132 | resources none → MaiTTT |
| 134 | Bus map module | 2015-05-11 08:00 → 2015-06-01 15:24 (+21d) | 2015-05-11 09:36 → 2015-06-02 12:00 (+22d) |  | 0.8d → -19.6d | none → 133 | resources none → MaiTTT |
| 135 | Set/unset favorite bus module | 2015-05-11 08:00 → 2015-06-02 13:00 (+22d) | 2015-05-11 08:48 → 2015-06-02 13:48 (+22d) |  | 0.9d → -19.6d | none → 134 | resources none → MaiTTT |
| 136 | Remind module | 2015-05-11 08:00 → 2015-06-02 13:48 (+22d) | 2015-05-11 10:24 → 2015-06-02 16:12 (+22d) |  | 0.7d → -19.6d | none → 135 | resources none → MaiTTT |
| 137 | Track module | 2015-05-11 08:00 → 2015-06-02 16:12 (+22d) | 2015-05-11 09:36 → 2015-06-03 08:48 (+23d) |  | 0.8d → -19.6d | none → 136 | resources none → MaiTTT |
| 138 | Get notification module | 2015-05-11 08:00 → 2015-06-03 08:48 (+23d) | 2015-05-11 10:24 → 2015-06-03 11:12 (+23d) |  | 0.7d → -19.6d | none → 137 | resources none → MaiTTT |
| 139 | Swap direction module | 2015-05-11 08:00 → 2015-06-03 11:12 (+23d) | 2015-05-11 08:48 → 2015-06-03 12:00 (+23d) |  | 0.9d → -19.6d | none → 138 | resources none → MaiTTT |
| 140 | **Shigeki module** | 2015-05-11 08:00 → 2015-05-29 16:12 (+18d) | 2015-05-11 10:24 → 2015-06-02 12:00 (+22d) | 0.3d → 1.6d | 0.7d → -18.6d |  |  |
| 141 | Achievement module | 2015-05-11 08:00 → 2015-05-29 16:12 (+18d) | 2015-05-11 10:24 → 2015-06-01 09:36 (+21d) |  | 0.7d → -18.6d | none → 112 | resources none → NamNT |
| 142 | Collection module | 2015-05-11 08:00 → 2015-06-01 09:36 (+21d) | 2015-05-11 10:24 → 2015-06-01 12:00 (+21d) |  | 0.7d → -18.6d | none → 141 | resources none → NamNT |
| 143 | Mission module | 2015-05-11 08:00 → 2015-06-01 13:00 (+21d) | 2015-05-11 10:24 → 2015-06-01 15:24 (+21d) |  | 0.7d → -18.6d | none → 142 | resources none → NamNT |
| 144 | Statistic module | 2015-05-11 08:00 → 2015-06-01 15:24 (+21d) | 2015-05-11 10:24 → 2015-06-02 08:48 (+22d) |  | 0.7d → -18.6d | none → 143 | resources none → NamNT |
| 145 | Rank module | 2015-05-11 08:00 → 2015-06-02 08:48 (+22d) | 2015-05-11 08:48 → 2015-06-02 09:36 (+22d) |  | 0.9d → -18.6d | none → 144 | resources none → NamNT |
| 146 | Scan QR code module | 2015-05-11 08:00 → 2015-06-02 09:36 (+22d) | 2015-05-11 10:24 → 2015-06-02 12:00 (+22d) |  | 0.7d → -18.6d | none → 145 | resources none → NamNT |
| 147 | **Search module** | 2015-05-11 08:00 → 2015-05-29 16:12 (+18d) | 2015-05-11 10:24 → 2015-06-01 12:00 (+21d) | 0.3d → 0.6d | 0.7d → -18.1d |  |  |
| 148 | Search bus module | 2015-05-11 08:00 → 2015-05-29 16:12 (+18d) | 2015-05-11 08:48 → 2015-05-29 17:00 (+18d) |  | 0.9d → -18.1d | none → 112 | resources none → PhuongBB |
| 149 | Search route module | 2015-05-11 08:00 → 2015-06-01 08:00 (+21d) | 2015-05-11 10:24 → 2015-06-01 10:24 (+21d) |  | 0.7d → -18.1d | none → 148 | resources none → PhuongBB |
| 150 | Search Favorite bus module | 2015-05-11 08:00 → 2015-06-01 10:24 (+21d) | 2015-05-11 08:48 → 2015-06-01 11:12 (+21d) |  | 0.9d → -18.1d | none → 149 | resources none → PhuongBB |
| 151 | Search Favorite place module | 2015-05-11 08:00 → 2015-06-01 11:12 (+21d) | 2015-05-11 08:48 → 2015-06-01 12:00 (+21d) |  | 0.9d → -18.1d | none → 150 | resources none → PhuongBB |
| 152 | Setting module | 2015-05-11 08:00 → 2015-06-01 13:00 (+21d) | 2015-05-11 12:00 → 2015-06-01 17:00 (+21d) |  | 0.5d → -18.1d | none → 151 | resources none → PhuongBB |
| 156 | **Database design** | 2015-05-11 08:00 → 2015-05-29 16:12 (+18d) | 2015-05-11 12:00 → 2015-06-02 14:36 (+22d) | 0.5d → 1.8d | 0.5d → -21.5d |  |  |
| 160 | Complete Database Design version 1.0 | 2015-05-11 08:00 → 2015-06-02 14:36 (+22d) | 2015-05-11 12:00 → 2015-06-02 14:36 (+22d) | 0.5d → 0d | 0.5d → -21.5d | none → 159 | resources none → AnhTT |
| 161 | **Class design** | 2015-05-11 08:00 → 2015-06-02 14:36 (+22d) | 2015-05-11 17:00 → 2015-06-05 12:00 (+25d) | 1d → 2.8d | 0d → -21.5d |  |  |
| 162 | Define class/component | 2015-05-11 08:00 → 2015-06-02 14:36 (+22d) | 2015-05-11 17:00 → 2015-06-04 14:36 (+24d) | 1d → 2d | 0d → -21.5d | none → 160 | resources none → AnhTT |
| 165 | Complete Class Design version 1.0 | 2015-05-11 08:00 → 2015-06-05 12:00 (+25d) | 2015-05-11 17:00 → 2015-06-05 12:00 (+25d) | 1d → 0d | 0d → -21.5d | none → 164 | resources none → AnhTT |
| 166 | **Progress Report 2** | 2015-05-11 08:00 → 2015-06-05 13:00 (+25d) | 2015-05-11 17:00 → 2015-06-05 17:00 (+25d) | 1d → 0.5d | 0d → -21.5d |  |  |
| 171 | Q & A Management (update) | 2015-05-11 08:00 → 2015-05-28 11:12 (+17d) | 2015-05-11 17:00 → 2015-05-28 16:12 (+17d) | 1d → 0.5d | 0d → -15.4d | none → 100 | resources none → MaiTTT |
| 172 | **Report no.2** | 2015-05-11 08:00 → 2015-06-08 08:00 (+28d) | 2015-05-11 17:00 → 2015-06-10 12:00 (+30d) | 1d → 2.5d | 0d → -21.5d |  |  |

| ID | Task | Start | Finish | Duration | Total float | Predecessors | Other |
| --- | --- | --- | --- | --- | --- | --- | --- |
| 173 | Develop Report no.2 (draft version) | 2015-05-11 08:00 → 2015-06-08 08:00 (+28d) | 2015-05-11 17:00 → 2015-06-08 08:48 (+28d) | 1d → 0.1d | 0d → -21.5d | none → 100, 112, 155, 160, 165, 170, 171, 106 | resources none → NamNT |
| 174 | Review Report no.2 (draft version) | 2015-05-11 08:00 → 2015-06-08 08:48 (+28d) | 2015-05-11 17:00 → 2015-06-08 13:48 (+28d) | 1d → 0.5d | 0d → -21.5d | none → 173 | resources none → NamNT; CuongNLT |
| 175 | Update Report no.2 (draft version) | 2015-05-11 08:00 → 2015-06-08 13:48 (+28d) | 2015-05-11 17:00 → 2015-06-08 17:00 (+28d) | 1d → 0.4d | 0d → -21.5d | none → 174 | resources none → NamNT; CuongNLT; MaiTTT; PhuongBB; AnhTT |
| 176 | Submit Report no.2 (first version) | 2015-05-11 08:00 → 2015-06-08 17:00 (+28d) | 2015-05-11 17:00 → 2015-06-08 17:00 (+28d) | 1d → 0d | 0d → -21.5d | none → 175 | resources none → NamNT |
| 177 | Revise after got comments for Report no.2 | 2015-05-11 08:00 → 2015-06-09 08:00 (+29d) | 2015-05-11 17:00 → 2015-06-10 12:00 (+30d) | 1d → 1.4d | 0d → -21.5d | none → 176 | resources none → NamNT; CuongNLT; MaiTTT; PhuongBB; AnhTT |
| 178 | Submit Report no.2 (final version) | 2015-05-11 08:00 → 2015-06-10 12:00 (+30d) | 2015-05-11 17:00 → 2015-06-10 12:00 (+30d) | 1d → 0d | 0d → -21.5d | none → 177 | resources none → NamNT |
| 179 | **Coding & Unit Testing** |  | 2015-05-11 17:00 → 2015-05-12 09:36 (+1d) | 1d → 1.2d | 0d → -0.2d |  |  |
| 182 | **Bus Rider Module** |  | 2015-05-11 17:00 → 2015-05-12 09:36 (+1d) | 1d → 1.2d | 0d → -0.2d |  |  |
| 183 | **Account module** |  | 2015-05-11 17:00 → 2015-05-12 09:36 (+1d) | 1d → 1.2d | 0d → -0.2d |  |  |
| 184 | Sign up module |  | 2015-05-11 17:00 → 2015-05-11 12:00 | 1d → 0.5d | 0d → 0.5d |  |  |
| 185 | Sign in/ sign out module |  | 2015-05-11 17:00 → 2015-05-11 15:24 | 1d → 0.8d | 0d → 0.2d |  |  |
| 186 | Edit profile module |  | 2015-05-11 17:00 → 2015-05-12 09:36 (+1d) | 1d → 1.2d | 0d → -0.2d |  |  |
| 187 | Forgot password module |  | 2015-05-11 17:00 → 2015-05-11 13:48 | 1d → 0.6d | 0d → 0.4d |  |  |
| 188 | **Testing** |  | 2015-05-11 17:00 → 2015-06-04 09:36 (+24d) | 1d → 18.2d? | 0d → -17.2d |  |  |
| 190 | Develop test plan | 2015-05-11 08:00 → 2015-05-20 13:48 (+9d) | 2015-05-11 17:00 → 2015-05-22 17:00 (+11d) |  | 0d → -9d |  | resources none → MaiTTT |
| 191 | Review test plan | 2015-05-11 08:00 → 2015-05-20 08:00 (+9d) | 2015-05-11 17:00 → 2015-05-20 12:00 (+9d) | 1d → 0.5d | 0d → -6.5d |  | resources none → NamNT |
| 192 | Update test plan | 2015-05-11 08:00 → 2015-06-03 13:00 (+23d) | 2015-05-11 17:00 → 2015-06-03 15:24 (+23d) | 1d → 0.3d | 0d → -16.8d |  | resources none → MaiTTT |
| 194 | **Test review checklist** |  | 2015-05-11 17:00 → 2015-06-04 09:36 (+24d) | 1d → 18.2d | 0d → -17.2d |  |  |
| 205 | Complete review checklist |  | 2015-05-11 17:00 → 2015-05-11 08:00 | 1d → 0d | 0d → 1d | none → 199, 204 | resources none → MaiTTT; PhuongBB |
| 207 | **Unit test** |  |  | 1d → 1d? |  |  |  |
| 230 | Q & A Management (update) | 2015-05-11 08:00 → 2015-05-29 13:48 (+18d) | 2015-05-11 17:00 → 2015-06-04 09:36 (+24d) | 1d → 0.5d | 0d → -17.2d |  | resources none → MaiTTT |
| 231 | **Report no.3** |  | 2015-05-11 17:00 → 2015-05-20 09:36 (+9d) | 1d → 7.2d | 0d → -6.2d |  |  |
| 232 | Develop Report no.3 (draft version) | 2015-05-11 08:00 → 2015-05-20 08:00 (+9d) | 2015-05-11 17:00 → 2015-05-20 09:36 (+9d) | 1d → 0.2d | 0d → -6.2d |  | resources none → NamNT |
| 234 | Update Report no.3 (draft version) |  | 2015-05-11 17:00 → 2015-05-11 12:00 | 1d → 0.5d | 0d → 0.5d |  |  |
| 235 | Submit Report no.3 (first version) |  | 2015-05-11 17:00 → 2015-05-11 08:00 | 1d → 0d | 0d → 1d |  | resources none → NamNT |
| 236 | Revise after got comments for Report no.3 |  | 2015-05-11 17:00 → 2015-05-11 12:00 | 1d → 0.5d | 0d → 0.5d |  |  |
| 237 | Submit Report no.3 (final version) |  | 2015-05-11 17:00 → 2015-05-11 08:00 | 1d → 0d | 0d → 1d |  | resources none → NamNT |
| 238 | **Construction** |  |  | 1d → 1d? |  |  |  |
| 284 | **Testing** |  |  | 1d → 1d? |  |  |  |
| 285 | **Execute test & fix bugs** |  |  | 1d → 1d? |  |  |  |
| 286 | **Round 1** |  |  | 1d → 1d? |  |  |  |
| 287 | **Execute unit test** |  |  | 1d → 1d? |  |  |  |
| 300 | **Round 2** |  |  | 1d → 1d? |  |  |  |
| 301 | **Execute unit test** |  |  | 1d → 1d? |  |  |  |

## Version 3 (saved 2015-05-21, file BUIN_Project_Schedule_v0.9_EN.mpp)

Note of the change: update plan

Last finish 2015-06-10 → 2015-06-24 (+14d).

Added:

| ID | Task | Duration | Start | Finish | Predecessors | Resources |
| --- | --- | --- | --- | --- | --- | --- |
| 61 | PhoneNumberSync module | 0.3d | 2015-05-22 13:00 | 2015-05-22 15:24 | 58 | AnhTT |
| 115 | PhoneNumberSync module | 0.3d | 2015-06-02 15:24 | 2015-06-03 08:48 | 112 | AnhTT |
| 158 | Complete design | 0d | 2015-06-11 12:00 | 2015-06-11 12:00 | 108, 147, 152, 157 | NamNT |
| 216 | Develop Progress Report 3 | 0.3d | 2015-06-23 13:00 | 2015-06-23 15:24 | 187, 204, 209, 214 | NamNT |
| 217 | Review Progress Report 3 | 0.1d | 2015-06-23 15:24 | 2015-06-23 16:12 | 216 | MaiTTT |
| 218 | Update Progress Report 3 | 0.1d | 2015-06-23 16:12 | 2015-06-23 17:00 | 217 | NamNT |
| 219 | Complete Progress Report 3 | 0d | 2015-06-23 17:00 | 2015-06-23 17:00 | 218 | NamNT |
| 237 | PhoneNumberSync module | 1d? | 2015-06-12 13:00 | 2015-06-15 12:00 | 174 |  |
| 265 | Web service | 2d | 2015-05-20 16:12 | 2015-05-26 13:48 |  | NamNT |

Removed: 60 Account module; 61 Sign up module; 62 Sign in/ sign out module; 63 Edit profile module; 64 Forgot password module; 118 Account module; 119 Sign up module; 120 Sign in/ sign out module; 121 Edit profile module; 122 Forgot password module; 182 Bus Rider Module; 183 Account module; 184 Sign up module; 185 Sign in/ sign out module; 186 Edit profile module; 187 Forgot password module; 210 Account module

Changed:

| ID | Task | Start | Finish | Duration | Total float | Predecessors | Other |
| --- | --- | --- | --- | --- | --- | --- | --- |
| 2 | **Initiation** |  | 2015-05-21 12:00 → 2015-05-22 08:48 (+1d) | 8.5d → 9.1d | -21.5d → -33d |  |  |
| 4 | Define business situation |  | 2015-05-11 12:00 → 2015-05-12 10:24 (+1d) | 0.3d → 0.6d | -21.5d → -33d |  |  |
| 5 | Develop project idea | 2015-05-11 13:00 → 2015-05-12 10:24 (+1d) | 2015-05-12 12:00 → 2015-05-13 10:24 (+1d) |  | -21.5d → -33d |  |  |
| 6 | Define project and system scope | 2015-05-12 13:00 → 2015-05-13 10:24 (+1d) | 2015-05-12 14:36 → 2015-05-13 12:00 (+1d) |  | -21.5d → -33d |  |  |
| 7 | Prepare project | 2015-05-12 14:36 → 2015-05-13 13:00 (+1d) | 2015-05-13 09:36 → 2015-05-13 17:00 |  | -21.5d → -33d |  |  |
| 8 | Kick-off meeting | 2015-05-13 09:36 → 2015-05-14 08:00 (+1d) | 2015-05-13 11:12 → 2015-05-14 09:36 (+1d) |  | -21.5d → -33d |  |  |
| 9 | Q & A Management | 2015-05-13 11:12 → 2015-05-14 09:36 (+1d) | 2015-05-13 16:12 → 2015-05-14 14:36 (+1d) |  | -21.5d → -33d |  |  |
| 10 | **Technologies** | 2015-05-13 16:12 → 2015-05-14 14:36 (+1d) | 2015-05-20 16:12 → 2015-05-21 12:00 (+1d) | 5d → 4.8d | -21.3d → -33d |  |  |
| 11 | Research development technologies | 2015-05-13 16:12 → 2015-05-14 14:36 (+1d) | 2015-05-15 08:48 → 2015-05-15 14:36 | 1.2d → 1d | -21.3d → -33d |  |  |
| 12 | Install and configure Eclipse IDE and Android SDK | 2015-05-15 08:48 → 2015-05-15 14:36 | 2015-05-15 13:48 → 2015-05-18 09:36 (+3d) |  | -21.3d → -31.5d |  |  |
| 13 | Training Java, Android SDK & Eclipse IDE | 2015-05-15 13:48 → 2015-05-18 09:36 (+3d) | 2015-05-20 16:12 → 2015-05-21 12:00 (+1d) |  | -21.3d → -31.5d |  |  |
| 14 | Install and configure Visual Studio, SQL Server | 2015-05-15 15:24 → 2015-05-18 13:48 (+3d) | 2015-05-18 10:24 → 2015-05-19 09:36 (+1d) |  | -20.1d → -31d |  |  |
| 15 | Study web service using .NET & SQL Server | 2015-05-18 10:24 → 2015-05-19 11:12 (+1d) | 2015-05-19 14:36 → 2015-05-20 17:00 (+1d) |  | -20.1d → -31d |  |  |
| 16 | **SRS/PP/Concept design Review checklist** | 2015-05-14 16:12 → 2015-05-14 14:36 | 2015-05-19 14:36 → 2015-05-19 10:24 | 2.8d → 2.6d | -21.5d → -30.4d |  |  |
| 17 | Develop review checklist | 2015-05-14 16:12 → 2015-05-14 14:36 | 2015-05-18 12:00 → 2015-05-18 17:00 |  | -21.5d → -30.4d |  |  |
| 18 | Review review checklist | 2015-05-18 13:00 → 2015-05-19 08:00 (+1d) | 2015-05-19 12:00 → 2015-05-19 08:48 | 0.2d → 0.1d | -21.5d → -30.4d |  |  |
| 19 | Update review checklist | 2015-05-19 13:00 → 2015-05-19 08:48 | 2015-05-19 14:36 → 2015-05-19 10:24 |  | -21.5d → -30.4d |  |  |
| 20 | Complete review checklist | 2015-05-19 14:36 → 2015-05-19 10:24 | 2015-05-19 14:36 → 2015-05-19 10:24 |  | -21.5d → -30.4d |  |  |
| 21 | **Requirements** | 2015-05-13 16:12 → 2015-05-14 14:36 (+1d) | 2015-05-21 08:48 → 2015-05-21 14:36 | 5.2d → 5d | -21.5d → -31.7d |  |  |
| 22 | **User Requirements Specification** | 2015-05-13 16:12 → 2015-05-14 14:36 (+1d) | 2015-05-19 14:36 → 2015-05-20 13:48 (+1d) | 3.8d → 3.9d | -21.5d → -31.7d |  |  |
| 23 | Collect business requirements and processes | 2015-05-13 16:12 → 2015-05-14 14:36 (+1d) | 2015-05-14 16:12 → 2015-05-15 14:36 (+1d) |  | -21.5d → -31.7d |  |  |
| 24 | Create draft requirements | 2015-05-14 16:12 → 2015-05-15 14:36 (+1d) | 2015-05-15 16:12 → 2015-05-18 14:36 (+3d) |  | -21.5d → -31.7d |  |  |
| 25 | Complete draft requirements | 2015-05-15 16:12 → 2015-05-18 14:36 (+3d) | 2015-05-18 11:12 → 2015-05-19 09:36 (+1d) |  | -21.5d → -31.7d |  |  |
| 26 | Develop main function and processes | 2015-05-18 11:12 → 2015-05-19 09:36 (+1d) | 2015-05-19 14:36 → 2015-05-20 13:48 (+1d) |  | -21.5d → -31.7d |  |  |
| 27 | Review User Requirement Specification with checklist | 2015-05-19 14:36 → 2015-05-20 13:48 (+1d) | 2015-05-19 17:00 → 2015-05-20 15:24 (+1d) | 0.3d → 0.2d | -21.5d → -31.7d |  |  |
| 28 | Update User Requirement Specification | 2015-05-19 17:00 → 2015-05-20 15:24 (+1d) | 2015-05-21 08:48 → 2015-05-21 14:36 |  | -21.5d → -31.7d |  |  |
| 29 | Complete User Requirement Specification | 2015-05-21 08:48 → 2015-05-21 14:36 | 2015-05-21 08:48 → 2015-05-21 14:36 |  | -21.5d → -31.7d |  |  |
| 30 | **Concept design** | 2015-05-18 11:12 → 2015-05-19 09:36 (+1d) | 2015-05-20 14:36 → 2015-05-21 09:36 (+1d) | 2.3d → 2d | -21.1d → -31.2d |  |  |
| 31 | Create draft concept design | 2015-05-18 11:12 → 2015-05-19 09:36 (+1d) | 2015-05-19 11:12 → 2015-05-20 09:36 (+1d) |  | -20.8d → -31.2d |  |  |
| 32 | Review concept design with checklist | 2015-05-19 14:36 → 2015-05-20 09:36 (+1d) | 2015-05-20 09:36 → 2015-05-20 14:36 |  | -21.1d → -31.2d |  |  |
| 33 | Update concept design | 2015-05-20 09:36 → 2015-05-20 14:36 | 2015-05-20 14:36 → 2015-05-21 09:36 (+1d) |  | -21.1d → -31.2d |  |  |
| 34 | Complete concept design | 2015-05-20 14:36 → 2015-05-21 09:36 (+1d) | 2015-05-20 14:36 → 2015-05-21 09:36 (+1d) |  | -21.1d → -31.2d |  |  |
| 35 | **Project plan** | 2015-05-13 16:12 → 2015-05-14 14:36 (+1d) | 2015-05-20 13:48 → 2015-05-21 10:24 (+1d) | 4.7d → 4.6d | -21d → -31.4d |  |  |
| 36 | Develop project definition | 2015-05-13 16:12 → 2015-05-14 14:36 (+1d) | 2015-05-14 11:12 → 2015-05-15 09:36 (+1d) |  | -21d → -31.4d |  |  |
| 37 | Develop Work Breakdown Structure | 2015-05-14 11:12 → 2015-05-15 09:36 (+1d) | 2015-05-15 08:48 → 2015-05-15 16:12 |  | -21d → -31.4d |  |  |
| 38 | Create Project Schedule | 2015-05-15 08:48 → 2015-05-15 16:12 | 2015-05-15 15:24 → 2015-05-18 13:48 (+3d) |  | -21d → -31.4d |  |  |
| 39 | Create Configuration Management Plan version 1.0 | 2015-05-15 15:24 → 2015-05-18 13:48 (+3d) | 2015-05-18 13:48 → 2015-05-19 11:12 (+1d) |  | -21d → -31.4d |  |  |
| 40 | Create Project Plan (first version) | 2015-05-18 13:48 → 2015-05-19 11:12 (+1d) | 2015-05-19 13:48 → 2015-05-20 11:12 (+1d) |  | -21d → -31.4d |  |  |
| 41 | Review Project Plan (first version) | 2015-05-20 10:24 → 2015-05-21 08:00 (+1d) | 2015-05-20 13:48 → 2015-05-21 10:24 (+1d) |  | -21d → -31.3d |  |  |
| 42 | Complete Project Plan (final version) | 2015-05-20 13:48 → 2015-05-21 10:24 (+1d) | 2015-05-20 13:48 → 2015-05-21 10:24 (+1d) |  | -21d → -31.3d |  |  |
| 43 | **Progress Report 1** | 2015-05-19 13:48 → 2015-05-20 11:12 (+1d) | 2015-05-20 11:12 → 2015-05-20 16:12 | 0.8d → 0.5d | -20.9d → -30.9d |  |  |
| 44 | Develop Progress Report 1 | 2015-05-19 13:48 → 2015-05-20 11:12 (+1d) | 2015-05-19 16:12 → 2015-05-20 14:36 (+1d) |  | -20.9d → -30.9d |  |  |
| 45 | Review Progress Report 1 | 2015-05-20 09:36 → 2015-05-20 14:36 | 2015-05-20 10:24 → 2015-05-20 15:24 |  | -20.8d → -30.9d |  |  |
| 46 | Update Progress Report 1 | 2015-05-20 10:24 → 2015-05-20 15:24 | 2015-05-20 11:12 → 2015-05-20 16:12 |  | -20.8d → -30.9d |  |  |
| 47 | Complete Progress Report 1 | 2015-05-20 11:12 → 2015-05-20 16:12 | 2015-05-20 11:12 → 2015-05-20 16:12 |  | -20.8d → -30.9d |  |  |
| 48 | Review Report no.1 (draft version) | 2015-05-21 08:48 → 2015-05-21 14:36 | 2015-05-21 10:24 → 2015-05-21 16:12 |  | -21.5d → -31.7d |  |  |
| 49 | Update Report no.1 (draft version) | 2015-05-21 10:24 → 2015-05-21 16:12 | 2015-05-21 11:12 → 2015-05-21 17:00 |  | -21.5d → -31.7d |  |  |
| 50 | Submit Report no.1 (first version) | 2015-05-21 11:12 → 2015-05-21 17:00 | 2015-05-21 11:12 → 2015-05-21 17:00 |  | -21.5d → -31.7d |  |  |
| 51 | Revise after got comments for Report no.1 | 2015-05-21 11:12 → 2015-05-22 08:00 (+1d) | 2015-05-21 12:00 → 2015-05-22 08:48 (+1d) |  | -21.5d → -31.7d |  |  |
| 52 | Submit Report no.1 (final version) | 2015-05-21 12:00 → 2015-05-22 08:48 (+1d) | 2015-05-21 12:00 → 2015-05-22 08:48 (+1d) |  | -21.5d → -31.7d |  |  |
| 53 | **Solution** |  | 2015-06-10 12:00 → 2015-06-24 08:48 (+14d) | 22.5d? → 32.1d | -21.5d → -31.1d |  |  |
| 54 | **Requirements** | 2015-05-21 13:00 → 2015-05-22 08:48 (+1d) | 2015-05-26 16:12 → 2015-05-27 14:36 (+1d) | 3.4d → 3.6d | -21.5d → -31.7d |  |  |
| 55 | **Software Requirements Specification** | 2015-05-21 13:00 → 2015-05-22 08:48 (+1d) | 2015-05-26 16:12 → 2015-05-27 14:36 (+1d) | 3.4d → 3.6d | -21.5d → -31.7d |  |  |
| 56 | **Functional Requirement Specification** | 2015-05-21 13:00 → 2015-05-22 08:48 (+1d) | 2015-05-22 16:12 → 2015-05-26 09:36 (+4d) | 1.4d → 2.1d | -21.5d → -31.7d |  |  |
| 57 | **Bus Driver Module** | 2015-05-21 13:00 → 2015-05-22 08:48 (+1d) | 2015-05-21 16:12 → 2015-05-22 12:00 (+1d) |  | -21.5d → -31.7d |  |  |
| 58 | Send bus info module | 2015-05-21 13:00 → 2015-05-22 08:48 (+1d) | 2015-05-21 16:12 → 2015-05-22 12:00 (+1d) |  | -21.5d → -31.7d |  |  |
| 59 | **Bus Rider Module** | 2015-05-21 16:12 → 2015-05-22 13:00 (+1d) | 2015-05-22 16:12 → 2015-05-26 09:36 (+4d) | 1d → 1.7d | -21.5d → -31.7d |  |  |
| 60 | **Sync module** | 2015-05-21 16:12 → 2015-05-22 13:00 (+1d) | 2015-05-22 11:12 → 2015-05-26 09:36 (+4d) | 0.5d → 1.7d | -20.5d → -31.7d |  |  |
| 62 | Connect Facebook module | 2015-05-21 16:12 → 2015-05-22 15:24 (+1d) | 2015-05-21 17:00 → 2015-05-22 16:12 (+1d) |  | -20.5d → -31.7d | 58 → 61 |  |
| 63 | Show Favorite place module | 2015-05-22 08:00 → 2015-05-22 16:12 | 2015-05-22 08:48 → 2015-05-22 17:00 |  | -20.5d → -31.7d |  |  |
| 64 | Show Favorite bus module | 2015-05-22 08:48 → 2015-05-25 08:00 (+3d) | 2015-05-22 09:36 → 2015-05-25 08:48 (+3d) |  | -20.5d → -31.7d |  |  |
| 65 | Add/remove Favorite place module | 2015-05-22 09:36 → 2015-05-25 13:48 (+3d) | 2015-05-22 10:24 → 2015-05-25 14:36 (+3d) |  | -20.5d → -31.7d |  |  |
| 66 | About module | 2015-05-22 10:24 → 2015-05-26 08:48 (+4d) | 2015-05-22 11:12 → 2015-05-26 09:36 (+4d) |  | -20.5d → -31.23d |  |  |
| 67 | **Bus module** | 2015-05-21 16:12 → 2015-05-22 13:00 (+1d) | 2015-05-22 16:12 → 2015-05-22 17:00 | 1d → 0.5d | -21d → -30.02d |  |  |
| 68 | Bus list module | 2015-05-21 16:12 → 2015-05-22 13:00 (+1d) | 2015-05-21 17:00 → 2015-05-22 13:48 (+1d) |  | -21d → -9d |  |  |
| 69 | Bus info module | 2015-05-22 08:00 → 2015-05-22 13:48 | 2015-05-22 08:48 → 2015-05-22 14:36 |  | -21d → -9d |  |  |
| 70 | Bus route module | 2015-05-22 08:48 → 2015-05-22 14:36 | 2015-05-22 09:36 → 2015-05-22 15:24 |  | -21d → -9d |  |  |
| 71 | Bus nearest module | 2015-05-22 09:36 → 2015-05-22 15:24 | 2015-05-22 10:24 → 2015-05-22 16:12 |  | -21d → -9d |  |  |
| 72 | Bus map module | 2015-05-22 10:24 → 2015-05-22 16:12 | 2015-05-22 11:12 → 2015-05-22 17:00 |  | -21d → -9d |  |  |
| 73 | Set/unset favorite bus module | 2015-05-22 11:12 → 2015-05-22 13:00 | 2015-05-22 12:00 → 2015-05-22 13:48 |  | -21d → -30.02d | 72 → 58 | resources MaiTTT → CuongNLT |

| ID | Task | Start | Finish | Duration | Total float | Predecessors | Other |
| --- | --- | --- | --- | --- | --- | --- | --- |
| 74 | Remind module | 2015-05-22 13:00 → 2015-05-22 13:48 | 2015-05-22 13:48 → 2015-05-22 14:36 |  | -21d → -30.02d |  | resources MaiTTT → CuongNLT |
| 75 | Track module | 2015-05-22 13:48 → 2015-05-22 14:36 | 2015-05-22 14:36 → 2015-05-22 15:24 |  | -21d → -30.02d |  | resources MaiTTT → CuongNLT |
| 76 | Get notification module | 2015-05-22 14:36 → 2015-05-22 15:24 | 2015-05-22 15:24 → 2015-05-22 16:12 |  | -21d → -30.02d |  | resources MaiTTT → CuongNLT |
| 77 | Swap direction module | 2015-05-22 15:24 → 2015-05-22 16:12 | 2015-05-22 16:12 → 2015-05-22 17:00 |  | -21d → -30.02d |  | resources MaiTTT → CuongNLT |
| 78 | **Shigeki module** | 2015-05-21 16:12 → 2015-05-22 13:00 (+1d) | 2015-05-22 12:00 → 2015-05-25 08:48 (+3d) |  | -20.6d → -30.12d |  |  |
| 79 | Achievement module | 2015-05-21 16:12 → 2015-05-22 13:00 (+1d) | 2015-05-21 17:00 → 2015-05-22 13:48 (+1d) |  | -20.6d → -30.12d |  |  |
| 80 | Collection module | 2015-05-22 08:00 → 2015-05-22 13:48 | 2015-05-22 08:48 → 2015-05-22 14:36 |  | -20.6d → -30.12d |  |  |
| 81 | Mission module | 2015-05-22 08:48 → 2015-05-22 14:36 | 2015-05-22 09:36 → 2015-05-22 15:24 |  | -20.6d → -30.12d |  |  |
| 82 | Statistic module | 2015-05-22 09:36 → 2015-05-22 15:24 | 2015-05-22 10:24 → 2015-05-22 16:12 |  | -20.6d → -30.12d |  |  |
| 83 | Rank module | 2015-05-22 10:24 → 2015-05-22 16:12 | 2015-05-22 11:12 → 2015-05-22 17:00 |  | -20.6d → -30.12d |  |  |
| 84 | Scan QR code module | 2015-05-22 11:12 → 2015-05-25 08:00 (+3d) | 2015-05-22 12:00 → 2015-05-25 08:48 (+3d) |  | -20.6d → -30.12d |  |  |
| 85 | **Search module** | 2015-05-21 16:12 → 2015-05-22 13:00 (+1d) | 2015-05-22 10:24 → 2015-05-22 16:12 |  | -21.5d → -31.12d |  |  |
| 86 | Search bus module | 2015-05-21 16:12 → 2015-05-22 13:00 (+1d) | 2015-05-21 17:00 → 2015-05-22 13:48 (+1d) |  | -21.5d → -31.12d |  |  |
| 87 | Search route module | 2015-05-22 08:00 → 2015-05-22 13:48 | 2015-05-22 08:48 → 2015-05-22 14:36 |  | -21.5d → -31.12d |  |  |
| 88 | Search Favorite bus module | 2015-05-22 08:48 → 2015-05-22 14:36 | 2015-05-22 09:36 → 2015-05-22 15:24 |  | -21.5d → -31.12d |  |  |
| 89 | Search Favorite place module | 2015-05-22 09:36 → 2015-05-22 15:24 | 2015-05-22 10:24 → 2015-05-22 16:12 |  | -21.5d → -31.12d |  |  |
| 90 | Setting module | 2015-05-22 10:24 → 2015-05-22 16:12 | 2015-05-22 12:00 → 2015-05-25 08:48 (+3d) |  | -21.5d → -31.12d |  |  |
| 91 | **Non-functional Requirement Specification** | 2015-05-22 13:00 → 2015-05-25 08:48 (+3d) | 2015-05-25 11:12 → 2015-05-26 08:48 (+1d) | 0.9d → 1d | -21.5d → -31.12d |  |  |
| 92 | Develop User Interface Requirement | 2015-05-22 13:00 → 2015-05-25 08:48 (+3d) | 2015-05-22 17:00 → 2015-05-25 13:48 (+3d) |  | -21.5d → -31.12d |  |  |
| 93 | Develop Performance Requirement | 2015-05-25 08:00 → 2015-05-25 13:48 | 2015-05-25 11:12 → 2015-05-26 08:48 (+1d) | 0.4d → 0.5d | -21.5d → -31.12d |  |  |
| 94 | Review Software Requirement Specification with checklist | 2015-05-25 11:12 → 2015-05-26 09:36 (+1d) | 2015-05-26 11:12 → 2015-05-27 09:36 (+1d) |  | -21.5d → -31.23d | 66, 77, 84, 89, 90, 93, Forgot password module → 66, 77, 84, 89, 90, 93 |  |
| 95 | Update Software Requirement Specification | 2015-05-26 11:12 → 2015-05-27 09:36 (+1d) | 2015-05-26 16:12 → 2015-05-27 14:36 (+1d) |  | -21.5d → -31.23d |  |  |
| 96 | Complete Software Requirement Specification | 2015-05-26 16:12 → 2015-05-27 14:36 (+1d) | 2015-05-26 16:12 → 2015-05-27 14:36 (+1d) |  | -21.5d → -31.23d |  |  |
| 97 | **Design** | 2015-05-26 16:12 → 2015-05-27 14:36 (+1d) | 2015-06-09 17:00 → 2015-06-24 08:48 (+15d) | 10.1d → 19.4d | -21.5d → -31.23d |  |  |
| 98 | **Design Review checklist** | 2015-05-26 16:12 → 2015-05-27 14:36 (+1d) | 2015-05-29 10:24 → 2015-06-01 08:48 (+3d) |  | -21.5d → -31.23d |  |  |
| 99 | Develop review checklist | 2015-05-26 16:12 → 2015-05-27 14:36 (+1d) | 2015-05-28 17:00 → 2015-05-29 15:24 (+1d) |  | -21.5d → -31.23d |  |  |
| 100 | Review review checklist | 2015-05-29 08:00 → 2015-05-29 15:24 | 2015-05-29 08:48 → 2015-05-29 16:12 |  | -21.5d → -31.23d |  |  |
| 101 | Update review checklist | 2015-05-29 08:48 → 2015-05-29 16:12 | 2015-05-29 10:24 → 2015-06-01 08:48 (+3d) |  | -21.5d → -31.23d |  |  |
| 102 | Complete review checklist | 2015-05-29 10:24 → 2015-06-01 08:48 (+3d) | 2015-05-29 10:24 → 2015-06-01 08:48 (+3d) |  | -21.5d → -31.23d |  |  |
| 103 | **Architecture design** | 2015-05-26 16:12 → 2015-05-27 14:36 (+1d) | 2015-05-29 16:12 → 2015-06-01 14:36 (+3d) |  | -21.5d → -31.23d |  |  |
| 104 | Define system structure and collect system features | 2015-05-26 16:12 → 2015-05-27 14:36 (+1d) | 2015-05-27 16:12 → 2015-05-28 14:36 (+1d) |  | -20.6d → -30.32d |  |  |
| 105 | Study & choose System Architecture | 2015-05-27 16:12 → 2015-05-28 14:36 (+1d) | 2015-05-28 11:12 → 2015-05-29 09:36 (+1d) |  | -20.6d → -30.32d |  |  |
| 106 | Review Architecture Design with checklist | 2015-05-29 10:24 → 2015-06-01 08:48 (+3d) | 2015-05-29 13:48 → 2015-06-01 11:12 (+3d) |  | -21.5d → -31.23d |  |  |
| 107 | Update Architecture Design | 2015-05-29 13:48 → 2015-06-01 11:12 (+3d) | 2015-05-29 16:12 → 2015-06-01 14:36 (+3d) |  | -21.5d → -31.23d |  |  |
| 108 | Complete System Architecture version 1.0 | 2015-05-29 16:12 → 2015-06-01 14:36 (+3d) | 2015-05-29 16:12 → 2015-06-01 14:36 (+3d) |  | -21.5d → -31.23d |  |  |
| 109 | **Detailed design** | 2015-05-29 16:12 → 2015-06-01 14:36 (+3d) | 2015-06-09 17:00 → 2015-06-24 08:48 (+15d) | 7.1d → 16.4d | -21d → -31.1d |  |  |
| 110 | **User Interface design** | 2015-05-29 16:12 → 2015-06-01 14:36 (+3d) | 2015-06-04 16:12 → 2015-06-24 08:48 (+20d) | 4d → 16.4d | -21d → -31.1d |  |  |
| 111 | **Bus Driver Module** | 2015-05-29 16:12 → 2015-06-01 14:36 (+3d) | 2015-06-04 16:12 → 2015-06-02 15:24 (-2d) | 4d → 1.1d | -21d → -27.4d |  |  |
| 112 | Send bus info module | 2015-05-29 16:12 → 2015-06-01 14:36 (+3d) | 2015-06-04 16:12 → 2015-06-02 15:24 (-2d) |  | -21d → -27.4d |  |  |
| 113 | **Bus Rider Module** | 2015-05-29 16:12 → 2015-06-01 14:36 (+3d) | 2015-06-04 15:24 → 2015-06-24 08:48 (+20d) | 3.9d → 16.4d | -20.9d → -31.1d |  |  |
| 114 | **Sync module** | 2015-06-01 16:12 → 2015-06-02 15:24 (+1d) | 2015-06-04 15:24 → 2015-06-05 16:12 (+1d) | 2.9d → 3.1d | -20.9d → -29.6d |  |  |
| 116 | Connect Facebook module | 2015-06-01 16:12 → 2015-06-03 08:48 (+2d) | 2015-06-01 17:00 → 2015-06-03 09:36 (+2d) |  | -20.9d → -27.4d | Forgot password module → 115 |  |
| 117 | Show Favorite place module | 2015-06-02 08:00 → 2015-06-03 09:36 (+1d) | 2015-06-02 08:48 → 2015-06-03 10:24 (+1d) |  | -20.9d → -27.4d |  |  |
| 118 | Show Favorite bus module | 2015-06-02 08:48 → 2015-06-03 10:24 (+1d) | 2015-06-02 09:36 → 2015-06-03 11:12 (+1d) |  | -20.9d → -27.4d |  |  |
| 119 | Add/remove Favorite place module | 2015-06-02 09:36 → 2015-06-05 14:36 (+3d) | 2015-06-02 10:24 → 2015-06-05 15:24 (+3d) |  | -20.9d → -29.6d |  |  |
| 120 | About module | 2015-06-04 14:36 → 2015-06-05 15:24 (+1d) | 2015-06-04 15:24 → 2015-06-05 16:12 (+1d) |  | -20.9d → -29.6d |  |  |
| 121 | **Bus module** | 2015-05-29 16:12 → 2015-06-01 14:36 (+3d) | 2015-06-03 12:00 → 2015-06-24 08:48 (+21d) | 2.6d → 16.4d | -19.6d → -31.1d |  |  |
| 122 | Bus list module | 2015-05-29 16:12 → 2015-06-22 14:36 (+24d) | 2015-05-29 17:00 → 2015-06-22 15:24 (+24d) |  | -19.6d → -31.23d |  |  |
| 123 | Bus info module | 2015-06-01 08:00 → 2015-06-22 15:24 (+21d) | 2015-06-01 10:24 → 2015-06-23 08:48 (+22d) |  | -19.6d → -31.23d |  |  |
| 124 | Bus route module | 2015-06-01 10:24 → 2015-06-23 08:48 (+22d) | 2015-06-01 12:00 → 2015-06-23 10:24 (+22d) |  | -19.6d → -31.23d |  |  |
| 125 | Bus nearest module | 2015-06-01 13:00 → 2015-06-23 13:00 (+22d) | 2015-06-01 15:24 → 2015-06-23 15:24 (+22d) |  | -19.6d → -31.1d |  |  |
| 126 | Bus map module | 2015-06-01 15:24 → 2015-06-23 16:12 (+22d) | 2015-06-02 12:00 → 2015-06-24 08:48 (+22d) |  | -19.6d → -31.1d |  |  |
| 127 | Set/unset favorite bus module | 2015-06-02 13:00 → 2015-06-01 14:36 (-1d) | 2015-06-02 13:48 → 2015-06-01 15:24 (-1d) |  | -19.6d → -26.4d | 126 → 108 | resources MaiTTT → CuongNLT |
| 128 | Remind module | 2015-06-02 13:48 → 2015-06-01 15:24 (-1d) | 2015-06-02 16:12 → 2015-06-02 08:48 |  | -19.6d → -26.4d |  | resources MaiTTT → CuongNLT |
| 129 | Track module | 2015-06-02 16:12 → 2015-06-02 08:48 | 2015-06-03 08:48 → 2015-06-02 10:24 (-1d) |  | -19.6d → -26.4d |  | resources MaiTTT → CuongNLT |
| 130 | Get notification module | 2015-06-03 08:48 → 2015-06-02 10:24 (-1d) | 2015-06-03 11:12 → 2015-06-02 13:48 (-1d) |  | -19.6d → -26.4d |  | resources MaiTTT → CuongNLT |
| 131 | Swap direction module | 2015-06-03 11:12 → 2015-06-02 13:48 (-1d) | 2015-06-03 12:00 → 2015-06-02 14:36 (-1d) |  | -19.6d → -26.4d |  | resources MaiTTT → CuongNLT |
| 132 | **Shigeki module** | 2015-05-29 16:12 → 2015-06-01 14:36 (+3d) | 2015-06-02 12:00 → 2015-06-03 15:24 (+1d) | 1.6d → 2.1d | -18.6d → -27.5d |  |  |
| 133 | Achievement module | 2015-05-29 16:12 → 2015-06-01 14:36 (+3d) | 2015-06-01 09:36 → 2015-06-01 17:00 |  | -18.6d → -27.5d |  |  |
| 134 | Collection module | 2015-06-01 09:36 → 2015-06-02 08:00 (+1d) | 2015-06-01 12:00 → 2015-06-02 10:24 (+1d) |  | -18.6d → -27.5d |  |  |
| 135 | Mission module | 2015-06-01 13:00 → 2015-06-02 10:24 (+1d) | 2015-06-01 15:24 → 2015-06-02 13:48 (+1d) |  | -18.6d → -27.5d |  |  |
| 136 | Statistic module | 2015-06-01 15:24 → 2015-06-02 13:48 (+1d) | 2015-06-02 08:48 → 2015-06-03 11:12 (+1d) |  | -18.6d → -27.5d |  |  |
| 137 | Rank module | 2015-06-02 08:48 → 2015-06-03 11:12 (+1d) | 2015-06-02 09:36 → 2015-06-03 12:00 (+1d) |  | -18.6d → -27.5d |  |  |
| 138 | Scan QR code module | 2015-06-02 09:36 → 2015-06-03 13:00 (+1d) | 2015-06-02 12:00 → 2015-06-03 15:24 (+1d) |  | -18.6d → -27.5d |  |  |
| 139 | **Search module** | 2015-05-29 16:12 → 2015-06-01 14:36 (+3d) | 2015-06-01 12:00 → 2015-06-02 10:24 (+1d) |  | -18.1d → -26.5d |  |  |
| 140 | Search bus module | 2015-05-29 16:12 → 2015-06-01 14:36 (+3d) | 2015-05-29 17:00 → 2015-06-01 15:24 (+3d) |  | -18.1d → -26.5d |  |  |
| 141 | Search route module | 2015-06-01 08:00 → 2015-06-01 15:24 | 2015-06-01 10:24 → 2015-06-02 08:48 (+1d) |  | -18.1d → -26.5d |  |  |
| 142 | Search Favorite bus module | 2015-06-01 10:24 → 2015-06-02 08:48 (+1d) | 2015-06-01 11:12 → 2015-06-02 09:36 (+1d) |  | -18.1d → -26.5d |  |  |
| 143 | Search Favorite place module | 2015-06-01 11:12 → 2015-06-02 09:36 (+1d) | 2015-06-01 12:00 → 2015-06-02 10:24 (+1d) |  | -18.1d → -26.5d |  |  |
| 144 | Setting module | 2015-06-01 13:00 → 2015-06-02 10:24 (+1d) | 2015-06-01 17:00 → 2015-06-02 15:24 (+1d) |  | -18.1d → -26.5d |  |  |

| ID | Task | Start | Finish | Duration | Total float | Predecessors | Other |
| --- | --- | --- | --- | --- | --- | --- | --- |
| 145 | Review Detailed Design with checklist | 2015-06-04 16:12 → 2015-06-05 16:12 (+1d) | 2015-06-08 09:36 → 2015-06-18 14:36 (+10d) |  | -21d → -29.6d | 102, 112, Forgot password module, 120, 131, 138, 144 → 102, 112, 120, 131, 138, 144 |  |
| 146 | Update Detailed Design | 2015-06-08 09:36 → 2015-06-18 14:36 (+10d) | 2015-06-09 17:00 → 2015-06-22 13:48 (+13d) | 1.4d → 1.9d | -21d → -29.6d |  |  |
| 147 | Complete Detailed Design version 1.0 | 2015-06-01 17:00 → 2015-06-02 15:24 (+1d) | 2015-06-01 17:00 → 2015-06-02 15:24 (+1d) |  | -18d → -23d |  |  |
| 148 | **Database design** | 2015-05-29 16:12 → 2015-06-01 14:36 (+3d) | 2015-06-02 14:36 → 2015-06-03 14:36 (+1d) | 1.8d → 2d | -21.5d → -29.7d |  |  |
| 149 | Create Databse Design draft version | 2015-05-29 16:12 → 2015-06-01 14:36 (+3d) | 2015-06-01 16:12 → 2015-06-02 14:36 (+1d) |  | -21.5d → -29.7d |  |  |
| 150 | Review Database Design with checklist | 2015-06-01 16:12 → 2015-06-02 14:36 (+1d) | 2015-06-02 11:12 → 2015-06-03 11:12 (+1d) |  | -21.5d → -29.7d |  |  |
| 151 | Update Database Design | 2015-06-02 11:12 → 2015-06-03 11:12 (+1d) | 2015-06-02 14:36 → 2015-06-03 14:36 (+1d) |  | -21.5d → -29.7d |  |  |
| 152 | Complete Database Design version 1.0 | 2015-06-02 14:36 → 2015-06-03 14:36 (+1d) | 2015-06-02 14:36 → 2015-06-03 14:36 (+1d) |  | -21.5d → -29.7d |  |  |
| 153 | **Class design** | 2015-06-02 14:36 → 2015-06-03 14:36 (+1d) | 2015-06-05 12:00 → 2015-06-11 12:00 (+6d) | 2.8d → 5.8d | -21.5d → -29.7d |  |  |
| 154 | Define class/component | 2015-06-02 14:36 → 2015-06-03 14:36 (+1d) | 2015-06-04 14:36 → 2015-06-05 14:36 (+1d) |  | -21.5d → -29.7d |  |  |
| 155 | Review Class Design with checklist | 2015-06-04 14:36 → 2015-06-05 14:36 (+1d) | 2015-06-05 09:36 → 2015-06-11 09:36 (+6d) |  | -21.5d → -29.7d |  |  |
| 156 | Update Class Design | 2015-06-05 09:36 → 2015-06-11 09:36 (+6d) | 2015-06-05 12:00 → 2015-06-11 12:00 (+6d) |  | -21.5d → -29.7d |  |  |
| 157 | Complete Class Design version 1.0 | 2015-06-05 12:00 → 2015-06-11 12:00 (+6d) | 2015-06-05 12:00 → 2015-06-11 12:00 (+6d) |  | -21.5d → -29.7d |  |  |
| 159 | **Progress Report 2** | 2015-06-05 13:00 → 2015-06-11 13:00 (+6d) | 2015-06-05 17:00 → 2015-06-11 17:00 (+6d) |  | -21.5d → -29.7d |  |  |
| 160 | Develop Progress Report 2 | 2015-06-05 13:00 → 2015-06-11 13:00 (+6d) | 2015-06-05 15:24 → 2015-06-11 15:24 (+6d) |  | -21.5d → -29.7d |  |  |
| 161 | Review Progress Report 2 | 2015-06-05 15:24 → 2015-06-11 15:24 (+6d) | 2015-06-05 16:12 → 2015-06-11 16:12 (+6d) |  | -21.5d → -29.7d |  |  |
| 162 | Update Progress Report 2 | 2015-06-05 16:12 → 2015-06-11 16:12 (+6d) | 2015-06-05 17:00 → 2015-06-11 17:00 (+6d) |  | -21.5d → -29.7d |  |  |
| 163 | Complete Progress Report 2 | 2015-06-05 17:00 → 2015-06-11 17:00 (+6d) | 2015-06-05 17:00 → 2015-06-11 17:00 (+6d) |  | -21.5d → -29.7d |  |  |
| 164 | Q & A Management (update) | 2015-05-28 11:12 → 2015-05-29 09:36 (+1d) | 2015-05-28 16:12 → 2015-05-29 14:36 (+1d) |  | -15.4d → -20.4d |  |  |
| 165 | **Report no.2** | 2015-06-08 08:00 → 2015-06-12 08:00 (+4d) | 2015-06-10 12:00 → 2015-06-22 14:36 (+12d) | 2.5d → 6.7d | -21.5d → -29.7d |  |  |
| 166 | Develop Report no.2 (draft version) | 2015-06-08 08:00 → 2015-06-12 08:00 (+4d) | 2015-06-08 08:48 → 2015-06-12 08:48 (+4d) |  | -21.5d → -29.7d |  |  |
| 167 | Review Report no.2 (draft version) | 2015-06-08 08:48 → 2015-06-12 08:48 (+4d) | 2015-06-08 13:48 → 2015-06-12 13:48 (+4d) |  | -21.5d → -29.7d |  |  |
| 168 | Update Report no.2 (draft version) | 2015-06-08 13:48 → 2015-06-12 13:48 (+4d) | 2015-06-08 17:00 → 2015-06-17 13:48 (+9d) | 0.4d → 0.8d | -21.5d → -29.7d |  |  |
| 169 | Submit Report no.2 (first version) | 2015-06-08 17:00 → 2015-06-17 13:48 (+9d) | 2015-06-08 17:00 → 2015-06-17 13:48 (+9d) |  | -21.5d → -29.7d |  |  |
| 170 | Revise after got comments for Report no.2 | 2015-06-09 08:00 → 2015-06-17 13:48 (+8d) | 2015-06-10 12:00 → 2015-06-22 14:36 (+12d) | 1.4d → 1.5d | -21.5d → -29.7d |  |  |
| 171 | Submit Report no.2 (final version) | 2015-06-10 12:00 → 2015-06-22 14:36 (+12d) | 2015-06-10 12:00 → 2015-06-22 14:36 (+12d) |  | -21.5d → -29.7d |  |  |
| 172 | **Coding & Unit Testing** | 2015-05-11 08:00 → 2015-06-11 13:00 (+31d) | 2015-05-12 09:36 → 2015-06-12 12:00 (+31d) | 1.2d → 1d | -0.2d → -24.5d |  |  |
| 173 | **Bus Driver Module** | 2015-05-11 08:00 → 2015-06-11 13:00 (+31d) | 2015-05-11 17:00 → 2015-06-12 12:00 (+32d) |  | 0d → -24.5d |  |  |
| 174 | Send bus info module | 2015-05-11 08:00 → 2015-06-11 13:00 (+31d) | 2015-05-11 17:00 → 2015-06-12 12:00 (+32d) |  | 0d → -24.5d | none → 108, 147, 152, 157 | resources none → AnhTT |
| 175 | **Testing** | 2015-05-11 08:00 → 2015-06-01 14:36 (+21d) | 2015-06-04 09:36 → 2015-06-23 12:00 (+19d) | 18.2d? → 15.8d | -17.2d → -31d |  |  |
| 176 | **Test review checklist** | 2015-05-11 08:00 → 2015-06-01 14:36 (+21d) | 2015-06-04 09:36 → 2015-06-23 12:00 (+19d) | 18.2d → 15.8d | -17.2d → -31d |  |  |
| 177 | **Test plan review checklist** | 2015-05-11 08:00 → 2015-06-01 14:36 (+21d) | 2015-06-03 17:00 → 2015-06-02 10:24 (-1d) | 18d → 0.6d | -17d → -29.1d |  |  |
| 178 | Develop test plan review checklist | 2015-05-13 11:12 → 2015-06-01 14:36 (+19d) | 2015-05-13 14:36 → 2015-06-01 17:00 (+19d) |  | -1.7d → -29.1d | none → 108 |  |
| 179 | Review test plan review checklist | 2015-06-03 15:24 → 2015-06-02 08:00 (-1d) | 2015-06-03 17:00 → 2015-06-02 09:36 (-1d) |  | -17d → -29.1d | none → 178 |  |
| 180 | Update test plan review checklist | 2015-05-19 16:12 → 2015-06-02 09:36 (+14d) | 2015-05-19 17:00 → 2015-06-02 10:24 (+14d) |  | -6d → -29.1d | none → 179 |  |
| 181 | Complete test plan review checklist | 2015-05-11 08:00 → 2015-06-02 10:24 (+22d) | 2015-05-11 08:00 → 2015-06-02 10:24 (+22d) |  | 1d → -29.1d | none → 180 |  |
| 182 | **Test case review checklist** | 2015-05-11 08:00 → 2015-06-22 09:36 (+42d) | 2015-06-04 09:36 → 2015-06-23 12:00 (+19d) | 18.2d → 1.3d | -17.2d → -31d |  |  |
| 183 | Develop test case review checklist | 2015-05-25 08:00 → 2015-06-22 09:36 (+28d) | 2015-05-28 17:00 → 2015-06-22 14:36 (+25d) |  | -13d → -31d | none → 108 |  |
| 184 | Review test case review checklist | 2015-05-13 14:36 → 2015-06-22 14:36 (+40d) | 2015-05-20 08:48 → 2015-06-22 17:00 (+33d) |  | -6.1d → -31d | none → 183 |  |
| 185 | Update test case review checklist | 2015-06-04 08:00 → 2015-06-23 10:24 (+19d) | 2015-06-04 09:36 → 2015-06-23 12:00 (+19d) |  | -17.2d → -31d | none → 184 |  |
| 186 | Complete test case review checklist | 2015-05-11 08:00 → 2015-06-23 12:00 (+43d) | 2015-05-11 08:00 → 2015-06-23 12:00 (+43d) |  | 1d → -31d | none → 185 |  |
| 187 | Complete review checklist | 2015-05-11 08:00 → 2015-06-23 12:00 (+43d) | 2015-05-11 08:00 → 2015-06-23 12:00 (+43d) |  | 1d → -31d |  |  |
| 188 | **Test plan** | 2015-05-11 08:00 → 2015-06-01 14:36 (+21d) | 2015-06-03 15:24 → 2015-06-03 14:36 | 17.8d → 2d | -16.8d → -29.7d |  |  |
| 189 | Develop test plan | 2015-05-20 13:48 → 2015-06-01 14:36 (+12d) | 2015-05-22 17:00 → 2015-06-02 16:12 (+11d) |  | -9d → -29.7d | none → 108 |  |
| 190 | Review test plan | 2015-05-20 08:00 → 2015-06-02 16:12 (+13d) | 2015-05-20 12:00 → 2015-06-03 11:12 (+14d) |  | -6.5d → -29.7d | none → 189, 181 |  |
| 191 | Update test plan | 2015-06-03 13:00 → 2015-06-03 11:12 | 2015-06-03 15:24 → 2015-06-03 14:36 |  | -16.8d → -29.7d | none → 190 |  |
| 192 | Complete test plan | 2015-05-11 08:00 → 2015-06-03 14:36 (+23d) | 2015-05-11 08:00 → 2015-06-03 14:36 (+23d) |  | 1d → -29.7d | none → 191 |  |
| 193 | **Test case** | 2015-05-11 08:00 → 2015-06-03 14:36 (+23d) | 2015-05-11 17:00 → 2015-06-22 09:36 (+42d) | 1d? → 12.5d | 0d → -29.7d |  |  |
| 194 | **Unit test** | 2015-05-11 08:00 → 2015-06-03 14:36 (+23d) | 2015-05-11 17:00 → 2015-06-09 14:36 (+29d) | 1d? → 4d | 0d → -29.7d |  |  |
| 195 | **Develop unit test case** | 2015-05-11 08:00 → 2015-06-03 14:36 (+23d) | 2015-05-11 17:00 → 2015-06-05 14:36 (+25d) | 1d? → 2d | 0d → -29.7d |  |  |
| 196 | Bus driver module | 2015-05-11 08:00 → 2015-06-03 14:36 (+23d) | 2015-05-11 17:00 → 2015-06-04 09:36 (+24d) | 1d → 0.5d | 0d → -29.7d | none → 192 | resources none → MaiTTT |
| 197 | Sync module | 2015-05-11 08:00 → 2015-06-04 09:36 (+24d) | 2015-05-11 17:00 → 2015-06-04 14:36 (+24d) | 1d? → 0.5d | 0d → -29.7d | none → 196 | resources none → MaiTTT |
| 198 | Bus module | 2015-05-11 08:00 → 2015-06-04 14:36 (+24d) | 2015-05-11 17:00 → 2015-06-05 14:36 (+25d) |  | 0d → -29.7d | none → 197 | resources none → MaiTTT |
| 199 | Shigeki module | 2015-05-11 08:00 → 2015-06-03 14:36 (+23d) | 2015-05-11 17:00 → 2015-06-04 12:00 (+24d) | 1d → 0.8d | 0d → -29.7d | none → 192 | resources none → PhuongBB |
| 200 | Search module | 2015-05-11 08:00 → 2015-06-04 13:00 (+24d) | 2015-05-11 17:00 → 2015-06-04 17:00 (+24d) | 1d → 0.5d | 0d → -29.7d | none → 199 | resources none → PhuongBB |
| 201 | Setting module | 2015-05-11 08:00 → 2015-06-05 08:00 (+25d) | 2015-05-11 17:00 → 2015-06-05 14:36 (+25d) | 1d? → 0.7d | 0d → -29.7d | none → 200 | resources none → PhuongBB |
| 202 | Review unit test case | 2015-05-11 08:00 → 2015-06-05 14:36 (+25d) | 2015-05-11 17:00 → 2015-06-08 14:36 (+28d) |  | 0d → -29.7d | none → 198, 201 | resources none → MaiTTT; PhuongBB |
| 203 | Update unit test case | 2015-05-11 08:00 → 2015-06-08 14:36 (+28d) | 2015-05-11 17:00 → 2015-06-09 14:36 (+29d) |  | 0d → -29.7d | none → 202 | resources none → MaiTTT; PhuongBB |
| 204 | Complete unit test case | 2015-05-11 08:00 → 2015-06-09 14:36 (+29d) | 2015-05-11 08:00 → 2015-06-09 14:36 (+29d) |  | 1d → -29.7d | none → 203 | resources none → MaiTTT; PhuongBB |
| 205 | **Integration test** | 2015-05-11 08:00 → 2015-06-09 14:36 (+29d) | 2015-05-11 17:00 → 2015-06-16 09:36 (+36d) | 1d → 4.5d | 0d → -29.7d |  |  |
| 206 | Develop integration test case | 2015-05-11 08:00 → 2015-06-09 14:36 (+29d) | 2015-05-11 17:00 → 2015-06-10 14:36 (+30d) |  | 0d → -29.7d | none → 204 | resources none → MaiTTT; PhuongBB |
| 207 | Review integration test case | 2015-05-11 08:00 → 2015-06-10 14:36 (+30d) | 2015-05-11 17:00 → 2015-06-15 09:36 (+35d) | 1d → 2d | 0d → -29.7d | none → 206 | resources none → MaiTTT; PhuongBB |
| 208 | Update integration test case | 2015-05-11 08:00 → 2015-06-15 09:36 (+35d) | 2015-05-11 17:00 → 2015-06-16 09:36 (+36d) |  | 0d → -29.7d | none → 207 | resources none → MaiTTT; PhuongBB |
| 209 | Complete integration test case | 2015-05-11 08:00 → 2015-06-16 09:36 (+36d) | 2015-05-11 08:00 → 2015-06-16 09:36 (+36d) |  | 1d → -29.7d | none → 208 | resources none → MaiTTT; PhuongBB |
| 210 | **System test** | 2015-05-11 08:00 → 2015-06-16 09:36 (+36d) | 2015-05-11 17:00 → 2015-06-22 09:36 (+42d) | 1d → 4d | 0d → -29.7d |  |  |
| 211 | Develop system test case | 2015-05-11 08:00 → 2015-06-16 09:36 (+36d) | 2015-05-11 17:00 → 2015-06-17 09:36 (+37d) |  | 0d → -29.7d | none → 209 | resources none → MaiTTT; PhuongBB |
| 212 | Review system test case | 2015-05-11 08:00 → 2015-06-17 09:36 (+37d) | 2015-05-11 17:00 → 2015-06-18 13:48 (+38d) | 1d → 1.4d | 0d → -29.7d | none → 211 | resources none → MaiTTT; PhuongBB |
| 213 | Update system test case | 2015-05-11 08:00 → 2015-06-18 13:48 (+38d) | 2015-05-11 17:00 → 2015-06-22 09:36 (+42d) | 1d → 1.6d | 0d → -29.7d | none → 212 | resources none → MaiTTT; PhuongBB |
| 214 | Complete system test case | 2015-05-11 08:00 → 2015-06-22 09:36 (+42d) | 2015-05-11 08:00 → 2015-06-22 09:36 (+42d) |  | 1d → -29.7d | none → 213 | resources none → MaiTTT; PhuongBB |
| 215 | **Progress report 3** | 2015-05-11 08:00 → 2015-06-23 13:00 (+43d) | 2015-05-11 17:00 → 2015-06-23 17:00 (+43d) | 1d → 0.5d | 0d → -31d |  |  |

| ID | Task | Start | Finish | Duration | Total float | Other |
| --- | --- | --- | --- | --- | --- | --- |
| 220 | Q & A Management (update) | 2015-05-29 13:48 → 2015-05-21 10:24 (-8d) | 2015-06-04 09:36 → 2015-05-22 08:48 (-13d) |  | -17.2d → -8.1d |  |
| 221 | **Report no.3** |  | 2015-05-20 09:36 → 2015-05-26 09:36 (+6d) | 7.2d → 11.2d | -6.2d → -10.2d |  |
| 222 | Develop Report no.3 (draft version) | 2015-05-20 08:00 → 2015-05-26 08:00 (+6d) | 2015-05-20 09:36 → 2015-05-26 09:36 (+6d) |  | -6.2d → -10.2d |  |
| 228 | **Construction** |  | 2015-05-11 17:00 → 2015-06-15 12:00 (+35d) | 1d? → 25.5d? | 0d → -24.5d |  |
| 229 | **Code Review checklist** |  | 2015-05-11 17:00 → 2015-05-12 09:36 (+1d) | 1d → 1.2d | 0d → -0.2d |  |
| 230 | Develop review checklist | 2015-05-11 08:00 → 2015-05-11 09:36 |  | 1d → 0.8d |  | resources none → MaiTTT; PhuongBB |
| 231 | Review review checklist | 2015-05-11 08:00 → 2015-05-11 14:36 | 2015-05-11 17:00 → 2015-05-12 09:36 (+1d) | 1d → 0.4d | 0d → -0.2d | resources none → MaiTTT; PhuongBB |
| 232 | Update review checklist | 2015-05-11 08:00 → 2015-05-11 16:12 | 2015-05-11 17:00 → 2015-05-12 08:48 (+1d) | 1d → 0.2d | 0d → -0.1d | resources none → MaiTTT; PhuongBB |
| 233 | Complete review checklist |  | 2015-05-11 17:00 → 2015-05-11 08:00 | 1d → 0d | 0d → 1d | resources none → MaiTTT; PhuongBB |
| 234 | **Coding & Unit testing (continue)** |  | 2015-05-11 17:00 → 2015-06-15 12:00 (+35d) | 1d → 25.5d? | 0d → -24.5d |  |
| 235 | **Bus Rider Module** |  | 2015-05-11 17:00 → 2015-06-15 12:00 (+35d) | 1d → 25.5d? | 0d → -24.5d |  |
| 236 | **Sync module** |  | 2015-05-11 17:00 → 2015-06-15 12:00 (+35d) | 1d → 25.5d? | 0d → -24.5d |  |

## Version 4 (saved 2015-05-29, file BUIN_Project_Schedule_v1.01_EN.mpp)

Note of the change: update plan

Last finish 2015-06-24 → 2015-08-05 (+42d).

Added:

| ID | Task | Duration | Start | Finish | Predecessors |
| --- | --- | --- | --- | --- | --- |
| 56 | **Common module** | 1d | 2015-05-11 08:00 | 2015-05-11 17:00 |  |
| 57 | Turn on/off Snooze mode | 0.5d | 2015-05-11 08:00 | 2015-05-11 12:00 |  |
| 58 | View notification | 0.1d | 2015-05-11 08:00 | 2015-05-11 08:48 |  |
| 59 | Turn on/off Notification | 0.1d | 2015-05-11 08:00 | 2015-05-11 08:48 |  |
| 60 | Change app setting | 1d | 2015-05-11 08:00 | 2015-05-11 17:00 |  |
| 61 | View dashboard | 1d | 2015-05-11 08:00 | 2015-05-11 17:00 |  |
| 78 | View path detail | 0.2d | 2015-05-11 08:00 | 2015-05-11 09:36 |  |
| 79 | View direction | 0.2d | 2015-05-11 08:00 | 2015-05-11 09:36 |  |
| 80 | **Reminder module** | 0.2d | 2015-05-11 08:00 | 2015-05-11 09:36 |  |
| 81 | View bus reminder | 0.2d | 2015-05-11 08:00 | 2015-05-11 09:36 |  |
| 82 | Add reminder | 0.1d | 2015-05-11 08:00 | 2015-05-11 08:48 |  |
| 83 | Edit reminder | 0.1d | 2015-05-11 08:00 | 2015-05-11 08:48 |  |
| 84 | Delete reminder | 0.1d | 2015-05-11 08:00 | 2015-05-11 08:48 |  |
| 85 | Suspend/Unsuspend all reminder | 0.2d | 2015-05-11 08:00 | 2015-05-11 09:36 |  |
| 86 | Suspend/Unsuspend a chosen reminder | 0.2d | 2015-05-11 08:00 | 2015-05-11 09:36 |  |
| 87 | **Track module** | 0.4d | 2015-05-11 08:00 | 2015-05-11 11:12 |  |
| 88 | Tracking | 0.4d | 2015-05-11 08:00 | 2015-05-11 11:12 |  |
| 89 | Cancel track | 0.1d | 2015-05-11 08:00 | 2015-05-11 08:48 |  |
| 90 | **Favorite module** | 0.2d | 2015-05-11 08:00 | 2015-05-11 09:36 |  |
| 91 | View favorite places | 0.2d | 2015-05-11 08:00 | 2015-05-11 09:36 |  |
| 92 | Add favorite places | 0.1d | 2015-05-11 08:00 | 2015-05-11 08:48 |  |
| 93 | Edit favorite places | 0.2d | 2015-05-11 08:00 | 2015-05-11 09:36 |  |
| 94 | Delete favorite places | 0.1d | 2015-05-11 08:00 | 2015-05-11 08:48 |  |
| 95 | Search favorite places | 0.1d | 2015-05-11 08:00 | 2015-05-11 08:48 |  |
| 96 | View favorite buses | 0.2d | 2015-05-11 08:00 | 2015-05-11 09:36 |  |
| 97 | Add favorite buses | 0.1d | 2015-05-11 08:00 | 2015-05-11 08:48 |  |
| 98 | Edit favorite buses | 0.2d | 2015-05-11 08:00 | 2015-05-11 09:36 |  |
| 99 | Delete favorite buses | 0.1d | 2015-05-11 08:00 | 2015-05-11 08:48 |  |
| 100 | Search favorite buses | 0.1d | 2015-05-11 08:00 | 2015-05-11 08:48 |  |
| 103 | Share Achievement | 0.3d | 2015-05-11 08:00 | 2015-05-11 10:24 |  |
| 105 | Share Collection | 0.3d | 2015-05-11 08:00 | 2015-05-11 10:24 |  |
| 107 | Share Mission | 0.3d | 2015-05-11 08:00 | 2015-05-11 10:24 |  |
| 284 | Develop Progress Report 4 | 0.3d | 2015-06-19 08:00 | 2015-06-19 10:24 | 246, 281 |
| 285 | Review Progress Report 4 | 0.1d | 2015-06-19 10:24 | 2015-06-19 11:12 | 284 |
| 286 | Update Progress Report 4 | 0.1d | 2015-06-19 11:12 | 2015-06-19 12:00 | 285 |
| 287 | Complete Progress Report 4 | 0d | 2015-06-19 12:00 | 2015-06-19 12:00 | 286 |
| 336 | Develop Progress Report 5 | 0.3d | 2015-07-21 13:48 | 2015-07-21 16:12 | 334 |
| 337 | Review Progress Report 5 | 0.1d | 2015-07-21 16:12 | 2015-07-21 17:00 | 336 |
| 338 | Update Progress Report 5 | 0.1d | 2015-07-22 08:00 | 2015-07-22 08:48 | 337 |
| 339 | Complete Progress Report 5 | 0d | 2015-07-22 08:48 | 2015-07-22 08:48 | 338 |

Removed: 48 Review Report no.1 (draft version); 49 Update Report no.1 (draft version); 50 Submit Report no.1 (first version); 51 Revise after got comments for Report no.1; 66 About module; 74 Remind module; 85 Search module; 86 Search bus module; 87 Search route module; 88 Search Favorite bus module; 164 Q & A Management (update); 165 Report no.2; 166 Develop Report no.2 (draft version); 167 Review Report no.2 (draft version); 168 Update Report no.2 (draft version); 169 Submit Report no.2 (first version); 170 Revise after got comments for Report no.2; 281 Account module; 295 Account module

Changed:

| ID | Task | Start | Finish | Duration | Total float | Predecessors | Other |
| --- | --- | --- | --- | --- | --- | --- | --- |
| 1 | **BL** |  | 2015-05-11 17:00 → 2015-08-05 14:36 (+86d) | 1d → 57.7d | none → 0d |  |  |
| 2 | **Initiation** |  | 2015-05-22 08:48 → 2015-05-25 09:36 (+3d) | 9.1d → 10.2d | -33d → 47.5d |  |  |
| 3 | System feasible study |  | 2015-05-11 09:36 → 2015-05-11 10:24 | 0.2d → 0.3d | -33d → 47.5d |  | resources AnhTT; CuongNLT; MaiTTT; NamNT; PhuongBB; SangNV → NamNT; MaiTTT; PhuongBB; CuongNLT; AnhTT |
| 4 | Define business situation | 2015-05-11 09:36 → 2015-05-11 10:24 | 2015-05-12 10:24 → 2015-05-12 09:36 | 0.6d → 0.8d | -33d → 47.5d |  | resources CuongNLT; NamNT; AnhTT; MaiTTT; PhuongBB → NamNT; MaiTTT; PhuongBB; CuongNLT; AnhTT |
| 5 | Develop project idea | 2015-05-12 10:24 → 2015-05-12 09:36 | 2015-05-13 10:24 → 2015-05-13 12:00 | 1d → 1.3d | -33d → 47.5d |  | resources CuongNLT; MaiTTT; NamNT; AnhTT; PhuongBB → NamNT; MaiTTT; PhuongBB; CuongNLT; AnhTT |
| 6 | Define project and system scope | 2015-05-13 10:24 → 2015-05-13 13:00 | 2015-05-13 12:00 → 2015-05-13 17:00 | 0.2d → 0.5d | -33d → 47.5d |  | resources CuongNLT; MaiTTT; NamNT; AnhTT; PhuongBB → NamNT; MaiTTT; PhuongBB; CuongNLT; AnhTT |
| 7 | Prepare project | 2015-05-13 13:00 → 2015-05-14 08:00 (+1d) | 2015-05-13 17:00 → 2015-05-14 17:00 (+1d) | 0.5d → 1d | -33d → 47.5d |  | resources AnhTT; CuongNLT; MaiTTT; NamNT; PhuongBB → NamNT; MaiTTT; PhuongBB; CuongNLT; AnhTT |
| 8 | Kick-off meeting | 2015-05-14 08:00 → 2015-05-15 08:00 (+1d) | 2015-05-14 09:36 → 2015-05-15 11:12 (+1d) | 0.2d → 0.4d | -33d → 47.5d |  | resources AnhTT; CuongNLT; MaiTTT; NamNT; PhuongBB; SangNV → NamNT; MaiTTT; PhuongBB; CuongNLT; AnhTT |
| 9 | Q & A Management | 2015-05-14 09:36 → 2015-05-15 11:12 (+1d) | 2015-05-14 14:36 → 2015-05-15 16:12 (+1d) |  | -33d → 47.8d |  | resources MaiTTT; NamNT → MaiTTT |
| 10 | **Technologies** | 2015-05-14 14:36 → 2015-05-15 11:12 (+1d) | 2015-05-21 12:00 → 2015-05-25 09:36 (+4d) | 4.8d → 5.8d | -33d → 47.5d |  |  |
| 11 | Research development technologies | 2015-05-14 14:36 → 2015-05-15 11:12 (+1d) | 2015-05-15 14:36 → 2015-05-19 10:24 (+4d) | 1d → 1.8d | -33d → 47.5d | 9 → 8 | resources AnhTT; MaiTTT; CuongNLT → CuongNLT; NamNT; AnhTT |
| 12 | Install and configure Eclipse IDE and Android SDK | 2015-05-15 14:36 → 2015-05-19 10:24 (+4d) | 2015-05-18 09:36 → 2015-05-19 15:24 (+1d) |  | -31.5d → 48.3d |  | resources AnhTT → CuongNLT; NamNT; AnhTT |
| 13 | Training Java, Android SDK & Eclipse IDE | 2015-05-18 09:36 → 2015-05-19 15:24 (+1d) | 2015-05-21 12:00 → 2015-05-22 11:12 (+1d) | 2d → 2.2d | -31.5d → 48.3d |  | resources AnhTT → CuongNLT; AnhTT |
| 14 | Install and configure Visual Studio, SQL Server | 2015-05-18 13:48 → 2015-05-19 11:12 (+1d) | 2015-05-19 09:36 → 2015-05-21 10:24 (+2d) | 0.5d → 0.9d | -31d → 47.5d |  | resources MaiTTT → NamNT; MaiTTT |
| 15 | Study web service using .NET & SQL Server | 2015-05-19 11:12 → 2015-05-21 10:24 (+2d) | 2015-05-20 17:00 → 2015-05-25 09:36 (+5d) | 1d → 1.5d | -31d → 47.5d |  |  |
| 16 | **SRS/PP/Concept design Review checklist** | 2015-05-14 14:36 → 2015-05-15 16:12 (+1d) | 2015-05-19 10:24 → 2015-05-20 11:12 (+1d) | 2.6d → 2.5d | -30.4d → 47.8d |  |  |
| 17 | Develop review checklist | 2015-05-14 14:36 → 2015-05-15 16:12 (+1d) | 2015-05-18 17:00 → 2015-05-19 16:12 (+1d) | 1.5d → 2d | -30.4d → 47.8d |  |  |
| 18 | Review review checklist | 2015-05-19 08:00 → 2015-05-19 16:12 | 2015-05-19 08:48 → 2015-05-20 08:48 (+1d) | 0.1d → 0.2d | -30.4d → 47.8d |  |  |
| 19 | Update review checklist | 2015-05-19 08:48 → 2015-05-20 08:48 (+1d) | 2015-05-19 10:24 → 2015-05-20 11:12 (+1d) | 0.2d → 0.3d | -30.4d → 47.8d |  |  |
| 20 | Complete review checklist | 2015-05-19 10:24 → 2015-05-20 11:12 (+1d) | 2015-05-19 10:24 → 2015-05-20 11:12 (+1d) |  | -30.4d → 47.8d |  |  |
| 21 | **Requirements** | 2015-05-14 14:36 → 2015-05-15 11:12 (+1d) | 2015-05-21 14:36 → 2015-05-22 08:48 (+1d) | 5d → 4.7d | -31.7d → 47.8d |  |  |
| 22 | **User Requirements Specification** | 2015-05-14 14:36 → 2015-05-15 11:12 (+1d) | 2015-05-20 13:48 → 2015-05-21 11:12 (+1d) | 3.9d → 4d | -31.7d → 47.8d |  |  |
| 23 | Collect business requirements and processes | 2015-05-14 14:36 → 2015-05-15 11:12 (+1d) | 2015-05-15 14:36 → 2015-05-15 16:12 | 1d → 0.5d | -31.7d → 47.8d | 9 → 8 | resources CuongNLT; PhuongBB → PhuongBB |
| 24 | Create draft requirements | 2015-05-15 14:36 → 2015-05-15 16:12 | 2015-05-18 14:36 → 2015-05-18 11:12 | 1d → 0.5d | -31.7d → 47.8d |  | resources CuongNLT; PhuongBB → PhuongBB |
| 25 | Complete draft requirements | 2015-05-18 14:36 → 2015-05-18 11:12 | 2015-05-19 09:36 → 2015-05-18 11:12 (-1d) | 0.5d → 0d | -31.7d → 47.8d |  | resources CuongNLT; PhuongBB; NamNT → NamNT |
| 26 | Develop main function and processes | 2015-05-19 09:36 → 2015-05-20 11:12 (+1d) | 2015-05-20 13:48 → 2015-05-21 11:12 (+1d) | 1.3d → 1d | -31.7d → 48d |  | resources CuongNLT; MaiTTT; PhuongBB; AnhTT → PhuongBB |
| 27 | Review User Requirement Specification with checklist | 2015-05-20 13:48 → 2015-05-21 11:12 (+1d) | 2015-05-20 15:24 → 2015-05-21 14:36 (+1d) | 0.2d → 0.3d | -31.7d → 48d |  | resources NamNT; MaiTTT; PhuongBB → MaiTTT |
| 28 | Update User Requirement Specification | 2015-05-20 15:24 → 2015-05-21 14:36 (+1d) | 2015-05-21 14:36 → 2015-05-22 08:48 (+1d) | 0.3d → 0.4d | -31.7d → 48d |  | resources CuongNLT; MaiTTT; PhuongBB; AnhTT; NamNT → PhuongBB |
| 29 | Complete User Requirement Specification | 2015-05-21 14:36 → 2015-05-22 08:48 (+1d) | 2015-05-21 14:36 → 2015-05-22 08:48 (+1d) |  | -31.7d → 48d |  |  |
| 30 | **Concept design** | 2015-05-19 09:36 → 2015-05-18 11:12 (-1d) | 2015-05-21 09:36 → 2015-05-22 16:12 (+1d) | 2d → 4.5d | -31.2d → 47.8d |  |  |
| 31 | Create draft concept design | 2015-05-19 09:36 → 2015-05-18 11:12 (-1d) | 2015-05-20 09:36 → 2015-05-20 11:12 | 1d → 1.4d | -31.2d → 47.8d |  | resources CuongNLT → CuongNLT; AnhTT |
| 32 | Review concept design with checklist | 2015-05-20 09:36 → 2015-05-20 11:12 | 2015-05-20 14:36 → 2015-05-20 16:12 |  | -31.2d → 47.8d |  |  |
| 33 | Update concept design | 2015-05-20 14:36 → 2015-05-22 11:12 (+2d) | 2015-05-21 09:36 → 2015-05-22 16:12 (+1d) |  | -31.2d → 47.8d |  |  |
| 34 | Complete concept design | 2015-05-21 09:36 → 2015-05-22 16:12 (+1d) | 2015-05-21 09:36 → 2015-05-22 16:12 (+1d) |  | -31.2d → 47.8d |  | resources CuongNLT → NamNT |
| 35 | **Project plan** | 2015-05-14 14:36 → 2015-05-15 11:12 (+1d) | 2015-05-21 10:24 → 2015-05-22 16:12 (+1d) | 4.6d → 5.5d | -31.4d → 47.8d |  |  |
| 36 | Develop project definition | 2015-05-14 14:36 → 2015-05-15 11:12 (+1d) | 2015-05-15 09:36 → 2015-05-15 16:12 |  | -31.4d → 48d |  | resources NamNT → CuongNLT |
| 37 | Develop Work Breakdown Structure | 2015-05-15 09:36 → 2015-05-15 16:12 | 2015-05-15 16:12 → 2015-05-18 17:00 (+3d) |  | -31.4d → 48d |  |  |
| 38 | Create Project Schedule | 2015-05-15 16:12 → 2015-05-19 13:00 (+4d) | 2015-05-18 13:48 → 2015-05-20 17:00 (+2d) | 0.7d → 1.5d | -31.4d → 47.8d |  |  |
| 39 | Create Configuration Management Plan version 1.0 | 2015-05-18 13:48 → 2015-05-21 08:00 (+3d) | 2015-05-19 11:12 → 2015-05-21 12:00 (+2d) | 0.3d → 0.5d | -31.4d → 47.8d |  |  |
| 40 | Create Project Plan (first version) | 2015-05-19 11:12 → 2015-05-21 13:00 (+2d) | 2015-05-20 11:12 → 2015-05-22 12:00 (+2d) |  | -31.4d → 47.8d |  |  |
| 41 | Review Project Plan (first version) | 2015-05-21 08:00 → 2015-05-22 12:00 (+1d) | 2015-05-21 10:24 → 2015-05-22 16:12 (+1d) | 0.3d → 0.4d | -31.3d → 47.8d |  | resources MaiTTT → MaiTTT; PhuongBB |
| 42 | Complete Project Plan (final version) | 2015-05-21 10:24 → 2015-05-22 16:12 (+1d) | 2015-05-21 10:24 → 2015-05-22 16:12 (+1d) |  | -31.3d → 47.8d |  |  |
| 43 | **Progress Report 1** | 2015-05-20 11:12 → 2015-05-22 13:00 (+2d) | 2015-05-20 16:12 → 2015-05-22 15:24 (+2d) | 0.5d → 0.3d | -30.9d → 47.9d |  |  |
| 44 | Develop Progress Report 1 | 2015-05-20 11:12 → 2015-05-22 13:00 (+2d) | 2015-05-20 14:36 → 2015-05-22 13:48 (+2d) | 0.3d → 0.1d | -30.9d → 47.9d |  |  |
| 45 | Review Progress Report 1 | 2015-05-20 14:36 → 2015-05-22 13:48 (+2d) | 2015-05-20 15:24 → 2015-05-22 14:36 (+2d) |  | -30.9d → 47.9d |  |  |
| 46 | Update Progress Report 1 | 2015-05-20 15:24 → 2015-05-22 14:36 (+2d) | 2015-05-20 16:12 → 2015-05-22 15:24 (+2d) |  | -30.9d → 47.9d |  |  |
| 47 | Complete Progress Report 1 | 2015-05-20 16:12 → 2015-05-22 15:24 (+2d) | 2015-05-20 16:12 → 2015-05-22 15:24 (+2d) |  | -30.9d → 47.9d |  |  |
| 48 | Submit PP, URS, Concept Design | 2015-05-22 08:48 → 2015-05-22 16:12 | 2015-05-22 08:48 → 2015-05-22 16:12 |  | -31.7d → 47.8d | Revise after got comments for Report no.1 → 42, 47, 29, 34 | was named Submit Report no.1 (final version) |
| 49 | **Solution** |  | 2015-06-24 08:48 → 2015-06-05 11:12 (-19d) | 32.1d → 19.4d | -31.1d → 0d |  |  |
| 50 | **Requirements** | 2015-05-22 08:48 → 2015-05-11 08:00 (-11d) | 2015-05-27 14:36 → 2015-05-22 14:36 (-5d) | 3.6d → 9.7d | -31.7d → 0d |  |  |
| 51 | **Software Requirements Specification** | 2015-05-22 08:48 → 2015-05-11 08:00 (-11d) | 2015-05-27 14:36 → 2015-05-22 14:36 (-5d) | 3.6d → 9.7d | -31.7d → 0d |  |  |
| 52 | **Functional Requirement Specification** | 2015-05-22 08:48 → 2015-05-11 08:00 (-11d) | 2015-05-26 09:36 → 2015-05-22 14:36 (-4d) | 2.1d → 9.7d | -31.7d → 0d |  |  |
| 53 | **Bus Driver Module** |  | 2015-05-22 12:00 → 2015-05-22 14:36 | 0.4d → 0.6d | -31.7d → 48d |  |  |
| 54 | Send bus info module |  | 2015-05-22 12:00 → 2015-05-22 14:36 | 0.4d → 0.6d | -31.7d → 48d | 48 → 29 | resources AnhTT → none |
| 55 | **Bus Rider Module** | 2015-05-22 13:00 → 2015-05-11 08:00 (-11d) | 2015-05-26 09:36 → 2015-05-11 17:00 (-15d) | 1.7d → 1d | -31.7d → 0d |  |  |
| 62 | **Account Management module** | 2015-05-22 13:00 → 2015-05-11 08:00 (-11d) | 2015-05-26 09:36 → 2015-05-11 13:48 (-15d) | 1.7d → 0.6d | -31.7d → 57.1d |  | was named Sync module |
| 63 | Log in | 2015-05-22 13:00 → 2015-05-11 08:00 (-11d) | 2015-05-22 15:24 → 2015-05-11 13:48 (-11d) | 0.3d → 0.6d | -31.7d → 57.1d | 54 → none | was named PhoneNumberSync module; resources AnhTT → none |
| 64 | Log out | 2015-05-22 15:24 → 2015-05-11 08:00 (-11d) | 2015-05-22 16:12 → 2015-05-11 10:24 (-11d) | 0.1d → 0.3d | -31.7d → 57.4d | 63 → none | was named Connect Facebook module; resources AnhTT → none |
| 65 | View account profile | 2015-05-22 16:12 → 2015-05-11 08:00 (-11d) | 2015-05-22 17:00 → 2015-05-11 09:36 (-11d) | 0.1d → 0.2d | -31.7d → 57.5d | 64 → none | was named Show Favorite place module; resources AnhTT → none |
| 66 | Change account info | 2015-05-25 08:00 → 2015-05-11 08:00 (-14d) | 2015-05-25 08:48 → 2015-05-11 09:36 (-14d) | 0.1d → 0.2d | -31.7d → 57.5d | 65 → none | was named Show Favorite bus module; resources AnhTT → none |
| 67 | Forgot password | 2015-05-25 13:48 → 2015-05-11 08:00 (-14d) | 2015-05-25 14:36 → 2015-05-11 10:24 (-14d) | 0.1d → 0.3d | -31.7d → 57.4d | 66 → none | was named Add/remove Favorite place module; resources AnhTT → none |
| 68 | **Bus module** | 2015-05-22 13:00 → 2015-05-11 08:00 (-11d) | 2015-05-22 17:00 → 2015-05-11 12:00 (-11d) |  | -30.02d → 0d |  |  |
| 69 | View bus list | 2015-05-22 13:00 → 2015-05-11 08:00 (-11d) | 2015-05-22 13:48 → 2015-05-11 09:36 (-11d) | 0.1d → 0.2d | -9d → 57.5d | 54 → none | was named Bus list module; resources MaiTTT → none |
| 70 | View bus info | 2015-05-22 13:48 → 2015-05-11 08:00 (-11d) | 2015-05-22 14:36 → 2015-05-11 09:36 (-11d) | 0.1d → 0.2d | -9d → 57.5d | 69 → none | was named Bus info module; resources MaiTTT → none |
| 71 | View bus route | 2015-05-22 14:36 → 2015-05-11 08:00 (-11d) | 2015-05-22 15:24 → 2015-05-11 10:24 (-11d) | 0.1d → 0.3d | -9d → 57.4d | 70 → none | was named Bus route module; resources MaiTTT → none |
| 72 | View nearest bus | 2015-05-22 15:24 → 2015-05-11 08:00 (-11d) | 2015-05-22 16:12 → 2015-05-11 12:00 (-11d) | 0.1d → 0.5d | -9d → 57.2d | 71 → none | was named Bus nearest module; resources MaiTTT → none |
| 73 | View bus map | 2015-05-22 16:12 → 2015-05-11 08:00 (-11d) | 2015-05-22 17:00 → 2015-05-11 11:12 (-11d) | 0.1d → 0.4d | -9d → 0d | 72 → none | was named Bus map module; resources MaiTTT → none |
| 74 | View bus near me | 2015-05-22 13:00 → 2015-05-11 08:00 (-11d) | 2015-05-22 13:48 → 2015-05-11 09:36 (-11d) | 0.1d → 0.2d | -30.02d → 57.5d | 54 → none | was named Set/unset favorite bus module; resources CuongNLT → none |
| 75 | **Path Finder module** | 2015-05-22 14:36 → 2015-05-11 08:00 (-11d) | 2015-05-22 15:24 → 2015-05-11 11:12 (-11d) | 0.1d → 0.4d | -30.02d → 57.3d | Remind module → none | was named Track module; resources CuongNLT → none |
| 76 | Find path | 2015-05-22 15:24 → 2015-05-11 08:00 (-11d) | 2015-05-22 16:12 → 2015-05-11 11:12 (-11d) | 0.1d → 0.4d | -30.02d → 57.3d | 75 → none | was named Get notification module; resources CuongNLT → none |

| ID | Task | Start | Finish | Duration | Total float | Predecessors | Other |
| --- | --- | --- | --- | --- | --- | --- | --- |
| 77 | View paths found | 2015-05-22 16:12 → 2015-05-11 08:00 (-11d) | 2015-05-22 17:00 → 2015-05-11 08:48 (-11d) |  | -30.02d → 57.6d | 76 → none | was named Swap direction module; resources CuongNLT → none |
| 101 | **Interactive module** | 2015-05-22 13:00 → 2015-05-11 08:00 (-11d) | 2015-05-25 08:48 → 2015-05-11 10:24 (-14d) | 0.6d → 0.3d | -30.12d → 57.4d |  | was named Shigeki module |
| 102 | View Achievement | 2015-05-22 13:00 → 2015-05-11 08:00 (-11d) | 2015-05-22 13:48 → 2015-05-11 09:36 (-11d) | 0.1d → 0.2d | -30.12d → 57.5d | 54 → none | was named Achievement module; resources NamNT → none |
| 104 | View Collection | 2015-05-22 13:48 → 2015-05-11 08:00 (-11d) | 2015-05-22 14:36 → 2015-05-11 09:36 (-11d) | 0.1d → 0.2d | -30.12d → 57.5d | 102 → none | was named Collection module; resources NamNT → none |
| 106 | View Mission | 2015-05-22 14:36 → 2015-05-11 08:00 (-11d) | 2015-05-22 15:24 → 2015-05-11 09:36 (-11d) | 0.1d → 0.2d | -30.12d → 57.5d | 104 → none | was named Mission module; resources NamNT → none |
| 108 | View Statistic | 2015-05-22 15:24 → 2015-05-11 08:00 (-11d) | 2015-05-22 16:12 → 2015-05-11 10:24 (-11d) | 0.1d → 0.3d | -30.12d → 57.4d | 106 → none | was named Statistic module; resources NamNT → none |
| 109 | Connect Facebook | 2015-05-22 16:12 → 2015-05-11 08:00 (-11d) | 2015-05-22 17:00 → 2015-05-11 10:24 (-11d) | 0.1d → 0.3d | -30.12d → 57.4d | 108 → none | was named Rank module; resources NamNT → none |
| 110 | Scan QR code module | 2015-05-25 08:00 → 2015-05-11 08:00 (-14d) | 2015-05-25 08:48 → 2015-05-11 09:36 (-14d) | 0.1d → 0.2d | -30.12d → 57.5d | 109 → none | resources NamNT → none |
| 111 | **Non-functional Requirement Specification** | 2015-05-25 08:48 → 2015-05-11 10:24 (-14d) | 2015-05-26 08:48 → 2015-05-22 14:36 (-4d) | 1d → 9.4d | -31.12d → 48d |  |  |
| 112 | Develop User Interface Requirement | 2015-05-25 08:48 → 2015-05-11 10:24 (-14d) | 2015-05-25 13:48 → 2015-05-12 17:00 (-13d) | 0.5d → 1.4d | -31.12d → 48d | 279 → 99 |  |
| 113 | Develop Performance Requirement | 2015-05-25 13:48 → 2015-05-13 08:00 (-12d) | 2015-05-26 08:48 → 2015-05-22 14:36 (-4d) | 0.5d → 0.8d | -31.12d → 48d |  |  |
| 114 | Review Software Requirement Specification with checklist | 2015-05-26 09:36 → 2015-05-11 08:00 (-15d) | 2015-05-27 09:36 → 2015-05-12 17:00 (-15d) | 1d → 2d | -31.23d → 55.7d | About module, 77, 110, 278, 279, 113 → none | resources MaiTTT; PhuongBB → none |
| 115 | Update Software Requirement Specification | 2015-05-27 09:36 → 2015-05-11 08:00 (-16d) | 2015-05-27 14:36 → 2015-05-12 17:00 (-15d) | 0.5d → 2d | -31.23d → 55.7d | 114 → none | resources NamNT; CuongNLT; MaiTTT; PhuongBB; AnhTT → none |
| 116 | Complete Software Requirement Specification | 2015-05-27 14:36 → 2015-05-11 08:00 (-16d) | 2015-05-27 14:36 → 2015-05-11 08:00 (-16d) |  | -31.23d → 1d | 115 → none | resources NamNT → none |
| 117 | **Design** | 2015-05-27 14:36 → 2015-05-11 08:00 (-16d) | 2015-06-24 08:48 → 2015-05-20 17:00 (-35d) | 19.4d → 8d | -31.23d → 0.4d |  |  |
| 118 | **Design Review checklist** | 2015-05-27 14:36 → 2015-05-11 11:12 (-16d) | 2015-06-01 08:48 → 2015-05-13 15:24 (-19d) |  | -31.23d → 0d |  |  |
| 119 | Develop review checklist | 2015-05-27 14:36 → 2015-05-11 11:12 (-16d) | 2015-05-29 15:24 → 2015-05-13 12:00 (-16d) |  | -31.23d → 0d | 116 → 73, 99 | resources MaiTTT; PhuongBB → none |
| 120 | Review review checklist | 2015-05-29 15:24 → 2015-05-13 13:00 (-16d) | 2015-05-29 16:12 → 2015-05-13 13:48 (-16d) |  | -31.23d → 0d |  | resources MaiTTT; PhuongBB → none |
| 121 | Update review checklist | 2015-05-29 16:12 → 2015-05-13 13:48 (-16d) | 2015-06-01 08:48 → 2015-05-13 15:24 (-19d) |  | -31.23d → 0d |  | resources MaiTTT; PhuongBB → none |
| 122 | Complete review checklist | 2015-06-01 08:48 → 2015-05-13 15:24 (-19d) | 2015-06-01 08:48 → 2015-05-13 15:24 (-19d) |  | -31.23d → 0d |  | resources MaiTTT; PhuongBB → none |
| 123 | **Architecture design** | 2015-05-27 14:36 → 2015-05-11 08:00 (-16d) | 2015-06-01 14:36 → 2015-05-14 11:12 (-18d) | 3d → 3.4d | -31.23d → 0d |  |  |
| 124 | Define system structure and collect system features | 2015-05-27 14:36 → 2015-05-11 08:00 (-16d) | 2015-05-28 14:36 → 2015-05-11 17:00 (-17d) |  | -30.32d → 1d |  | resources AnhTT; NamNT; CuongNLT → none |
| 125 | Study & choose System Architecture | 2015-05-28 14:36 → 2015-05-12 08:00 (-16d) | 2015-05-29 09:36 → 2015-05-12 15:24 (-17d) | 0.5d → 0.8d | -30.32d → 1d |  | resources AnhTT; NamNT; CuongNLT → none |
| 126 | Review Architecture Design with checklist | 2015-06-01 08:48 → 2015-05-13 15:24 (-19d) | 2015-06-01 11:12 → 2015-05-14 08:48 (-18d) |  | -31.23d → 0d |  | resources MaiTTT; PhuongBB → none |
| 127 | Update Architecture Design | 2015-06-01 11:12 → 2015-05-14 08:48 (-18d) | 2015-06-01 14:36 → 2015-05-14 11:12 (-18d) |  | -31.23d → 0d |  | resources AnhTT; NamNT; CuongNLT → none |
| 128 | Complete System Architecture version 1.0 | 2015-06-01 14:36 → 2015-05-14 11:12 (-18d) | 2015-06-01 14:36 → 2015-05-14 11:12 (-18d) |  | -31.23d → 0d |  | resources AnhTT; NamNT; CuongNLT → none |
| 129 | **Detailed design** | 2015-06-01 14:36 → 2015-05-14 11:12 (-18d) | 2015-06-24 08:48 → 2015-05-19 12:00 (-36d) | 16.4d → 3.1d | -31.1d → 1.5d |  |  |
| 130 | **User Interface design** | 2015-06-01 14:36 → 2015-05-14 11:12 (-18d) | 2015-06-24 08:48 → 2015-05-18 12:00 (-37d) | 16.4d → 2.1d | -31.1d → 1.5d |  |  |
| 131 | **Bus Driver Module** | 2015-06-01 14:36 → 2015-05-14 11:12 (-18d) | 2015-06-02 15:24 → 2015-05-14 15:24 (-19d) | 1.1d → 0.4d | -27.4d → 2.4d |  |  |
| 132 | Send bus info module | 2015-06-01 14:36 → 2015-05-14 11:12 (-18d) | 2015-06-02 15:24 → 2015-05-14 15:24 (-19d) |  | -27.4d → 2.4d |  | resources AnhTT → none |
| 133 | **Bus Rider Module** | 2015-06-01 14:36 → 2015-05-14 11:12 (-18d) | 2015-06-24 08:48 → 2015-05-18 12:00 (-37d) | 16.4d → 2.1d | -31.1d → 1.5d |  |  |
| 134 | **Sync module** | 2015-06-02 15:24 → 2015-05-14 15:24 (-19d) | 2015-06-05 16:12 → 2015-05-15 13:48 (-21d) | 3.1d → 0.8d | -29.6d → 2.4d |  |  |
| 135 | PhoneNumberSync module | 2015-06-02 15:24 → 2015-05-14 15:24 (-19d) | 2015-06-03 08:48 → 2015-05-15 08:48 (-19d) |  | -27.4d → 2.4d |  | resources AnhTT → none |
| 136 | Connect Facebook module | 2015-06-03 08:48 → 2015-05-15 08:48 (-19d) | 2015-06-03 09:36 → 2015-05-15 09:36 (-19d) |  | -27.4d → 2.4d |  | resources AnhTT → none |
| 137 | Show Favorite place module | 2015-06-03 09:36 → 2015-05-15 09:36 (-19d) | 2015-06-03 10:24 → 2015-05-15 10:24 (-19d) |  | -27.4d → 2.4d |  | resources AnhTT → none |
| 138 | Show Favorite bus module | 2015-06-03 10:24 → 2015-05-15 10:24 (-19d) | 2015-06-03 11:12 → 2015-05-15 11:12 (-19d) |  | -27.4d → 2.4d |  | resources AnhTT → none |
| 139 | Add/remove Favorite place module | 2015-06-05 14:36 → 2015-05-15 11:12 (-21d) | 2015-06-05 15:24 → 2015-05-15 12:00 (-21d) |  | -29.6d → 2.4d |  | resources AnhTT → none |
| 140 | About module | 2015-06-05 15:24 → 2015-05-15 13:00 (-21d) | 2015-06-05 16:12 → 2015-05-15 13:48 (-21d) |  | -29.6d → 2.4d |  | resources AnhTT → none |
| 141 | **Bus module** | 2015-06-01 14:36 → 2015-05-14 11:12 (-18d) | 2015-06-24 08:48 → 2015-05-18 12:00 (-37d) | 16.4d → 2.1d | -31.1d → 1.5d |  |  |
| 142 | Bus list module | 2015-06-22 14:36 → 2015-05-14 11:12 (-39d) | 2015-06-22 15:24 → 2015-05-14 12:00 (-39d) |  | -31.23d → 1.5d |  | resources MaiTTT → none |
| 143 | Bus info module | 2015-06-22 15:24 → 2015-05-14 13:00 (-39d) | 2015-06-23 08:48 → 2015-05-14 15:24 (-40d) |  | -31.23d → 1.5d |  | resources MaiTTT → none |
| 144 | Bus route module | 2015-06-23 08:48 → 2015-05-14 15:24 (-40d) | 2015-06-23 10:24 → 2015-05-14 17:00 (-40d) |  | -31.23d → 1.5d |  | resources MaiTTT → none |
| 145 | Bus nearest module | 2015-06-23 13:00 → 2015-05-15 08:00 (-39d) | 2015-06-23 15:24 → 2015-05-15 10:24 (-39d) |  | -31.1d → 1.5d |  | resources MaiTTT → none |
| 146 | Bus map module | 2015-06-23 16:12 → 2015-05-15 10:24 (-39d) | 2015-06-24 08:48 → 2015-05-15 12:00 (-40d) |  | -31.1d → 1.5d |  | resources MaiTTT → none |
| 147 | Set/unset favorite bus module | 2015-06-01 14:36 → 2015-05-15 13:00 (-17d) | 2015-06-01 15:24 → 2015-05-15 13:48 (-17d) |  | -26.4d → 1.5d | 128 → 146 | resources CuongNLT → none |
| 148 | Remind module | 2015-06-01 15:24 → 2015-05-15 13:48 (-17d) | 2015-06-02 08:48 → 2015-05-15 16:12 (-18d) |  | -26.4d → 1.5d |  | resources CuongNLT → none |
| 149 | Track module | 2015-06-02 08:48 → 2015-05-15 16:12 (-18d) | 2015-06-02 10:24 → 2015-05-18 08:48 (-15d) |  | -26.4d → 1.5d |  | resources CuongNLT → none |
| 150 | Get notification module | 2015-06-02 10:24 → 2015-05-18 08:48 (-15d) | 2015-06-02 13:48 → 2015-05-18 11:12 (-15d) |  | -26.4d → 1.5d |  | resources CuongNLT → none |
| 151 | Swap direction module | 2015-06-02 13:48 → 2015-05-18 11:12 (-15d) | 2015-06-02 14:36 → 2015-05-18 12:00 (-15d) |  | -26.4d → 1.5d |  | resources CuongNLT → none |
| 152 | **Shigeki module** | 2015-06-01 14:36 → 2015-05-14 11:12 (-18d) | 2015-06-03 15:24 → 2015-05-15 17:00 (-19d) | 2.1d → 1.6d | -27.5d → 2d |  |  |
| 153 | Achievement module | 2015-06-01 14:36 → 2015-05-14 11:12 (-18d) | 2015-06-01 17:00 → 2015-05-14 14:36 (-18d) |  | -27.5d → 2d |  | resources NamNT → none |
| 154 | Collection module | 2015-06-02 08:00 → 2015-05-14 14:36 (-19d) | 2015-06-02 10:24 → 2015-05-14 17:00 (-19d) |  | -27.5d → 2d |  | resources NamNT → none |
| 155 | Mission module | 2015-06-02 10:24 → 2015-05-15 08:00 (-18d) | 2015-06-02 13:48 → 2015-05-15 10:24 (-18d) |  | -27.5d → 2d |  | resources NamNT → none |
| 156 | Statistic module | 2015-06-02 13:48 → 2015-05-15 10:24 (-18d) | 2015-06-03 11:12 → 2015-05-15 13:48 (-19d) |  | -27.5d → 2d |  | resources NamNT → none |
| 157 | Rank module | 2015-06-03 11:12 → 2015-05-15 13:48 (-19d) | 2015-06-03 12:00 → 2015-05-15 14:36 (-19d) |  | -27.5d → 2d |  | resources NamNT → none |
| 158 | Scan QR code module | 2015-06-03 13:00 → 2015-05-15 14:36 (-19d) | 2015-06-03 15:24 → 2015-05-15 17:00 (-19d) |  | -27.5d → 2d |  | resources NamNT → none |
| 159 | **Search module** | 2015-06-01 14:36 → 2015-05-14 11:12 (-18d) | 2015-06-02 10:24 → 2015-05-14 17:00 (-19d) |  | -26.5d → 2.5d |  |  |
| 160 | Search bus module | 2015-06-01 14:36 → 2015-05-14 11:12 (-18d) | 2015-06-01 15:24 → 2015-05-14 12:00 (-18d) |  | -26.5d → 2.5d |  | resources PhuongBB → none |
| 161 | Search route module | 2015-06-01 15:24 → 2015-05-14 13:00 (-18d) | 2015-06-02 08:48 → 2015-05-14 15:24 (-19d) |  | -26.5d → 2.5d |  | resources PhuongBB → none |
| 162 | Search Favorite bus module | 2015-06-02 08:48 → 2015-05-14 15:24 (-19d) | 2015-06-02 09:36 → 2015-05-14 16:12 (-19d) |  | -26.5d → 2.5d |  | resources PhuongBB → none |
| 163 | Search Favorite place module | 2015-06-02 09:36 → 2015-05-14 16:12 (-19d) | 2015-06-02 10:24 → 2015-05-14 17:00 (-19d) |  | -26.5d → 2.5d |  | resources PhuongBB → none |
| 164 | Setting module | 2015-06-02 10:24 → 2015-05-15 08:00 (-18d) | 2015-06-02 15:24 → 2015-05-15 12:00 (-18d) |  | -26.5d → 2.5d |  | resources PhuongBB → none |
| 165 | Review Detailed Design with checklist | 2015-06-05 16:12 → 2015-05-18 13:00 (-18d) | 2015-06-18 14:36 → 2015-05-19 12:00 (-30d) |  | -29.6d → 1.5d |  | resources MaiTTT; PhuongBB → none |
| 166 | Update Detailed Design | 2015-06-18 14:36 → 2015-05-19 12:00 (-30d) | 2015-06-22 13:48 → 2015-05-19 12:00 (-34d) | 1.9d → 0d | -29.6d → 1.5d |  | resources NamNT; CuongNLT; MaiTTT; PhuongBB; AnhTT → none |
| 167 | Complete Detailed Design version 1.0 | 2015-06-02 15:24 → 2015-05-19 12:00 (-14d) | 2015-06-02 15:24 → 2015-05-19 12:00 (-14d) |  | -23d → 1.5d | 164 → 166 | resources NamNT → none |
| 168 | **Database design** | 2015-06-01 14:36 → 2015-05-14 11:12 (-18d) | 2015-06-03 14:36 → 2015-05-18 09:36 (-16d) | 2d → 1.8d | -29.7d → 0d |  |  |
| 169 | Create Databse Design draft version | 2015-06-01 14:36 → 2015-05-14 11:12 (-18d) | 2015-06-02 14:36 → 2015-05-15 11:12 (-18d) |  | -29.7d → 0d |  | resources AnhTT → none |
| 170 | Review Database Design with checklist | 2015-06-02 14:36 → 2015-05-15 11:12 (-18d) | 2015-06-03 11:12 → 2015-05-15 16:12 (-19d) |  | -29.7d → 0d |  | resources MaiTTT; PhuongBB → none |
| 171 | Update Database Design | 2015-06-03 11:12 → 2015-05-15 16:12 (-19d) | 2015-06-03 14:36 → 2015-05-18 09:36 (-16d) |  | -29.7d → 0d |  | resources AnhTT → none |
| 172 | Complete Database Design version 1.0 | 2015-06-03 14:36 → 2015-05-18 09:36 (-16d) | 2015-06-03 14:36 → 2015-05-18 09:36 (-16d) |  | -29.7d → 0d |  | resources AnhTT → none |

| ID | Task | Start | Finish | Duration | Total float | Predecessors | Other |
| --- | --- | --- | --- | --- | --- | --- | --- |
| 173 | **Class design** | 2015-06-03 14:36 → 2015-05-18 09:36 (-16d) | 2015-06-11 12:00 → 2015-05-20 17:00 (-22d) | 5.8d → 2.8d | -29.7d → 0d |  |  |
| 174 | Define class/component | 2015-06-03 14:36 → 2015-05-18 09:36 (-16d) | 2015-06-05 14:36 → 2015-05-20 09:36 (-16d) |  | -29.7d → 0d |  | resources AnhTT → none |
| 175 | Review Class Design with checklist | 2015-06-05 14:36 → 2015-05-20 09:36 (-16d) | 2015-06-11 09:36 → 2015-05-20 14:36 (-22d) |  | -29.7d → 0d |  | resources MaiTTT; PhuongBB → none |
| 176 | Update Class Design | 2015-06-11 09:36 → 2015-05-20 14:36 (-22d) | 2015-06-11 12:00 → 2015-05-20 17:00 (-22d) |  | -29.7d → 0d |  | resources AnhTT → none |
| 177 | Complete Class Design version 1.0 | 2015-06-11 12:00 → 2015-05-20 17:00 (-22d) | 2015-06-11 12:00 → 2015-05-20 17:00 (-22d) |  | -29.7d → 0d |  | resources AnhTT → none |
| 178 | Complete design | 2015-06-11 12:00 → 2015-05-20 17:00 (-22d) | 2015-06-11 12:00 → 2015-05-20 17:00 (-22d) |  | -22.5d → 49.7d |  | resources NamNT → none |
| 179 | **Progress Report 2** | 2015-06-11 13:00 → 2015-05-21 08:00 (-21d) | 2015-06-11 17:00 → 2015-05-21 12:00 (-21d) |  | -29.7d → 49.2d |  |  |
| 180 | Develop Progress Report 2 | 2015-06-11 13:00 → 2015-05-21 08:00 (-21d) | 2015-06-11 15:24 → 2015-05-21 10:24 (-21d) |  | -29.7d → 49.2d |  | resources NamNT → none |
| 181 | Review Progress Report 2 | 2015-06-11 15:24 → 2015-05-21 10:24 (-21d) | 2015-06-11 16:12 → 2015-05-21 11:12 (-21d) |  | -29.7d → 49.2d |  | resources MaiTTT → none |
| 182 | Update Progress Report 2 | 2015-06-11 16:12 → 2015-05-21 11:12 (-21d) | 2015-06-11 17:00 → 2015-05-21 12:00 (-21d) |  | -29.7d → 49.2d |  | resources NamNT → none |
| 183 | Complete Progress Report 2 | 2015-06-11 17:00 → 2015-05-21 12:00 (-21d) | 2015-06-11 17:00 → 2015-05-21 12:00 (-21d) |  | -29.7d → 49.2d |  | resources NamNT → none |
| 184 | Submit SRS,AD,DD | 2015-06-22 14:36 → 2015-05-20 17:00 (-33d) | 2015-06-22 14:36 → 2015-05-20 17:00 (-33d) |  | -29.7d → 49.7d | Revise after got comments for Report no.2 → 116, 178 | was named Submit Report no.2 (final version); resources NamNT → none |
| 185 | **Coding & Unit Testing** | 2015-06-11 13:00 → 2015-05-21 08:00 (-21d) | 2015-06-12 12:00 → 2015-05-21 17:00 (-22d) |  | -24.5d → 0d |  |  |
| 186 | **Bus Driver Module** | 2015-06-11 13:00 → 2015-05-21 08:00 (-21d) | 2015-06-12 12:00 → 2015-05-21 17:00 (-22d) |  | -24.5d → 0d |  |  |
| 187 | Send bus info module | 2015-06-11 13:00 → 2015-05-21 08:00 (-21d) | 2015-06-12 12:00 → 2015-05-21 17:00 (-22d) |  | -24.5d → 0d |  | resources AnhTT → none |
| 188 | **Testing** | 2015-06-01 14:36 → 2015-05-14 11:12 (-18d) | 2015-06-23 12:00 → 2015-06-02 09:36 (-21d) | 15.8d → 12.8d | -31d → 18.6d |  |  |
| 189 | **Test review checklist** | 2015-06-01 14:36 → 2015-05-14 11:12 (-18d) | 2015-06-23 12:00 → 2015-05-15 11:12 (-39d) | 15.8d → 1d | -31d → 19d |  |  |
| 190 | **Test plan review checklist** | 2015-06-01 14:36 → 2015-05-14 11:12 (-18d) | 2015-06-02 10:24 → 2015-05-14 17:00 (-19d) |  | -29.1d → 19d |  |  |
| 191 | Develop test plan review checklist | 2015-06-01 14:36 → 2015-05-14 11:12 (-18d) | 2015-06-01 17:00 → 2015-05-14 14:36 (-18d) |  | -29.1d → 19d |  | resources PhuongBB → none |
| 192 | Review test plan review checklist | 2015-06-02 08:00 → 2015-05-14 14:36 (-19d) | 2015-06-02 09:36 → 2015-05-14 16:12 (-19d) |  | -29.1d → 19d |  | resources MaiTTT → none |
| 193 | Update test plan review checklist | 2015-06-02 09:36 → 2015-05-14 16:12 (-19d) | 2015-06-02 10:24 → 2015-05-14 17:00 (-19d) |  | -29.1d → 19d |  | resources PhuongBB → none |
| 194 | Complete test plan review checklist | 2015-06-02 10:24 → 2015-05-14 17:00 (-19d) | 2015-06-02 10:24 → 2015-05-14 17:00 (-19d) |  | -29.1d → 19d |  | resources PhuongBB → none |
| 195 | **Test case review checklist** | 2015-06-22 09:36 → 2015-05-14 11:12 (-39d) | 2015-06-23 12:00 → 2015-05-15 11:12 (-39d) | 1.3d → 1d | -31d → 40.5d |  |  |
| 196 | Develop test case review checklist | 2015-06-22 09:36 → 2015-05-14 11:12 (-39d) | 2015-06-22 14:36 → 2015-05-14 16:12 (-39d) |  | -31d → 40.5d |  | resources MaiTTT → none |
| 197 | Review test case review checklist | 2015-06-22 14:36 → 2015-05-14 16:12 (-39d) | 2015-06-22 17:00 → 2015-05-15 09:36 (-38d) |  | -31d → 40.5d |  | resources PhuongBB → none |
| 198 | Update test case review checklist | 2015-06-23 10:24 → 2015-05-15 09:36 (-39d) | 2015-06-23 12:00 → 2015-05-15 11:12 (-39d) |  | -31d → 40.5d |  | resources MaiTTT → none |
| 199 | Complete test case review checklist | 2015-06-23 12:00 → 2015-05-15 11:12 (-39d) | 2015-06-23 12:00 → 2015-05-15 11:12 (-39d) |  | -31d → 40.5d |  | resources MaiTTT → none |
| 200 | Complete review checklist | 2015-06-23 12:00 → 2015-05-15 11:12 (-39d) | 2015-06-23 12:00 → 2015-05-15 11:12 (-39d) |  | -31d → 40.5d |  | resources MaiTTT; PhuongBB → none |
| 201 | **Test plan** | 2015-06-01 14:36 → 2015-05-14 11:12 (-18d) | 2015-06-03 14:36 → 2015-05-18 09:36 (-16d) | 2d → 1.8d | -29.7d → 18.6d |  |  |
| 202 | Develop test plan | 2015-06-01 14:36 → 2015-05-14 11:12 (-18d) | 2015-06-02 16:12 → 2015-05-15 11:12 (-18d) |  | -29.7d → 18.6d |  | resources MaiTTT → none |
| 203 | Review test plan | 2015-06-02 16:12 → 2015-05-15 11:12 (-18d) | 2015-06-03 11:12 → 2015-05-15 16:12 (-19d) |  | -29.7d → 18.6d |  | resources NamNT → none |
| 204 | Update test plan | 2015-06-03 11:12 → 2015-05-15 16:12 (-19d) | 2015-06-03 14:36 → 2015-05-18 09:36 (-16d) |  | -29.7d → 18.6d |  | resources MaiTTT → none |
| 205 | Complete test plan | 2015-06-03 14:36 → 2015-05-18 09:36 (-16d) | 2015-06-03 14:36 → 2015-05-18 09:36 (-16d) |  | -29.7d → 18.6d |  | resources MaiTTT → none |
| 206 | **Test case** | 2015-06-03 14:36 → 2015-05-18 09:36 (-16d) | 2015-06-22 09:36 → 2015-06-02 09:36 (-20d) | 12.5d → 11d | -29.7d → 18.6d |  |  |
| 207 | **Unit test** | 2015-06-03 14:36 → 2015-05-18 09:36 (-16d) | 2015-06-09 14:36 → 2015-05-22 09:36 (-18d) |  | -29.7d → 18.6d |  |  |
| 208 | **Develop unit test case** | 2015-06-03 14:36 → 2015-05-18 09:36 (-16d) | 2015-06-05 14:36 → 2015-05-20 09:36 (-16d) |  | -29.7d → 18.6d |  |  |
| 209 | Bus driver module | 2015-06-03 14:36 → 2015-05-18 09:36 (-16d) | 2015-06-04 09:36 → 2015-05-18 14:36 (-17d) |  | -29.7d → 18.6d |  | resources MaiTTT → none |
| 210 | Sync module | 2015-06-04 09:36 → 2015-05-18 14:36 (-17d) | 2015-06-04 14:36 → 2015-05-19 09:36 (-16d) |  | -29.7d → 18.6d |  | resources MaiTTT → none |
| 211 | Bus module | 2015-06-04 14:36 → 2015-05-19 09:36 (-16d) | 2015-06-05 14:36 → 2015-05-20 09:36 (-16d) |  | -29.7d → 18.6d |  | resources MaiTTT → none |
| 212 | Shigeki module | 2015-06-03 14:36 → 2015-05-18 09:36 (-16d) | 2015-06-04 12:00 → 2015-05-18 17:00 (-17d) |  | -29.7d → 18.6d |  | resources PhuongBB → none |
| 213 | Search module | 2015-06-04 13:00 → 2015-05-19 08:00 (-16d) | 2015-06-04 17:00 → 2015-05-19 12:00 (-16d) |  | -29.7d → 18.6d |  | resources PhuongBB → none |
| 214 | Setting module | 2015-06-05 08:00 → 2015-05-19 13:00 (-17d) | 2015-06-05 14:36 → 2015-05-20 09:36 (-16d) |  | -29.7d → 18.6d |  | resources PhuongBB → none |
| 215 | Review unit test case | 2015-06-05 14:36 → 2015-05-20 09:36 (-16d) | 2015-06-08 14:36 → 2015-05-21 09:36 (-18d) |  | -29.7d → 18.6d |  | resources MaiTTT; PhuongBB → none |
| 216 | Update unit test case | 2015-06-08 14:36 → 2015-05-21 09:36 (-18d) | 2015-06-09 14:36 → 2015-05-22 09:36 (-18d) |  | -29.7d → 18.6d |  | resources MaiTTT; PhuongBB → none |
| 217 | Complete unit test case | 2015-06-09 14:36 → 2015-05-22 09:36 (-18d) | 2015-06-09 14:36 → 2015-05-22 09:36 (-18d) |  | -29.7d → 18.6d |  | resources MaiTTT; PhuongBB → none |
| 218 | **Integration test** | 2015-06-09 14:36 → 2015-05-22 09:36 (-18d) | 2015-06-16 09:36 → 2015-05-28 09:36 (-19d) | 4.5d → 4d | -29.7d → 28.7d |  |  |
| 219 | Develop integration test case | 2015-06-09 14:36 → 2015-05-22 09:36 (-18d) | 2015-06-10 14:36 → 2015-05-26 09:36 (-15d) | 1d → 2d | -29.7d → 28.7d |  | resources MaiTTT; PhuongBB → none |
| 220 | Review integration test case | 2015-06-10 14:36 → 2015-05-26 09:36 (-15d) | 2015-06-15 09:36 → 2015-05-27 09:36 (-19d) | 2d → 1d | -29.7d → 28.7d |  | resources MaiTTT; PhuongBB → none |
| 221 | Update integration test case | 2015-06-15 09:36 → 2015-05-27 09:36 (-19d) | 2015-06-16 09:36 → 2015-05-28 09:36 (-19d) |  | -29.7d → 28.7d |  | resources MaiTTT; PhuongBB → none |
| 222 | Complete integration test case | 2015-06-16 09:36 → 2015-05-28 09:36 (-19d) | 2015-06-16 09:36 → 2015-05-28 09:36 (-19d) |  | -29.7d → 28.7d |  | resources MaiTTT; PhuongBB → none |
| 223 | **System test** | 2015-06-16 09:36 → 2015-05-28 09:36 (-19d) | 2015-06-22 09:36 → 2015-06-02 09:36 (-20d) | 4d → 3d | -29.7d → 28.7d |  |  |
| 224 | Develop system test case | 2015-06-16 09:36 → 2015-05-28 09:36 (-19d) | 2015-06-17 09:36 → 2015-05-29 09:36 (-19d) |  | -29.7d → 28.7d |  | resources MaiTTT; PhuongBB → none |
| 225 | Review system test case | 2015-06-17 09:36 → 2015-05-29 09:36 (-19d) | 2015-06-18 13:48 → 2015-06-01 09:36 (-17d) | 1.4d → 1d | -29.7d → 28.7d |  | resources MaiTTT; PhuongBB → none |
| 226 | Update system test case | 2015-06-18 13:48 → 2015-06-01 09:36 (-17d) | 2015-06-22 09:36 → 2015-06-02 09:36 (-20d) | 1.6d → 1d | -29.7d → 28.7d |  | resources MaiTTT; PhuongBB → none |
| 227 | Complete system test case | 2015-06-22 09:36 → 2015-06-02 09:36 (-20d) | 2015-06-22 09:36 → 2015-06-02 09:36 (-20d) |  | -29.7d → 28.7d |  | resources MaiTTT; PhuongBB → none |
| 228 | **Progress report 3** | 2015-06-23 13:00 → 2015-06-02 09:36 (-21d) | 2015-06-23 17:00 → 2015-06-02 14:36 (-21d) |  | -31d → 28.7d |  |  |
| 229 | Develop Progress Report 3 | 2015-06-23 13:00 → 2015-06-02 09:36 (-21d) | 2015-06-23 15:24 → 2015-06-02 12:00 (-21d) |  | -31d → 28.7d |  | resources NamNT → none |
| 230 | Review Progress Report 3 | 2015-06-23 15:24 → 2015-06-02 13:00 (-21d) | 2015-06-23 16:12 → 2015-06-02 13:48 (-21d) |  | -31d → 28.7d |  | resources MaiTTT → none |
| 231 | Update Progress Report 3 | 2015-06-23 16:12 → 2015-06-02 13:48 (-21d) | 2015-06-23 17:00 → 2015-06-02 14:36 (-21d) |  | -31d → 28.7d |  | resources NamNT → none |
| 232 | Complete Progress Report 3 | 2015-06-23 17:00 → 2015-06-02 14:36 (-21d) | 2015-06-23 17:00 → 2015-06-02 14:36 (-21d) |  | -31d → 28.7d |  | resources NamNT → none |
| 233 | Q & A Management (update) | 2015-05-21 10:24 → 2015-06-02 14:36 (+12d) | 2015-05-22 08:48 → 2015-06-03 09:36 (+12d) |  | -8.1d → 28.7d | none → 232 | resources MaiTTT → none |
| 234 | **Report no.3** | 2015-05-11 08:00 → 2015-06-03 09:36 (+23d) | 2015-05-26 09:36 → 2015-06-05 11:12 (+10d) | 11.2d → 2.2d | -10.2d → 28.7d |  |  |
| 235 | Develop Report no.3 (draft version) | 2015-05-26 08:00 → 2015-06-03 09:36 (+8d) | 2015-05-26 09:36 → 2015-06-03 11:12 (+8d) |  | -10.2d → 28.7d | none → 205, 217, 222, 227, 233 | resources NamNT → none |
| 236 | Review Report no.3 (draft version) | 2015-05-11 08:00 → 2015-06-03 11:12 (+23d) | 2015-05-11 17:00 → 2015-06-04 11:12 (+24d) |  | 0d → 28.7d | none → 235 |  |
| 237 | Update Report no.3 (draft version) | 2015-05-11 08:00 → 2015-06-04 11:12 (+24d) | 2015-05-11 12:00 → 2015-06-04 16:12 (+24d) |  | 0.5d → 28.7d | none → 236 |  |
| 238 | Submit Report no.3 (first version) | 2015-05-11 08:00 → 2015-06-04 16:12 (+24d) | 2015-05-11 08:00 → 2015-06-04 16:12 (+24d) |  | 1d → 28.7d | none → 237 | resources NamNT → none |
| 239 | Revise after got comments for Report no.3 | 2015-05-11 08:00 → 2015-06-04 16:12 (+24d) | 2015-05-11 12:00 → 2015-06-05 11:12 (+25d) |  | 0.5d → 28.7d | none → 238 |  |
| 240 | Submit Report no.3 (final version) | 2015-05-11 08:00 → 2015-06-05 11:12 (+25d) | 2015-05-11 08:00 → 2015-06-05 11:12 (+25d) |  | 1d → 28.7d | none → 239 | resources NamNT → none |
| 241 | **Construction** | 2015-05-11 08:00 → 2015-05-22 08:00 (+11d) | 2015-06-15 12:00 → 2015-07-22 13:48 (+37d) | 25.5d? → 38.6d | -24.5d → 0d |  |  |
| 242 | **Code Review checklist** | 2015-05-11 08:00 → 2015-06-05 11:12 (+25d) | 2015-05-12 09:36 → 2015-06-08 17:00 (+27d) | 1.2d → 1.6d | -0.2d → 28.7d |  |  |

| ID | Task | Start | Finish | Duration | Total float | Predecessors | Other |
| --- | --- | --- | --- | --- | --- | --- | --- |
| 243 | Develop review checklist | 2015-05-11 09:36 → 2015-06-05 11:12 (+25d) | 2015-05-11 17:00 → 2015-06-08 10:24 (+28d) | 0.8d → 0.9d | 0d → 28.7d | none → 240 | resources MaiTTT; PhuongBB → none |
| 244 | Review review checklist | 2015-05-11 14:36 → 2015-06-08 10:24 (+28d) | 2015-05-12 09:36 → 2015-06-08 14:36 (+27d) |  | -0.2d → 28.7d | none → 243 | resources MaiTTT; PhuongBB → none |
| 245 | Update review checklist | 2015-05-11 16:12 → 2015-06-08 14:36 (+28d) | 2015-05-12 08:48 → 2015-06-08 17:00 (+27d) | 0.2d → 0.3d | -0.1d → 28.7d | none → 244 | resources MaiTTT; PhuongBB → none |
| 246 | Complete review checklist | 2015-05-11 08:00 → 2015-06-08 17:00 (+28d) | 2015-05-11 08:00 → 2015-06-08 17:00 (+28d) |  | 1d → 28.7d | none → 245 | resources MaiTTT; PhuongBB → none |
| 247 | **Coding & Unit testing (continue)** | 2015-05-11 08:00 → 2015-05-22 08:00 (+11d) | 2015-06-15 12:00 → 2015-06-18 17:00 (+3d) | 25.5d? → 20d | -24.5d → 0d |  |  |
| 248 | **Bus Rider Module** | 2015-05-11 08:00 → 2015-05-22 08:00 (+11d) | 2015-06-15 12:00 → 2015-06-18 17:00 (+3d) | 25.5d? → 20d | -24.5d → 0d |  |  |
| 249 | **Sync module** | 2015-05-11 08:00 → 2015-05-22 08:00 (+11d) | 2015-06-15 12:00 → 2015-06-03 17:00 (-12d) | 25.5d? → 9d | -24.5d → 0d |  |  |
| 250 | PhoneNumberSync module | 2015-06-12 13:00 → 2015-05-22 08:00 (-21d) | 2015-06-15 12:00 → 2015-05-26 17:00 (-20d) | 1d? → 3d | -24.5d → 0d |  |  |
| 251 | Connect Facebook module | 2015-05-11 08:00 → 2015-05-27 08:00 (+16d) | 2015-05-11 17:00 → 2015-05-28 17:00 (+17d) | 1d → 2d |  | none → 250 |  |
| 252 | Show Favorite place module | 2015-05-11 08:00 → 2015-05-29 08:00 (+18d) | 2015-05-11 17:00 → 2015-05-29 17:00 (+18d) |  |  | none → 251 |  |
| 253 | Show Favorite bus module | 2015-05-11 08:00 → 2015-06-01 08:00 (+21d) | 2015-05-11 17:00 → 2015-06-01 17:00 (+21d) |  |  | none → 252 |  |
| 254 | Add/remove Favorite place module | 2015-05-11 08:00 → 2015-06-02 08:00 (+22d) | 2015-05-11 17:00 → 2015-06-02 17:00 (+22d) |  |  | none → 253 |  |
| 255 | About module | 2015-05-11 08:00 → 2015-06-03 08:00 (+23d) | 2015-05-11 17:00 → 2015-06-03 17:00 (+23d) |  |  | none → 254 |  |
| 256 | **Bus module** | 2015-05-11 08:00 → 2015-05-22 08:00 (+11d) | 2015-05-11 17:00 → 2015-06-16 17:00 (+36d) | 1d → 18d | 0d → 0.8d |  |  |
| 257 | Bus list module | 2015-05-11 08:00 → 2015-05-22 08:00 (+11d) | 2015-05-11 17:00 → 2015-05-22 17:00 (+11d) |  | 0d → 0.8d | none → 187 |  |
| 258 | Bus info module | 2015-05-11 08:00 → 2015-05-25 08:00 (+14d) | 2015-05-11 17:00 → 2015-05-27 17:00 (+16d) | 1d → 3d | 0d → 0.8d | none → 257 |  |
| 259 | Bus route module | 2015-05-11 08:00 → 2015-05-28 08:00 (+17d) | 2015-05-11 17:00 → 2015-05-29 17:00 (+18d) | 1d → 2d | 0d → 0.8d | none → 258 |  |
| 260 | Bus nearest module | 2015-05-11 08:00 → 2015-06-01 08:00 (+21d) | 2015-05-11 17:00 → 2015-06-03 17:00 (+23d) | 1d → 3d | 0d → 0.8d | none → 259 |  |
| 261 | Bus map module | 2015-05-11 08:00 → 2015-06-04 08:00 (+24d) | 2015-05-11 17:00 → 2015-06-05 12:00 (+25d) | 1d → 1.5d | 0d → 0.8d | none → 260 |  |
| 262 | Set/unset favorite bus module | 2015-05-11 08:00 → 2015-06-05 13:00 (+25d) | 2015-05-11 17:00 → 2015-06-08 12:00 (+28d) |  | 0d → 0.8d | none → 261 |  |
| 263 | Remind module | 2015-05-11 08:00 → 2015-06-08 13:00 (+28d) | 2015-05-11 17:00 → 2015-06-10 17:00 (+30d) | 1d → 2.5d | 0d → 0.8d | none → 262 |  |
| 264 | Track module | 2015-05-11 08:00 → 2015-06-11 08:00 (+31d) | 2015-05-11 17:00 → 2015-06-12 12:00 (+32d) | 1d → 1.5d | 0d → 0.8d | none → 263 |  |
| 265 | Get notification module | 2015-05-11 08:00 → 2015-06-12 13:00 (+32d) | 2015-05-11 17:00 → 2015-06-16 12:00 (+36d) | 1d → 2d | 0d → 0.8d | none → 264 |  |
| 266 | Swap direction module | 2015-05-11 08:00 → 2015-06-16 13:00 (+36d) | 2015-05-11 17:00 → 2015-06-16 17:00 (+36d) | 1d → 0.5d | 0d → 0.8d | none → 265 |  |
| 267 | **Shigeki module** | 2015-05-11 08:00 → 2015-05-22 08:00 (+11d) | 2015-05-11 17:00 → 2015-06-03 12:00 (+23d) | 1d → 8.5d | 0d → 11.5d |  |  |
| 268 | Achievement module | 2015-05-11 08:00 → 2015-05-22 08:00 (+11d) | 2015-05-11 17:00 → 2015-05-25 12:00 (+14d) | 1d → 1.5d | 0d → 11.5d | none → 187 |  |
| 269 | Collection module | 2015-05-11 08:00 → 2015-05-25 13:00 (+14d) | 2015-05-11 17:00 → 2015-05-26 17:00 (+15d) | 1d → 1.5d | 0d → 11.5d | none → 268 |  |
| 270 | Mission module | 2015-05-11 08:00 → 2015-05-27 08:00 (+16d) | 2015-05-11 17:00 → 2015-05-28 12:00 (+17d) | 1d → 1.5d | 0d → 11.5d | none → 269 |  |
| 271 | Statistic module | 2015-05-11 08:00 → 2015-05-28 13:00 (+17d) | 2015-05-11 17:00 → 2015-05-29 17:00 (+18d) | 1d → 1.5d | 0d → 11.5d | none → 270 |  |
| 272 | Rank module | 2015-05-11 08:00 → 2015-06-01 08:00 (+21d) | 2015-05-11 17:00 → 2015-06-01 17:00 (+21d) |  | 0d → 11.5d | none → 271 |  |
| 273 | Scan QR code module | 2015-05-11 08:00 → 2015-06-02 08:00 (+22d) | 2015-05-11 17:00 → 2015-06-03 12:00 (+23d) | 1d → 1.5d | 0d → 11.5d | none → 272 |  |
| 274 | **Search module** | 2015-05-11 08:00 → 2015-06-04 08:00 (+24d) | 2015-05-11 17:00 → 2015-06-15 17:00 (+35d) | 1d → 8d |  |  |  |
| 275 | Search bus module | 2015-05-11 08:00 → 2015-06-04 08:00 (+24d) | 2015-05-11 17:00 → 2015-06-04 17:00 (+24d) |  |  | none → 255 |  |
| 276 | Search route module | 2015-05-11 08:00 → 2015-06-05 08:00 (+25d) | 2015-05-11 17:00 → 2015-06-11 17:00 (+31d) | 1d → 5d |  | none → 275 |  |
| 277 | Search Favorite bus module | 2015-05-11 08:00 → 2015-06-12 08:00 (+32d) | 2015-05-11 17:00 → 2015-06-12 17:00 (+32d) |  |  | none → 276 |  |
| 278 | Search Favorite place module | 2015-05-22 15:24 → 2015-06-15 08:00 (+24d) | 2015-05-22 16:12 → 2015-06-15 17:00 (+24d) | 0.1d → 1d | -31.12d → 0d | Search Favorite bus module → 277 | resources PhuongBB → none |
| 279 | Setting module | 2015-05-22 16:12 → 2015-06-16 08:00 (+25d) | 2015-05-25 08:48 → 2015-06-18 17:00 (+24d) | 0.2d → 3d | -31.12d → 0d |  | resources PhuongBB → none |
| 280 | Web service | 2015-05-20 16:12 → 2015-06-03 13:00 (+14d) | 2015-05-26 13:48 → 2015-06-10 12:00 (+15d) | 2d → 5d | -10.6d → 27.9d | none → 273 | resources NamNT → none |
| 281 | Complete coding | 2015-05-11 08:00 → 2015-06-18 17:00 (+38d) | 2015-05-11 17:00 → 2015-06-18 17:00 (+38d) | 1d → 0d | 0d → 21.4d | none → 187, 255, 266, 273, 278, 280, 279 |  |
| 282 | Q & A Management (update) | 2015-05-11 08:00 → 2015-06-09 08:00 (+29d) | 2015-05-11 17:00 → 2015-06-09 17:00 (+29d) |  | 0d → 28.7d | none → 246 |  |
| 283 | **Progress report 4** | 2015-05-11 08:00 → 2015-06-19 08:00 (+39d) | 2015-05-11 17:00 → 2015-06-19 12:00 (+39d) | 1d → 0.5d | 0d → 21.4d |  |  |
| 288 | **Report no.4** | 2015-05-11 08:00 → 2015-06-19 10:24 (+39d) | 2015-05-11 17:00 → 2015-07-07 10:24 (+57d) | 1d → 7d | 0d → 21.4d |  |  |
| 289 | Develop Report no.4 (draft version) | 2015-05-11 08:00 → 2015-06-19 10:24 (+39d) | 2015-05-11 17:00 → 2015-06-29 10:24 (+49d) |  | 0d → 21.4d | none → 246, 281, 282, 284 |  |
| 290 | Review Report no.4 (draft version) | 2015-05-11 08:00 → 2015-06-29 10:24 (+49d) | 2015-05-11 17:00 → 2015-07-01 10:24 (+51d) | 1d → 2d | 0d → 21.4d | none → 289 |  |
| 291 | Update Report no.4 (draft version) | 2015-05-11 08:00 → 2015-07-01 10:24 (+51d) | 2015-05-11 17:00 → 2015-07-03 10:24 (+53d) | 1d → 2d | 0d → 21.4d | none → 290 |  |
| 292 | Submit Report no.4 (first version) | 2015-05-11 08:00 → 2015-07-03 10:24 (+53d) | 2015-05-11 17:00 → 2015-07-03 10:24 (+53d) | 1d → 0d | 0d → 21.4d | none → 291 |  |
| 293 | Revise after got comments for Report no.4 | 2015-05-11 08:00 → 2015-07-03 10:24 (+53d) | 2015-05-11 17:00 → 2015-07-07 10:24 (+57d) | 1d → 2d | 0d → 21.4d | none → 292 |  |
| 294 | Submit Report no.4 (final version) | 2015-05-11 08:00 → 2015-07-07 10:24 (+57d) | 2015-05-11 17:00 → 2015-07-07 10:24 (+57d) | 1d → 0d | 0d → 21.4d | none → 293 |  |
| 295 | **Testing** | 2015-05-11 08:00 → 2015-05-22 09:36 (+11d) | 2015-05-11 17:00 → 2015-07-20 16:12 (+70d) | 1d? → 36.7d |  |  |  |
| 296 | **Execute test & fix bugs** | 2015-05-11 08:00 → 2015-05-22 09:36 (+11d) | 2015-05-11 17:00 → 2015-07-20 10:24 (+70d) | 1d? → 36.1d |  |  |  |
| 297 | **Round 1** | 2015-05-11 08:00 → 2015-05-22 09:36 (+11d) | 2015-05-11 17:00 → 2015-07-08 15:24 (+58d) | 1d? → 28.6d |  |  |  |
| 298 | **Execute unit test** | 2015-05-11 08:00 → 2015-05-22 09:36 (+11d) | 2015-05-11 17:00 → 2015-06-19 15:24 (+39d) | 1d? → 20.6d |  |  |  |
| 299 | Bus driver module | 2015-05-11 08:00 → 2015-05-22 09:36 (+11d) | 2015-05-11 17:00 → 2015-05-22 17:00 (+11d) | 1d → 0.8d | 0d → 19.8d | none → 187, 217 |  |
| 300 | Sync module | 2015-05-11 08:00 → 2015-06-04 08:00 (+24d) | 2015-05-11 17:00 → 2015-06-04 15:24 (+24d) | 1d? → 0.8d | 0d → 11d | none → 217, 255 |  |
| 301 | Bus module | 2015-05-11 08:00 → 2015-06-17 08:00 (+37d) | 2015-05-11 17:00 → 2015-06-18 17:00 (+38d) | 1d → 2d | 0d → 0.8d | none → 217, 266 |  |
| 302 | Shigeki module | 2015-05-11 08:00 → 2015-06-03 13:00 (+23d) | 2015-05-11 17:00 → 2015-06-04 10:24 (+24d) | 1d → 0.8d | 0d → 11.5d | none → 217, 273 |  |
| 303 | Search module | 2015-05-11 08:00 → 2015-06-16 08:00 (+36d) | 2015-05-11 17:00 → 2015-06-17 17:00 (+37d) | 1d → 2d | 0d → 1.8d | none → 217, 278 |  |
| 304 | Setting module | 2015-05-11 08:00 → 2015-06-19 08:00 (+39d) | 2015-05-11 17:00 → 2015-06-19 15:24 (+39d) | 1d? → 0.8d |  | none → 217, 279 |  |
| 305 | Fix bugs unit test | 2015-05-11 08:00 → 2015-06-19 15:24 (+39d) | 2015-05-11 17:00 → 2015-07-02 15:24 (+52d) | 1d → 4d |  | none → 299, 300, 301, 302, 303, 304 |  |
| 306 | Execute integration test | 2015-05-11 08:00 → 2015-07-02 15:24 (+52d) | 2015-05-11 17:00 → 2015-07-03 15:24 (+53d) |  |  | none → 305 |  |
| 307 | Fix bugs integration test | 2015-05-11 08:00 → 2015-07-03 15:24 (+53d) | 2015-05-11 17:00 → 2015-07-06 15:24 (+56d) |  |  | none → 306 |  |
| 308 | Execute system test | 2015-05-11 08:00 → 2015-07-06 15:24 (+56d) | 2015-05-11 17:00 → 2015-07-07 15:24 (+57d) |  |  | none → 307 |  |
| 309 | Fix bugs system test | 2015-05-11 08:00 → 2015-07-07 15:24 (+57d) | 2015-05-11 17:00 → 2015-07-08 15:24 (+58d) |  |  | none → 308 |  |
| 310 | **Round 2** | 2015-05-11 08:00 → 2015-07-08 15:24 (+58d) | 2015-05-11 17:00 → 2015-07-17 10:24 (+67d) | 1d? → 6.5d |  |  |  |
| 311 | **Execute unit test** | 2015-05-11 08:00 → 2015-07-08 15:24 (+58d) | 2015-05-11 17:00 → 2015-07-09 15:24 (+59d) | 1d? → 1d |  |  |  |
| 312 | Bus driver module | 2015-05-11 08:00 → 2015-07-08 15:24 (+58d) | 2015-05-11 17:00 → 2015-07-09 10:24 (+59d) | 1d → 0.5d | 0d → 0.5d | none → 309 |  |
| 313 | Sync module | 2015-05-11 08:00 → 2015-07-08 15:24 (+58d) | 2015-05-11 17:00 → 2015-07-09 11:12 (+59d) | 1d? → 0.6d | 0d → 0.4d | none → 309 |  |
| 314 | Bus module | 2015-05-11 08:00 → 2015-07-08 15:24 (+58d) | 2015-05-11 17:00 → 2015-07-09 15:24 (+59d) |  |  | none → 309 |  |
| 315 | Shigeki module | 2015-05-11 08:00 → 2015-07-08 15:24 (+58d) | 2015-05-11 17:00 → 2015-07-09 10:24 (+59d) | 1d → 0.5d | 0d → 0.5d | none → 309 |  |
| 316 | Search module | 2015-05-11 08:00 → 2015-07-08 15:24 (+58d) | 2015-05-11 17:00 → 2015-07-09 15:24 (+59d) |  |  | none → 309 |  |

| ID | Task | Start | Finish | Duration | Total float | Predecessors |
| --- | --- | --- | --- | --- | --- | --- |
| 317 | Setting module | 2015-05-11 08:00 → 2015-07-08 15:24 (+58d) | 2015-05-11 17:00 → 2015-07-09 13:48 (+59d) | 1d? → 0.8d | 0d → 0.2d | none → 309 |
| 318 | Fix bugs unit test | 2015-05-11 08:00 → 2015-07-09 15:24 (+59d) | 2015-05-11 17:00 → 2015-07-13 15:24 (+63d) | 1d → 2d |  | none → 312, 313, 314, 315, 316, 317 |
| 319 | Execute integration test | 2015-05-11 08:00 → 2015-07-13 15:24 (+63d) | 2015-05-11 17:00 → 2015-07-14 15:24 (+64d) |  |  | none → 318 |
| 320 | Fix bugs integration test | 2015-05-11 08:00 → 2015-07-14 15:24 (+64d) | 2015-05-11 17:00 → 2015-07-15 15:24 (+65d) |  |  | none → 319 |
| 321 | Execute system test | 2015-05-11 08:00 → 2015-07-15 15:24 (+65d) | 2015-05-11 17:00 → 2015-07-16 10:24 (+66d) | 1d → 0.5d |  | none → 320 |
| 322 | Fix bugs system test | 2015-05-11 08:00 → 2015-07-16 10:24 (+66d) | 2015-05-11 17:00 → 2015-07-17 10:24 (+67d) |  |  | none → 321 |
| 323 | Execute acceptance test & collect data | 2015-05-11 08:00 → 2015-07-17 10:24 (+67d) | 2015-05-11 17:00 → 2015-07-20 10:24 (+70d) |  |  | none → 322 |
| 324 | Complete execute test | 2015-05-11 08:00 → 2015-07-20 10:24 (+70d) | 2015-05-11 17:00 → 2015-07-20 10:24 (+70d) | 1d? → 0d |  | none → 323 |
| 325 | **Test Report** | 2015-05-11 08:00 → 2015-07-20 10:24 (+70d) | 2015-05-11 17:00 → 2015-07-20 16:12 (+70d) | 1d → 0.6d |  |  |
| 326 | Develop test report | 2015-05-11 08:00 → 2015-07-20 10:24 (+70d) | 2015-05-11 17:00 → 2015-07-20 12:00 (+70d) | 1d → 0.2d |  | none → 324 |
| 327 | Review test report | 2015-05-11 08:00 → 2015-07-20 13:00 (+70d) | 2015-05-11 17:00 → 2015-07-20 14:36 (+70d) | 1d → 0.2d |  | none → 326 |
| 328 | Update test report | 2015-05-11 08:00 → 2015-07-20 14:36 (+70d) | 2015-05-11 17:00 → 2015-07-20 16:12 (+70d) | 1d → 0.2d |  | none → 327 |
| 329 | Complete test report | 2015-05-11 08:00 → 2015-07-20 16:12 (+70d) | 2015-05-11 17:00 → 2015-07-20 16:12 (+70d) | 1d → 0d |  | none → 328 |
| 330 | **Quality report** | 2015-05-11 08:00 → 2015-07-20 16:12 (+70d) | 2015-05-11 17:00 → 2015-07-21 13:48 (+71d) | 1d → 0.7d |  |  |
| 331 | Develop quality report | 2015-05-11 08:00 → 2015-07-20 16:12 (+70d) | 2015-05-11 17:00 → 2015-07-21 09:36 (+71d) | 1d → 0.3d |  | none → 329 |
| 332 | Review quality report | 2015-05-11 08:00 → 2015-07-21 09:36 (+71d) | 2015-05-11 17:00 → 2015-07-21 11:12 (+71d) | 1d → 0.2d |  | none → 331 |
| 333 | Update quality report | 2015-05-11 08:00 → 2015-07-21 11:12 (+71d) | 2015-05-11 17:00 → 2015-07-21 13:48 (+71d) | 1d → 0.2d |  | none → 332 |
| 334 | Complete quality report | 2015-05-11 08:00 → 2015-07-21 13:48 (+71d) | 2015-05-11 17:00 → 2015-07-21 13:48 (+71d) | 1d → 0d |  | none → 333 |
| 335 | **Progress report 5** | 2015-05-11 08:00 → 2015-07-21 13:48 (+71d) | 2015-05-11 17:00 → 2015-07-22 08:48 (+72d) | 1d → 0.5d |  |  |
| 340 | **Report no.5** | 2015-05-11 08:00 → 2015-07-22 08:48 (+72d) | 2015-05-11 17:00 → 2015-07-22 13:48 (+72d) | 1d → 0.5d |  |  |
| 341 | Develop Report no.5 (draft version) | 2015-05-11 08:00 → 2015-07-22 08:48 (+72d) | 2015-05-11 17:00 → 2015-07-22 09:36 (+72d) | 1d → 0.1d |  | none → 329, 334, 339 |
| 342 | Review Report no.5 (draft version) | 2015-05-11 08:00 → 2015-07-22 09:36 (+72d) | 2015-05-11 17:00 → 2015-07-22 11:12 (+72d) | 1d → 0.2d |  | none → 341 |
| 343 | Update Report no.5 (draft version) | 2015-05-11 08:00 → 2015-07-22 11:12 (+72d) | 2015-05-11 17:00 → 2015-07-22 12:00 (+72d) | 1d → 0.1d |  | none → 342 |
| 344 | Submit Report no.5 (first version) | 2015-05-11 08:00 → 2015-07-22 12:00 (+72d) | 2015-05-11 17:00 → 2015-07-22 12:00 (+72d) | 1d → 0d |  | none → 343 |
| 345 | Revise after got comments for Report no.5 | 2015-05-11 08:00 → 2015-07-22 13:00 (+72d) | 2015-05-11 17:00 → 2015-07-22 13:48 (+72d) | 1d → 0.1d |  | none → 344 |
| 346 | Submit Report no.5 (final version) | 2015-05-11 08:00 → 2015-07-22 13:48 (+72d) | 2015-05-11 17:00 → 2015-07-22 13:48 (+72d) | 1d → 0d |  | none → 345 |
| 347 | **Termination** | 2015-05-11 08:00 → 2015-07-22 13:48 (+72d) | 2015-05-11 17:00 → 2015-08-05 14:36 (+86d) | 1d → 10.1d |  |  |
| 348 | **Report no.6** | 2015-05-11 08:00 → 2015-07-22 13:48 (+72d) | 2015-05-11 17:00 → 2015-07-31 14:36 (+81d) | 1d → 7.1d |  |  |
| 349 | Complete source code & final report | 2015-05-11 08:00 → 2015-07-22 13:48 (+72d) | 2015-05-11 17:00 → 2015-07-23 13:48 (+73d) |  |  | none → 346 |
| 350 | Develop installation guide | 2015-05-11 08:00 → 2015-07-23 13:48 (+73d) | 2015-05-11 17:00 → 2015-07-24 08:48 (+74d) | 1d → 0.5d |  | none → 349 |
| 351 | Develop user guideline | 2015-05-11 08:00 → 2015-07-24 08:48 (+74d) | 2015-05-11 17:00 → 2015-07-27 08:48 (+77d) |  |  | none → 350 |
| 352 | Complete Project Result Assessment | 2015-05-11 08:00 → 2015-07-27 08:48 (+77d) | 2015-05-11 17:00 → 2015-07-28 08:48 (+78d) |  |  | none → 351 |
| 353 | Conduct lessons learned | 2015-05-11 08:00 → 2015-07-28 08:48 (+78d) | 2015-05-11 17:00 → 2015-07-28 14:36 (+78d) | 1d → 0.6d |  | none → 352 |
| 354 | Complete Presentation slide | 2015-05-11 08:00 → 2015-07-28 14:36 (+78d) | 2015-05-11 17:00 → 2015-07-29 14:36 (+79d) |  |  | none → 353 |
| 355 | Review Report no.6 (draft version) | 2015-05-11 08:00 → 2015-07-29 14:36 (+79d) | 2015-05-11 17:00 → 2015-07-30 14:36 (+80d) |  |  | none → 354 |
| 356 | Update Report no.6 (draft version) | 2015-05-11 08:00 → 2015-07-30 14:36 (+80d) | 2015-05-11 17:00 → 2015-07-31 09:36 (+81d) | 1d → 0.5d |  | none → 355 |
| 357 | Submit Report no.6 (first version) | 2015-05-11 08:00 → 2015-07-31 09:36 (+81d) | 2015-05-11 17:00 → 2015-07-31 09:36 (+81d) | 1d → 0d |  | none → 356 |
| 358 | Revise after got comments for Report no.6 | 2015-05-11 08:00 → 2015-07-31 09:36 (+81d) | 2015-05-11 17:00 → 2015-07-31 14:36 (+81d) | 1d → 0.5d |  | none → 357 |
| 359 | Submit Report no.6 (final version) | 2015-05-11 08:00 → 2015-07-31 14:36 (+81d) | 2015-05-11 17:00 → 2015-07-31 14:36 (+81d) | 1d → 0d |  | none → 358 |
| 360 | Submit Final report & CD source code | 2015-05-11 08:00 → 2015-07-31 14:36 (+81d) | 2015-05-11 17:00 → 2015-07-31 14:36 (+81d) | 1d → 0d |  | none → 359 |
| 361 | **Pre-closing** | 2015-05-11 08:00 → 2015-07-31 14:36 (+81d) | 2015-05-11 17:00 → 2015-08-05 09:36 (+86d) | 1d → 2.5d |  |  |
| 362 | Training presentation | 2015-05-11 08:00 → 2015-07-31 14:36 (+81d) | 2015-05-11 17:00 → 2015-08-05 09:36 (+86d) | 1d → 2.5d |  | none → 360 |
| 363 | **Closing** | 2015-05-11 08:00 → 2015-08-05 09:36 (+86d) | 2015-05-11 17:00 → 2015-08-05 14:36 (+86d) | 1d → 0.5d |  |  |
| 364 | Present Capstone Project & Completed | 2015-05-11 08:00 → 2015-08-05 09:36 (+86d) | 2015-05-11 17:00 → 2015-08-05 14:36 (+86d) | 1d → 0.5d |  | none → 362 |

## Version 5 (saved 2015-06-01, file BUSS_Project_Schedule_v1.04 _EN.mpp)

Note of the change: update things

Last finish 2015-08-05 → 2015-09-01 (+27d). Complete tasks 0 → 36.

Changed:

| ID | Task | Start | Finish | Duration | Complete | Total float | Predecessors | Other |
| --- | --- | --- | --- | --- | --- | --- | --- | --- |
| 1 | **BL** | 2015-05-11 08:00 A | 2015-08-05 14:36 → 2015-09-01 15:24 (+27d) | 57.7d → 76.8d | 0% → 14% |  |  |  |
| 2 | **Initiation** | 2015-05-11 08:00 A | 2015-05-25 09:36 → 2015-06-09 10:24 (+15d) | 10.2d → 21.3d | 0% → 95% | 47.5d → 55.5d |  |  |
| 3 | System feasible study | 2015-05-11 08:00 A | 2015-05-11 10:24 A |  | 0% → 100% | 47.5d → none |  |  |
| 4 | Define business situation | 2015-05-11 10:24 A | 2015-05-12 09:36 → 2015-05-11 14:36 A (-1d) | 0.8d → 0.4d | 0% → 100% | 47.5d → none |  |  |
| 5 | Develop project idea | 2015-05-12 09:36 → 2015-05-11 14:36 A (-1d) | 2015-05-13 12:00 → 2015-05-12 12:00 A (-1d) | 1.3d → 0.8d | 0% → 100% | 47.5d → none |  |  |
| 6 | Define project and system scope | 2015-05-13 13:00 → 2015-05-12 13:00 A (-1d) | 2015-05-13 17:00 → 2015-05-12 17:00 A (-1d) |  | 0% → 100% | 47.5d → none |  |  |
| 7 | Prepare project | 2015-05-14 08:00 → 2015-05-13 08:00 A (-1d) | 2015-05-14 17:00 → 2015-05-13 17:00 A (-1d) |  | 0% → 100% | 47.5d → none |  |  |
| 8 | Kick-off meeting | 2015-05-15 08:00 → 2015-05-14 08:00 A (-1d) | 2015-05-15 11:12 → 2015-05-14 11:12 A (-1d) |  | 0% → 100% | 47.5d → none |  |  |
| 9 | Q & A Management | 2015-05-15 11:12 → 2015-05-14 11:12 A (-1d) | 2015-05-15 16:12 → 2015-05-14 16:12 A (-1d) |  | 0% → 100% | 47.8d → none |  |  |
| 10 | **Technologies** | 2015-05-15 11:12 → 2015-05-14 11:12 A (-1d) | 2015-05-25 09:36 → 2015-06-09 10:24 (+15d) | 5.8d → 17.9d | 0% → 82% | 47.5d → 55.5d |  |  |
| 11 | Research development technologies | 2015-05-15 11:12 → 2015-05-14 11:12 A (-1d) | 2015-05-19 10:24 → 2015-05-28 17:00 A (+9d) | 1.8d → 2d | 0% → 100% | 47.5d → none |  |  |
| 12 | Install and configure Eclipse IDE and Android SDK | 2015-05-19 10:24 → 2015-05-29 08:00 A (+10d) | 2015-05-19 15:24 → 2015-06-02 08:48 A (+14d) | 0.5d → 1d | 0% → 100% | 48.3d → none |  |  |
| 13 | Training Java, Android SDK & Eclipse IDE | 2015-05-19 15:24 → 2015-06-02 08:48 A (+14d) | 2015-05-22 11:12 → 2015-06-04 08:48 (+13d) | 2.2d → 2d | 0% → 95% | 48.3d → 58.7d |  |  |
| 14 | Install and configure Visual Studio, SQL Server | 2015-05-19 11:12 → 2015-05-29 08:00 A (+10d) | 2015-05-21 10:24 → 2015-06-04 09:36 (+14d) | 0.9d → 1d | 0% → 50% | 47.5d → 57.85d |  |  |
| 15 | Study web service | 2015-05-21 10:24 → 2015-06-05 15:24 A (+15d) | 2015-05-25 09:36 → 2015-06-09 10:24 (+15d) |  | 0% → 50% | 47.5d → 55.5d |  | was named Study web service using .NET & SQL Server |
| 16 | **SRS/PP/Concept design Review checklist** | 2015-05-15 16:12 → 2015-05-14 16:12 A (-1d) | 2015-05-20 11:12 → 2015-05-19 16:12 A (-1d) | 2.5d → 3d | 0% → 100% | 47.8d → none |  |  |
| 17 | Develop review checklist | 2015-05-15 16:12 → 2015-05-14 16:12 A (-1d) | 2015-05-19 16:12 → 2015-05-19 11:12 A | 2d → 2.5d | 0% → 100% | 47.8d → none |  |  |
| 18 | Review review checklist | 2015-05-19 16:12 → 2015-05-19 11:12 A | 2015-05-20 08:48 → 2015-05-19 13:48 A (-1d) |  | 0% → 100% | 47.8d → none |  |  |
| 19 | Update review checklist | 2015-05-20 08:48 → 2015-05-19 13:48 A (-1d) | 2015-05-20 11:12 → 2015-05-19 16:12 A (-1d) |  | 0% → 100% | 47.8d → none |  |  |
| 20 | Complete review checklist | 2015-05-20 11:12 → 2015-05-19 16:12 A (-1d) | 2015-05-20 11:12 → 2015-05-19 16:12 A (-1d) |  | 0% → 100% | 47.8d → none |  |  |
| 21 | **Requirements** | 2015-05-15 11:12 → 2015-05-14 11:12 A (-1d) | 2015-05-22 08:48 → 2015-05-21 13:48 A (-1d) | 4.7d → 5.2d | 0% → 100% | 47.8d → none |  |  |
| 22 | **User Requirements Specification** | 2015-05-15 11:12 → 2015-05-14 11:12 A (-1d) | 2015-05-21 11:12 → 2015-05-20 16:12 A (-1d) | 4d → 4.5d | 0% → 100% | 47.8d → none |  |  |
| 23 | Collect business requirements and processes | 2015-05-15 11:12 → 2015-05-14 11:12 A (-1d) | 2015-05-15 16:12 → 2015-05-14 16:12 A (-1d) |  | 0% → 100% | 47.8d → none |  |  |
| 24 | Create draft requirements | 2015-05-15 16:12 → 2015-05-14 16:12 A (-1d) | 2015-05-18 11:12 → 2015-05-15 16:12 A (-3d) | 0.5d → 1d | 0% → 100% | 47.8d → none |  |  |
| 25 | Complete draft requirements | 2015-05-18 11:12 → 2015-05-15 16:12 A (-3d) | 2015-05-18 11:12 → 2015-05-15 16:12 A (-3d) |  | 0% → 100% | 47.8d → none |  |  |
| 26 | Develop main function and processes | 2015-05-20 11:12 → 2015-05-19 16:12 A (-1d) | 2015-05-21 11:12 → 2015-05-20 16:12 A (-1d) |  | 0% → 100% | 48d → none |  |  |
| 27 | Review User Requirement Specification with checklist | 2015-05-21 11:12 → 2015-05-20 16:12 A (-1d) | 2015-05-21 14:36 → 2015-05-21 09:36 A |  | 0% → 100% | 48d → none |  |  |
| 28 | Update User Requirement Specification | 2015-05-21 14:36 → 2015-05-21 09:36 A | 2015-05-22 08:48 → 2015-05-21 13:48 A (-1d) |  | 0% → 100% | 48d → none |  |  |
| 29 | Complete User Requirement Specification | 2015-05-22 08:48 → 2015-05-21 13:48 A (-1d) | 2015-05-22 08:48 → 2015-05-21 13:48 A (-1d) |  | 0% → 100% | 48d → none |  |  |
| 30 | **Concept design** | 2015-05-18 11:12 → 2015-05-15 16:12 A (-3d) | 2015-05-22 16:12 → 2015-05-20 16:12 A (-2d) | 4.5d → 3d | 0% → 100% | 47.8d → none |  |  |
| 31 | Create draft concept design | 2015-05-18 11:12 → 2015-05-15 16:12 A (-3d) | 2015-05-20 11:12 → 2015-05-19 11:12 A (-1d) | 1.4d → 1.5d | 0% → 100% | 47.8d → none |  |  |
| 32 | Review concept design with checklist | 2015-05-20 11:12 → 2015-05-19 16:12 A (-1d) | 2015-05-20 16:12 → 2015-05-20 11:12 A |  | 0% → 100% | 47.8d → none |  |  |
| 33 | Update concept design | 2015-05-22 11:12 → 2015-05-20 11:12 A (-2d) | 2015-05-22 16:12 → 2015-05-20 16:12 A (-2d) |  | 0% → 100% | 47.8d → none |  |  |
| 34 | Complete concept design | 2015-05-22 16:12 → 2015-05-20 16:12 A (-2d) | 2015-05-22 16:12 → 2015-05-20 16:12 A (-2d) |  | 0% → 100% | 47.8d → none |  |  |
| 35 | **Project plan** | 2015-05-15 11:12 → 2015-05-14 11:12 A (-1d) | 2015-05-22 16:12 → 2015-05-22 15:24 A | 5.5d → 6.4d | 0% → 100% | 47.8d → none |  |  |
| 36 | Develop project definition | 2015-05-15 11:12 → 2015-05-14 11:12 A (-1d) | 2015-05-15 16:12 → 2015-05-15 08:48 A | 0.5d → 0.7d | 0% → 100% | 48d → none |  |  |
| 37 | Develop Work Breakdown Structure | 2015-05-15 16:12 → 2015-05-15 08:48 A | 2015-05-18 17:00 → 2015-05-15 17:00 A (-3d) | 0.7d → 0.9d | 0% → 100% | 48d → none |  |  |
| 38 | Create Project Schedule | 2015-05-19 13:00 → 2015-05-18 08:00 A (-1d) | 2015-05-20 17:00 → 2015-05-19 17:00 A (-1d) | 1.5d → 2d | 0% → 100% | 47.8d → none |  |  |
| 39 | Create Configuration Management Plan version 1.0 | 2015-05-21 08:00 → 2015-05-20 08:00 A (-1d) | 2015-05-21 12:00 → 2015-05-20 15:24 A (-1d) | 0.5d → 0.8d | 0% → 100% | 47.8d → none |  |  |
| 40 | Create Project Plan (first version) | 2015-05-21 13:00 → 2015-05-20 15:24 A (-1d) | 2015-05-22 12:00 → 2015-05-22 10:24 A | 1d → 1.5d | 0% → 100% | 47.8d → none |  |  |
| 41 | Review Project Plan (first version) | 2015-05-22 12:00 → 2015-05-22 10:24 A | 2015-05-22 16:12 → 2015-05-22 15:24 A | 0.4d → 0.5d | 0% → 100% | 47.8d → none |  |  |
| 42 | Complete Project Plan (final version) | 2015-05-22 16:12 → 2015-05-22 15:24 A | 2015-05-22 16:12 → 2015-05-22 15:24 A |  | 0% → 100% | 47.8d → none |  |  |
| 43 | **Progress Report 1** | 2015-05-22 13:00 → 2015-05-22 10:24 A | 2015-05-22 15:24 → 2015-05-22 17:00 A | 0.3d → 0.7d | 0% → 100% | 47.9d → none |  |  |
| 44 | Develop Progress Report 1 | 2015-05-22 13:00 → 2015-05-22 10:24 A | 2015-05-22 13:48 → 2015-05-22 14:36 A | 0.1d → 0.4d | 0% → 100% | 47.9d → none |  |  |
| 45 | Review Progress Report 1 | 2015-05-22 13:48 → 2015-05-22 14:36 A | 2015-05-22 14:36 → 2015-05-22 16:12 A | 0.1d → 0.2d | 0% → 100% | 47.9d → none |  |  |
| 46 | Update Progress Report 1 | 2015-05-22 14:36 → 2015-05-22 16:12 A | 2015-05-22 15:24 → 2015-05-22 17:00 A |  | 0% → 100% | 47.9d → none |  |  |
| 47 | Complete Progress Report 1 | 2015-05-22 15:24 → 2015-05-22 17:00 A | 2015-05-22 15:24 → 2015-05-22 17:00 A |  | 0% → 100% | 47.9d → none |  |  |
| 48 | Submit PP, URS, Concept Design | 2015-05-22 16:12 → 2015-05-22 17:00 | 2015-05-22 16:12 → 2015-05-22 17:00 |  |  | 47.8d → 0d |  |  |
| 49 | **Solution** | 2015-05-11 08:00 → 2015-05-25 08:00 A (+14d) | 2015-06-05 11:12 → 2015-07-09 12:00 (+34d) | 19.4d → 28.5d | 0% → 1% | 0d → 38.3d |  |  |
| 50 | **Requirements** | 2015-05-11 08:00 → 2015-05-25 08:00 A (+14d) | 2015-05-22 14:36 → 2015-06-08 08:48 (+17d) | 9.7d → 10.1d | 0% → 2% |  |  |  |
| 51 | **Software Requirements Specification** | 2015-05-11 08:00 → 2015-05-25 08:00 A (+14d) | 2015-05-22 14:36 → 2015-06-08 08:48 (+17d) | 9.7d → 10.1d | 0% → 2% |  |  |  |
| 52 | **Functional Requirement Specification** | 2015-05-11 08:00 → 2015-05-25 08:00 A (+14d) | 2015-05-22 14:36 → 2015-06-01 13:48 (+10d) | 9.7d → 5.6d | 0% → 3% | 0d → 0.4d |  |  |
| 53 | **Bus Driver Module** | 2015-05-22 08:48 → 2015-05-25 08:00 A (+3d) | 2015-05-22 14:36 → 2015-05-25 13:48 A (+3d) |  | 0% → 100% | 48d → none |  |  |
| 54 | Send bus info module | 2015-05-22 08:48 → 2015-05-25 08:00 A (+3d) | 2015-05-22 14:36 → 2015-05-25 13:48 A (+3d) |  | 0% → 100% | 48d → none | 29 → 48 | resources none → AnhTT |
| 55 | **Bus Rider Module** | 2015-05-11 08:00 → 2015-05-25 08:00 (+14d) | 2015-05-11 17:00 → 2015-06-01 13:48 (+21d) | 1d → 5.6d |  |  |  |  |
| 56 | **Common module** | 2015-05-11 08:00 → 2015-05-25 08:00 (+14d) | 2015-05-11 17:00 → 2015-05-28 17:00 (+17d) | 1d → 4d |  | 56.7d → 2d |  |  |
| 57 | Turn on/off Snooze mode | 2015-05-11 08:00 → 2015-05-25 08:00 (+14d) | 2015-05-11 12:00 → 2015-05-25 17:00 (+14d) | 0.5d → 1d |  | 57.2d → 2d | none → 48 | resources none → CuongNLT |
| 58 | View notification | 2015-05-11 08:00 → 2015-05-26 08:00 (+15d) | 2015-05-11 08:48 → 2015-05-26 11:12 (+15d) | 0.1d → 0.4d |  | 57.6d → 2d | none → 57 | resources none → CuongNLT |
| 59 | Turn on/off Notification | 2015-05-11 08:00 → 2015-05-26 11:12 (+15d) | 2015-05-11 08:48 → 2015-05-26 13:48 (+15d) | 0.1d → 0.2d |  | 57.6d → 2d | none → 58 | resources none → CuongNLT |
| 60 | Change app setting | 2015-05-11 08:00 → 2015-05-26 13:48 (+15d) | 2015-05-11 17:00 → 2015-05-27 17:00 (+16d) | 1d → 1.4d |  | 56.7d → 2d | none → 59 | resources none → CuongNLT |
| 61 | View dashboard | 2015-05-11 08:00 → 2015-05-28 08:00 (+17d) | 2015-05-11 17:00 → 2015-05-28 17:00 (+17d) |  |  | 56.7d → 2d | none → 60 | resources none → CuongNLT |
| 62 | **Account Management module** | 2015-05-11 08:00 → 2015-05-25 08:00 (+14d) | 2015-05-11 13:48 → 2015-05-26 13:48 (+15d) | 0.6d → 1.6d |  | 57.1d → 2.1d |  |  |
| 63 | Log in | 2015-05-11 08:00 → 2015-05-25 08:00 (+14d) | 2015-05-11 13:48 → 2015-05-25 13:48 (+14d) |  |  | 57.1d → 2.1d | none → 48 | resources none → NamNT |
| 64 | Log out | 2015-05-11 08:00 → 2015-05-25 13:48 (+14d) | 2015-05-11 10:24 → 2015-05-25 16:12 (+14d) |  |  | 57.4d → 2.1d | none → 63 | resources none → NamNT |
| 65 | View account profile | 2015-05-11 08:00 → 2015-05-25 16:12 (+14d) | 2015-05-11 09:36 → 2015-05-26 08:48 (+15d) |  |  | 57.5d → 2.1d | none → 64 | resources none → NamNT |
| 66 | Change account info | 2015-05-11 08:00 → 2015-05-26 08:48 (+15d) | 2015-05-11 09:36 → 2015-05-26 10:24 (+15d) |  |  | 57.5d → 2.1d | none → 65 | resources none → NamNT |
| 67 | Forgot password | 2015-05-11 08:00 → 2015-05-26 10:24 (+15d) | 2015-05-11 10:24 → 2015-05-26 13:48 (+15d) |  |  | 57.4d → 2.1d | none → 66 | resources none → NamNT |
| 68 | **Bus module** | 2015-05-11 08:00 → 2015-05-25 08:00 (+14d) | 2015-05-11 12:00 → 2015-05-28 17:00 (+17d) | 0.5d → 4d |  | 0d → 2d |  |  |
| 69 | View bus list | 2015-05-11 08:00 → 2015-05-25 08:00 (+14d) | 2015-05-11 09:36 → 2015-05-25 10:24 (+14d) | 0.2d → 0.3d |  | 57.5d → 2d | none → 48 | resources none → PhuongBB |
| 70 | View bus info | 2015-05-11 08:00 → 2015-05-25 10:24 (+14d) | 2015-05-11 09:36 → 2015-05-25 13:48 (+14d) | 0.2d → 0.3d |  | 57.5d → 2d | none → 69 | resources none → PhuongBB |

| ID | Task | Start | Finish | Duration | Total float | Predecessors | Other |
| --- | --- | --- | --- | --- | --- | --- | --- |
| 71 | View bus route | 2015-05-11 08:00 → 2015-05-25 13:48 (+14d) | 2015-05-11 10:24 → 2015-05-26 09:36 (+15d) | 0.3d → 0.6d | 57.4d → 2d | none → 70 | resources none → PhuongBB |
| 72 | View nearest bus | 2015-05-11 08:00 → 2015-05-26 09:36 (+15d) | 2015-05-11 12:00 → 2015-05-27 09:36 (+16d) | 0.5d → 1d | 57.2d → 2d | none → 71 | resources none → PhuongBB |
| 73 | View bus map | 2015-05-11 08:00 → 2015-05-27 09:36 (+16d) | 2015-05-11 11:12 → 2015-05-27 17:00 (+16d) | 0.4d → 0.8d | 0d → 2d | none → 72 | resources none → PhuongBB |
| 74 | View bus near me | 2015-05-11 08:00 → 2015-05-28 08:00 (+17d) | 2015-05-11 09:36 → 2015-05-28 17:00 (+17d) | 0.2d → 1d | 57.5d → 2d | none → 73 | resources none → PhuongBB |
| 75 | **Path Finder module** | 2015-05-11 08:00 → 2015-05-25 13:48 (+14d) | 2015-05-11 11:12 → 2015-05-28 15:24 (+17d) | 0.4d → 3.2d | 57.3d → 0.4d |  |  |
| 76 | Find path | 2015-05-11 08:00 → 2015-05-25 13:48 (+14d) | 2015-05-11 11:12 → 2015-05-27 08:48 (+16d) | 0.4d → 1.5d | 57.3d → 0.4d | none → 54 | resources none → AnhTT |
| 77 | View paths found | 2015-05-11 08:00 → 2015-05-27 08:48 (+16d) | 2015-05-11 08:48 → 2015-05-27 12:00 (+16d) | 0.1d → 0.4d | 57.6d → 0.4d | none → 76 | resources none → AnhTT |
| 78 | View path detail | 2015-05-11 08:00 → 2015-05-27 13:00 (+16d) | 2015-05-11 09:36 → 2015-05-28 09:36 (+17d) | 0.2d → 0.7d | 57.5d → 0.4d | none → 77 | resources none → AnhTT |
| 79 | View direction | 2015-05-11 08:00 → 2015-05-28 09:36 (+17d) | 2015-05-11 09:36 → 2015-05-28 15:24 (+17d) | 0.2d → 0.6d | 57.5d → 0.4d | none → 78 | resources none → AnhTT |
| 80 | **Reminder module** | 2015-05-11 08:00 → 2015-05-28 15:24 (+17d) | 2015-05-11 09:36 → 2015-06-01 13:48 (+21d) | 0.2d → 1.8d | 57.5d → 0.4d |  |  |
| 81 | View bus reminder | 2015-05-11 08:00 → 2015-05-28 15:24 (+17d) | 2015-05-11 09:36 → 2015-05-29 10:24 (+18d) | 0.2d → 0.5d | 57.5d → 0.4d | none → 79 | resources none → AnhTT |
| 82 | Add reminder | 2015-05-11 08:00 → 2015-05-29 10:24 (+18d) | 2015-05-11 08:48 → 2015-05-29 12:00 (+18d) | 0.1d → 0.2d | 57.6d → 0.4d | none → 81 | resources none → AnhTT |
| 83 | Edit reminder | 2015-05-11 08:00 → 2015-05-29 13:00 (+18d) | 2015-05-11 08:48 → 2015-05-29 15:24 (+18d) | 0.1d → 0.3d | 57.6d → 0.4d | none → 82 | resources none → AnhTT |
| 84 | Delete reminder | 2015-05-11 08:00 → 2015-05-29 15:24 (+18d) | 2015-05-11 08:48 → 2015-05-29 16:12 (+18d) |  | 57.6d → 0.4d | none → 83 | resources none → AnhTT |
| 85 | Suspend/Unsuspend all reminder | 2015-05-11 08:00 → 2015-05-29 16:12 (+18d) | 2015-05-11 09:36 → 2015-06-01 11:12 (+21d) | 0.2d → 0.5d | 57.5d → 0.4d | none → 84 | resources none → AnhTT |
| 86 | Suspend/Unsuspend a chosen reminder | 2015-05-11 08:00 → 2015-06-01 11:12 (+21d) | 2015-05-11 09:36 → 2015-06-01 13:48 (+21d) |  | 57.5d → 0.4d | none → 85 | resources none → AnhTT |
| 87 | **Track module** | 2015-05-11 08:00 → 2015-05-25 08:00 (+14d) | 2015-05-11 11:12 → 2015-05-26 09:36 (+15d) | 0.4d → 1.2d | 57.3d → 0d |  |  |
| 88 | Tracking | 2015-05-11 08:00 → 2015-05-25 08:00 (+14d) | 2015-05-11 11:12 → 2015-05-25 17:00 (+14d) | 0.4d → 1d | 57.3d → 0d | none → 48 | resources none → MaiTTT |
| 89 | Cancel track | 2015-05-11 08:00 → 2015-05-26 08:00 (+15d) | 2015-05-11 08:48 → 2015-05-26 09:36 (+15d) | 0.1d → 0.2d | 57.6d → 0d | none → 88 | resources none → MaiTTT |
| 90 | **Favorite module** | 2015-05-11 08:00 → 2015-05-26 09:36 (+15d) | 2015-05-11 09:36 → 2015-05-28 15:24 (+17d) | 0.2d → 2.6d | 0.3d → 0d |  |  |
| 91 | View favorite places | 2015-05-11 08:00 → 2015-05-26 09:36 (+15d) | 2015-05-11 09:36 → 2015-05-26 13:48 (+15d) | 0.2d → 0.4d | 57.5d → 0d | none → 89 | resources none → MaiTTT |
| 92 | Add favorite places | 2015-05-11 08:00 → 2015-05-26 13:48 (+15d) | 2015-05-11 08:48 → 2015-05-26 15:24 (+15d) | 0.1d → 0.2d | 57.6d → 0d | none → 91 | resources none → MaiTTT |
| 93 | Edit favorite places | 2015-05-11 08:00 → 2015-05-26 15:24 (+15d) | 2015-05-11 09:36 → 2015-05-27 08:48 (+16d) | 0.2d → 0.3d | 57.5d → 0d | none → 92 | resources none → MaiTTT |
| 94 | Delete favorite places | 2015-05-11 08:00 → 2015-05-27 08:48 (+16d) | 2015-05-11 08:48 → 2015-05-27 10:24 (+16d) | 0.1d → 0.2d | 57.6d → 0d | none → 93 | resources none → MaiTTT |
| 95 | Search favorite places | 2015-05-11 08:00 → 2015-05-27 10:24 (+16d) | 2015-05-11 08:48 → 2015-05-27 12:00 (+16d) | 0.1d → 0.2d | 57.6d → 0d | none → 94 | resources none → MaiTTT |
| 96 | View favorite buses | 2015-05-11 08:00 → 2015-05-27 13:00 (+16d) | 2015-05-11 09:36 → 2015-05-27 16:12 (+16d) | 0.2d → 0.4d | 57.5d → 0d | none → 95 | resources none → MaiTTT |
| 97 | Add favorite buses | 2015-05-11 08:00 → 2015-05-27 16:12 (+16d) | 2015-05-11 08:48 → 2015-05-28 08:48 (+17d) | 0.1d → 0.2d | 57.6d → 0d | none → 96 | resources none → MaiTTT |
| 98 | Edit favorite buses | 2015-05-11 08:00 → 2015-05-28 08:48 (+17d) | 2015-05-11 09:36 → 2015-05-28 11:12 (+17d) | 0.2d → 0.3d | 57.5d → 0d | none → 97 | resources none → MaiTTT |
| 99 | Delete favorite buses | 2015-05-11 08:00 → 2015-05-28 11:12 (+17d) | 2015-05-11 08:48 → 2015-05-28 13:48 (+17d) | 0.1d → 0.2d | 0.3d → 0d | none → 98 | resources none → MaiTTT |
| 100 | Search favorite buses | 2015-05-11 08:00 → 2015-05-28 13:48 (+17d) | 2015-05-11 08:48 → 2015-05-28 15:24 (+17d) | 0.1d → 0.2d | 57.6d → 0d | none → 99 | resources none → MaiTTT |
| 101 | **Interactive module** | 2015-05-11 08:00 → 2015-05-26 13:48 (+15d) | 2015-05-11 10:24 → 2015-05-28 16:12 (+17d) | 0.3d → 2.3d | 57.4d → 2.1d |  |  |
| 102 | View Achievement | 2015-05-11 08:00 → 2015-05-26 13:48 (+15d) | 2015-05-11 09:36 → 2015-05-26 15:24 (+15d) |  | 57.5d → 2.1d | none → 67 | resources none → NamNT |
| 103 | Share Achievement | 2015-05-11 08:00 → 2015-05-26 15:24 (+15d) | 2015-05-11 10:24 → 2015-05-27 08:48 (+16d) |  | 57.4d → 2.1d | none → 102 | resources none → NamNT |
| 104 | View Collection | 2015-05-11 08:00 → 2015-05-27 08:48 (+16d) | 2015-05-11 09:36 → 2015-05-27 10:24 (+16d) |  | 57.5d → 2.1d | none → 103 | resources none → NamNT |
| 105 | Share Collection | 2015-05-11 08:00 → 2015-05-27 10:24 (+16d) | 2015-05-11 10:24 → 2015-05-27 13:48 (+16d) |  | 57.4d → 2.1d | none → 104 | resources none → NamNT |
| 106 | View Mission | 2015-05-11 08:00 → 2015-05-27 13:48 (+16d) | 2015-05-11 09:36 → 2015-05-27 15:24 (+16d) |  | 57.5d → 2.1d | none → 105 | resources none → NamNT |
| 107 | Share Mission | 2015-05-11 08:00 → 2015-05-27 15:24 (+16d) | 2015-05-11 10:24 → 2015-05-28 08:48 (+17d) |  | 57.4d → 2.1d | none → 106 | resources none → NamNT |
| 108 | View Statistic | 2015-05-11 08:00 → 2015-05-28 08:48 (+17d) | 2015-05-11 10:24 → 2015-05-28 11:12 (+17d) |  | 57.4d → 2.1d | none → 107 | resources none → NamNT |
| 109 | Connect Facebook | 2015-05-11 08:00 → 2015-05-28 11:12 (+17d) | 2015-05-11 10:24 → 2015-05-28 14:36 (+17d) |  | 57.4d → 2.1d | none → 108 | resources none → NamNT |
| 110 | Scan QR code module | 2015-05-11 08:00 → 2015-05-28 14:36 (+17d) | 2015-05-11 09:36 → 2015-05-28 16:12 (+17d) |  | 57.5d → 2.1d | none → 109 | resources none → NamNT |
| 111 | **Non-functional Requirement Specification** | 2015-05-11 10:24 → 2015-05-28 15:24 (+17d) | 2015-05-22 14:36 → 2015-06-01 17:00 (+10d) | 9.4d → 2.2d | 48d → 0d |  |  |
| 112 | Develop User Interface Requirement | 2015-05-11 10:24 → 2015-05-28 15:24 (+17d) | 2015-05-12 17:00 → 2015-06-01 09:36 (+20d) |  | 48d → 0d | 99 → 100 | resources NamNT; CuongNLT; AnhTT → MaiTTT |
| 113 | Develop Performance Requirement | 2015-05-13 08:00 → 2015-06-01 09:36 (+19d) | 2015-05-22 14:36 → 2015-06-01 17:00 (+10d) |  | 48d → 0d |  | resources CuongNLT; NamNT; AnhTT → CuongNLT |
| 114 | Review Software Requirement Specification with checklist | 2015-05-11 08:00 → 2015-06-02 08:00 (+22d) | 2015-05-12 17:00 → 2015-06-03 17:00 (+22d) |  | 55.7d → 0d | none → 54, 61, 67, 74, 79, 86, 89, 100, 110, 113 | resources none → PhuongBB; MaiTTT |
| 115 | Update Software Requirement Specification | 2015-05-11 08:00 → 2015-06-04 08:00 (+24d) | 2015-05-12 17:00 → 2015-06-08 08:48 (+27d) | 2d → 2.1d | 55.7d → 0d | none → 114 | resources none → CuongNLT; AnhTT; NamNT |
| 116 | Complete Software Requirement Specification | 2015-05-11 08:00 → 2015-06-08 08:48 (+28d) | 2015-05-11 08:00 → 2015-06-08 08:48 (+28d) |  | 1d → 0d | none → 115 | resources none → NamNT |
| 117 | **Design** | 2015-05-11 08:00 → 2015-06-01 09:36 (+21d) | 2015-05-20 17:00 → 2015-06-17 08:48 (+28d) | 8d → 11.9d | 0.4d → 2.1d |  |  |
| 118 | **Design Review checklist** | 2015-05-11 11:12 → 2015-06-01 09:36 (+21d) | 2015-05-13 15:24 → 2015-06-05 15:24 (+23d) | 2.4d → 4.6d | 0d → 2.1d |  |  |
| 119 | Develop review checklist | 2015-05-11 11:12 → 2015-06-01 09:36 (+21d) | 2015-05-13 12:00 → 2015-06-05 12:00 (+23d) | 2.1d → 2.3d | 0d → 2.1d | 73, 99 → 112 | resources none → MaiTTT; PhuongBB |
| 120 | Review review checklist | 2015-05-13 13:00 → 2015-06-05 13:00 (+23d) | 2015-05-13 13:48 → 2015-06-05 13:48 (+23d) |  | 0d → 2.1d |  | resources none → MaiTTT; PhuongBB |
| 121 | Update review checklist | 2015-05-13 13:48 → 2015-06-05 13:48 (+23d) | 2015-05-13 15:24 → 2015-06-05 15:24 (+23d) |  | 0d → 2.1d |  | resources none → MaiTTT; PhuongBB |
| 122 | Complete review checklist | 2015-05-13 15:24 → 2015-06-05 15:24 (+23d) | 2015-05-13 15:24 → 2015-06-05 15:24 (+23d) |  | 0d → 2.1d |  | resources none → MaiTTT; PhuongBB |
| 123 | **Architecture design** | 2015-05-11 08:00 → 2015-06-08 08:48 (+28d) | 2015-05-14 11:12 → 2015-06-10 12:00 (+27d) | 3.4d → 2.4d |  |  |  |
| 124 | Define system structure and collect system features | 2015-05-11 08:00 → 2015-06-08 08:48 (+28d) | 2015-05-11 17:00 → 2015-06-09 08:48 (+29d) |  | 1d → 0d |  | resources none → NamNT; CuongNLT |
| 125 | Study & choose System Architecture | 2015-05-12 08:00 → 2015-06-09 08:48 (+28d) | 2015-05-12 15:24 → 2015-06-09 16:12 (+28d) |  | 1d → 0d |  | resources none → NamNT; CuongNLT |
| 126 | Review Architecture Design with checklist | 2015-05-13 15:24 → 2015-06-09 16:12 (+27d) | 2015-05-14 08:48 → 2015-06-10 09:36 (+27d) |  |  |  | resources none → PhuongBB; MaiTTT |
| 127 | Update Architecture Design | 2015-05-14 08:48 → 2015-06-10 09:36 (+27d) | 2015-05-14 11:12 → 2015-06-10 12:00 (+27d) |  |  |  | resources none → NamNT; CuongNLT |
| 128 | Complete System Architecture version 1.0 | 2015-05-14 11:12 → 2015-06-10 12:00 (+27d) | 2015-05-14 11:12 → 2015-06-10 12:00 (+27d) |  |  |  | resources none → NamNT |
| 129 | **Detailed design** | 2015-05-14 11:12 → 2015-06-10 13:00 (+27d) | 2015-05-19 12:00 → 2015-06-15 13:48 (+27d) |  |  |  |  |
| 130 | **User Interface design** | 2015-05-14 11:12 → 2015-06-10 13:00 (+27d) | 2015-05-18 12:00 → 2015-06-12 13:48 (+25d) |  |  |  |  |
| 131 | **Bus Driver Module** | 2015-05-14 11:12 → 2015-06-10 13:00 (+27d) | 2015-05-14 15:24 → 2015-06-10 16:12 (+27d) |  |  |  |  |
| 132 | Send bus info module | 2015-05-14 11:12 → 2015-06-10 13:00 (+27d) | 2015-05-14 15:24 → 2015-06-10 16:12 (+27d) |  |  |  |  |
| 133 | **Bus Rider Module** | 2015-05-14 11:12 → 2015-06-10 13:00 (+27d) | 2015-05-18 12:00 → 2015-06-12 13:48 (+25d) |  |  |  |  |
| 134 | **Sync module** | 2015-05-14 15:24 → 2015-06-10 16:12 (+27d) | 2015-05-15 13:48 → 2015-06-11 14:36 (+27d) |  |  |  |  |
| 135 | PhoneNumberSync module | 2015-05-14 15:24 → 2015-06-10 16:12 (+27d) | 2015-05-15 08:48 → 2015-06-11 09:36 (+27d) |  |  |  |  |
| 136 | Connect Facebook module | 2015-05-15 08:48 → 2015-06-11 09:36 (+27d) | 2015-05-15 09:36 → 2015-06-11 10:24 (+27d) |  |  |  |  |
| 137 | Show Favorite place module | 2015-05-15 09:36 → 2015-06-11 10:24 (+27d) | 2015-05-15 10:24 → 2015-06-11 11:12 (+27d) |  |  |  |  |
| 138 | Show Favorite bus module | 2015-05-15 10:24 → 2015-06-11 11:12 (+27d) | 2015-05-15 11:12 → 2015-06-11 12:00 (+27d) |  |  |  |  |
| 139 | Add/remove Favorite place module | 2015-05-15 11:12 → 2015-06-11 13:00 (+27d) | 2015-05-15 12:00 → 2015-06-11 13:48 (+27d) |  |  |  |  |
| 140 | About module | 2015-05-15 13:00 → 2015-06-11 13:48 (+27d) | 2015-05-15 13:48 → 2015-06-11 14:36 (+27d) |  |  |  |  |

| ID | Task | Start | Finish |
| --- | --- | --- | --- |
| 141 | **Bus module** | 2015-05-14 11:12 → 2015-06-10 13:00 (+27d) | 2015-05-18 12:00 → 2015-06-12 13:48 (+25d) |
| 142 | Bus list module | 2015-05-14 11:12 → 2015-06-10 13:00 (+27d) | 2015-05-14 12:00 → 2015-06-10 13:48 (+27d) |
| 143 | Bus info module | 2015-05-14 13:00 → 2015-06-10 13:48 (+27d) | 2015-05-14 15:24 → 2015-06-10 16:12 (+27d) |
| 144 | Bus route module | 2015-05-14 15:24 → 2015-06-10 16:12 (+27d) | 2015-05-14 17:00 → 2015-06-11 08:48 (+28d) |
| 145 | Bus nearest module | 2015-05-15 08:00 → 2015-06-11 08:48 (+27d) | 2015-05-15 10:24 → 2015-06-11 11:12 (+27d) |
| 146 | Bus map module | 2015-05-15 10:24 → 2015-06-11 11:12 (+27d) | 2015-05-15 12:00 → 2015-06-11 13:48 (+27d) |
| 147 | Set/unset favorite bus module | 2015-05-15 13:00 → 2015-06-11 13:48 (+27d) | 2015-05-15 13:48 → 2015-06-11 14:36 (+27d) |
| 148 | Remind module | 2015-05-15 13:48 → 2015-06-11 14:36 (+27d) | 2015-05-15 16:12 → 2015-06-11 17:00 (+27d) |
| 149 | Track module | 2015-05-15 16:12 → 2015-06-12 08:00 (+28d) | 2015-05-18 08:48 → 2015-06-12 09:36 (+25d) |
| 150 | Get notification module | 2015-05-18 08:48 → 2015-06-12 09:36 (+25d) | 2015-05-18 11:12 → 2015-06-12 12:00 (+25d) |
| 151 | Swap direction module | 2015-05-18 11:12 → 2015-06-12 13:00 (+25d) | 2015-05-18 12:00 → 2015-06-12 13:48 (+25d) |
| 152 | **Shigeki module** | 2015-05-14 11:12 → 2015-06-10 13:00 (+27d) | 2015-05-15 17:00 → 2015-06-12 08:48 (+28d) |
| 153 | Achievement module | 2015-05-14 11:12 → 2015-06-10 13:00 (+27d) | 2015-05-14 14:36 → 2015-06-10 15:24 (+27d) |
| 154 | Collection module | 2015-05-14 14:36 → 2015-06-10 15:24 (+27d) | 2015-05-14 17:00 → 2015-06-11 08:48 (+28d) |
| 155 | Mission module | 2015-05-15 08:00 → 2015-06-11 08:48 (+27d) | 2015-05-15 10:24 → 2015-06-11 11:12 (+27d) |
| 156 | Statistic module | 2015-05-15 10:24 → 2015-06-11 11:12 (+27d) | 2015-05-15 13:48 → 2015-06-11 14:36 (+27d) |
| 157 | Rank module | 2015-05-15 13:48 → 2015-06-11 14:36 (+27d) | 2015-05-15 14:36 → 2015-06-11 15:24 (+27d) |
| 158 | Scan QR code module | 2015-05-15 14:36 → 2015-06-11 15:24 (+27d) | 2015-05-15 17:00 → 2015-06-12 08:48 (+28d) |
| 159 | **Search module** | 2015-05-14 11:12 → 2015-06-10 13:00 (+27d) | 2015-05-14 17:00 → 2015-06-11 08:48 (+28d) |
| 160 | Search bus module | 2015-05-14 11:12 → 2015-06-10 13:00 (+27d) | 2015-05-14 12:00 → 2015-06-10 13:48 (+27d) |
| 161 | Search route module | 2015-05-14 13:00 → 2015-06-10 13:48 (+27d) | 2015-05-14 15:24 → 2015-06-10 16:12 (+27d) |
| 162 | Search Favorite bus module | 2015-05-14 15:24 → 2015-06-10 16:12 (+27d) | 2015-05-14 16:12 → 2015-06-10 17:00 (+27d) |
| 163 | Search Favorite place module | 2015-05-14 16:12 → 2015-06-11 08:00 (+28d) | 2015-05-14 17:00 → 2015-06-11 08:48 (+28d) |
| 164 | Setting module | 2015-05-15 08:00 → 2015-06-11 08:48 (+27d) | 2015-05-15 12:00 → 2015-06-11 13:48 (+27d) |
| 165 | Review Detailed Design with checklist | 2015-05-18 13:00 → 2015-06-12 13:48 (+25d) | 2015-05-19 12:00 → 2015-06-15 13:48 (+27d) |
| 166 | Update Detailed Design | 2015-05-19 12:00 → 2015-06-15 13:48 (+27d) | 2015-05-19 12:00 → 2015-06-15 13:48 (+27d) |
| 167 | Complete Detailed Design version 1.0 | 2015-05-19 12:00 → 2015-06-15 13:48 (+27d) | 2015-05-19 12:00 → 2015-06-15 13:48 (+27d) |
| 168 | **Database design** | 2015-05-14 11:12 → 2015-06-10 13:00 (+27d) | 2015-05-18 09:36 → 2015-06-12 10:24 (+25d) |
| 169 | Create Databse Design draft version | 2015-05-14 11:12 → 2015-06-10 13:00 (+27d) | 2015-05-15 11:12 → 2015-06-11 12:00 (+27d) |
| 170 | Review Database Design with checklist | 2015-05-15 11:12 → 2015-06-11 13:00 (+27d) | 2015-05-15 16:12 → 2015-06-11 17:00 (+27d) |
| 171 | Update Database Design | 2015-05-15 16:12 → 2015-06-12 08:00 (+28d) | 2015-05-18 09:36 → 2015-06-12 10:24 (+25d) |
| 172 | Complete Database Design version 1.0 | 2015-05-18 09:36 → 2015-06-12 10:24 (+25d) | 2015-05-18 09:36 → 2015-06-12 10:24 (+25d) |
| 173 | **Class design** | 2015-05-18 09:36 → 2015-06-12 10:24 (+25d) | 2015-05-20 17:00 → 2015-06-17 08:48 (+28d) |
| 174 | Define class/component | 2015-05-18 09:36 → 2015-06-12 10:24 (+25d) | 2015-05-20 09:36 → 2015-06-16 10:24 (+27d) |
| 175 | Review Class Design with checklist | 2015-05-20 09:36 → 2015-06-16 10:24 (+27d) | 2015-05-20 14:36 → 2015-06-16 15:24 (+27d) |
| 176 | Update Class Design | 2015-05-20 14:36 → 2015-06-16 15:24 (+27d) | 2015-05-20 17:00 → 2015-06-17 08:48 (+28d) |
| 177 | Complete Class Design version 1.0 | 2015-05-20 17:00 → 2015-06-17 08:48 (+28d) | 2015-05-20 17:00 → 2015-06-17 08:48 (+28d) |
| 178 | Complete design | 2015-05-20 17:00 → 2015-06-17 08:48 (+28d) | 2015-05-20 17:00 → 2015-06-17 08:48 (+28d) |
| 179 | **Progress Report 2** | 2015-05-21 08:00 → 2015-06-17 08:48 (+27d) | 2015-05-21 12:00 → 2015-06-17 13:48 (+27d) |
| 180 | Develop Progress Report 2 | 2015-05-21 08:00 → 2015-06-17 08:48 (+27d) | 2015-05-21 10:24 → 2015-06-17 11:12 (+27d) |
| 181 | Review Progress Report 2 | 2015-05-21 10:24 → 2015-06-17 11:12 (+27d) | 2015-05-21 11:12 → 2015-06-17 12:00 (+27d) |
| 182 | Update Progress Report 2 | 2015-05-21 11:12 → 2015-06-17 13:00 (+27d) | 2015-05-21 12:00 → 2015-06-17 13:48 (+27d) |
| 183 | Complete Progress Report 2 | 2015-05-21 12:00 → 2015-06-17 13:48 (+27d) | 2015-05-21 12:00 → 2015-06-17 13:48 (+27d) |
| 184 | Submit SRS,AD,DD | 2015-05-20 17:00 → 2015-06-17 08:48 (+28d) | 2015-05-20 17:00 → 2015-06-17 08:48 (+28d) |
| 185 | **Coding & Unit Testing** | 2015-05-21 08:00 → 2015-06-17 08:48 (+27d) | 2015-05-21 17:00 → 2015-06-18 08:48 (+28d) |
| 186 | **Bus Driver Module** | 2015-05-21 08:00 → 2015-06-17 08:48 (+27d) | 2015-05-21 17:00 → 2015-06-18 08:48 (+28d) |
| 187 | Send bus info module | 2015-05-21 08:00 → 2015-06-17 08:48 (+27d) | 2015-05-21 17:00 → 2015-06-18 08:48 (+28d) |
| 188 | **Testing** | 2015-05-14 11:12 → 2015-06-10 13:00 (+27d) | 2015-06-02 09:36 → 2015-07-06 10:24 (+34d) |
| 189 | **Test review checklist** | 2015-05-14 11:12 → 2015-06-10 13:00 (+27d) | 2015-05-15 11:12 → 2015-06-11 12:00 (+27d) |
| 190 | **Test plan review checklist** | 2015-05-14 11:12 → 2015-06-10 13:00 (+27d) | 2015-05-14 17:00 → 2015-06-11 08:48 (+28d) |
| 191 | Develop test plan review checklist | 2015-05-14 11:12 → 2015-06-10 13:00 (+27d) | 2015-05-14 14:36 → 2015-06-10 15:24 (+27d) |
| 192 | Review test plan review checklist | 2015-05-14 14:36 → 2015-06-10 15:24 (+27d) | 2015-05-14 16:12 → 2015-06-10 17:00 (+27d) |
| 193 | Update test plan review checklist | 2015-05-14 16:12 → 2015-06-11 08:00 (+28d) | 2015-05-14 17:00 → 2015-06-11 08:48 (+28d) |
| 194 | Complete test plan review checklist | 2015-05-14 17:00 → 2015-06-11 08:48 (+28d) | 2015-05-14 17:00 → 2015-06-11 08:48 (+28d) |
| 195 | **Test case review checklist** | 2015-05-14 11:12 → 2015-06-10 13:00 (+27d) | 2015-05-15 11:12 → 2015-06-11 12:00 (+27d) |
| 196 | Develop test case review checklist | 2015-05-14 11:12 → 2015-06-10 13:00 (+27d) | 2015-05-14 16:12 → 2015-06-10 17:00 (+27d) |
| 197 | Review test case review checklist | 2015-05-14 16:12 → 2015-06-11 08:00 (+28d) | 2015-05-15 09:36 → 2015-06-11 10:24 (+27d) |
| 198 | Update test case review checklist | 2015-05-15 09:36 → 2015-06-11 10:24 (+27d) | 2015-05-15 11:12 → 2015-06-11 12:00 (+27d) |
| 199 | Complete test case review checklist | 2015-05-15 11:12 → 2015-06-11 12:00 (+27d) | 2015-05-15 11:12 → 2015-06-11 12:00 (+27d) |
| 200 | Complete review checklist | 2015-05-15 11:12 → 2015-06-11 12:00 (+27d) | 2015-05-15 11:12 → 2015-06-11 12:00 (+27d) |
| 201 | **Test plan** | 2015-05-14 11:12 → 2015-06-10 13:00 (+27d) | 2015-05-18 09:36 → 2015-06-12 10:24 (+25d) |
| 202 | Develop test plan | 2015-05-14 11:12 → 2015-06-10 13:00 (+27d) | 2015-05-15 11:12 → 2015-06-11 12:00 (+27d) |
| 203 | Review test plan | 2015-05-15 11:12 → 2015-06-11 13:00 (+27d) | 2015-05-15 16:12 → 2015-06-11 17:00 (+27d) |
| 204 | Update test plan | 2015-05-15 16:12 → 2015-06-12 08:00 (+28d) | 2015-05-18 09:36 → 2015-06-12 10:24 (+25d) |
| 205 | Complete test plan | 2015-05-18 09:36 → 2015-06-12 10:24 (+25d) | 2015-05-18 09:36 → 2015-06-12 10:24 (+25d) |
| 206 | **Test case** | 2015-05-18 09:36 → 2015-06-12 10:24 (+25d) | 2015-06-02 09:36 → 2015-07-06 10:24 (+34d) |
| 207 | **Unit test** | 2015-05-18 09:36 → 2015-06-12 10:24 (+25d) | 2015-05-22 09:36 → 2015-06-18 10:24 (+27d) |
| 208 | **Develop unit test case** | 2015-05-18 09:36 → 2015-06-12 10:24 (+25d) | 2015-05-20 09:36 → 2015-06-16 10:24 (+27d) |
| 209 | Bus driver module | 2015-05-18 09:36 → 2015-06-12 10:24 (+25d) | 2015-05-18 14:36 → 2015-06-12 15:24 (+25d) |
| 210 | Sync module | 2015-05-18 14:36 → 2015-06-12 15:24 (+25d) | 2015-05-19 09:36 → 2015-06-15 10:24 (+27d) |

| ID | Task | Start | Finish |
| --- | --- | --- | --- |
| 211 | Bus module | 2015-05-19 09:36 → 2015-06-15 10:24 (+27d) | 2015-05-20 09:36 → 2015-06-16 10:24 (+27d) |
| 212 | Shigeki module | 2015-05-18 09:36 → 2015-06-12 10:24 (+25d) | 2015-05-18 17:00 → 2015-06-15 08:48 (+28d) |
| 213 | Search module | 2015-05-19 08:00 → 2015-06-15 08:48 (+27d) | 2015-05-19 12:00 → 2015-06-15 13:48 (+27d) |
| 214 | Setting module | 2015-05-19 13:00 → 2015-06-15 13:48 (+27d) | 2015-05-20 09:36 → 2015-06-16 10:24 (+27d) |
| 215 | Review unit test case | 2015-05-20 09:36 → 2015-06-16 10:24 (+27d) | 2015-05-21 09:36 → 2015-06-17 10:24 (+27d) |
| 216 | Update unit test case | 2015-05-21 09:36 → 2015-06-17 10:24 (+27d) | 2015-05-22 09:36 → 2015-06-18 10:24 (+27d) |
| 217 | Complete unit test case | 2015-05-22 09:36 → 2015-06-18 10:24 (+27d) | 2015-05-22 09:36 → 2015-06-18 10:24 (+27d) |
| 218 | **Integration test** | 2015-05-22 09:36 → 2015-06-18 10:24 (+27d) | 2015-05-28 09:36 → 2015-07-01 10:24 (+34d) |
| 219 | Develop integration test case | 2015-05-22 09:36 → 2015-06-18 10:24 (+27d) | 2015-05-26 09:36 → 2015-06-29 10:24 (+34d) |
| 220 | Review integration test case | 2015-05-26 09:36 → 2015-06-29 10:24 (+34d) | 2015-05-27 09:36 → 2015-06-30 10:24 (+34d) |
| 221 | Update integration test case | 2015-05-27 09:36 → 2015-06-30 10:24 (+34d) | 2015-05-28 09:36 → 2015-07-01 10:24 (+34d) |
| 222 | Complete integration test case | 2015-05-28 09:36 → 2015-07-01 10:24 (+34d) | 2015-05-28 09:36 → 2015-07-01 10:24 (+34d) |
| 223 | **System test** | 2015-05-28 09:36 → 2015-07-01 10:24 (+34d) | 2015-06-02 09:36 → 2015-07-06 10:24 (+34d) |
| 224 | Develop system test case | 2015-05-28 09:36 → 2015-07-01 10:24 (+34d) | 2015-05-29 09:36 → 2015-07-02 10:24 (+34d) |
| 225 | Review system test case | 2015-05-29 09:36 → 2015-07-02 10:24 (+34d) | 2015-06-01 09:36 → 2015-07-03 10:24 (+32d) |
| 226 | Update system test case | 2015-06-01 09:36 → 2015-07-03 10:24 (+32d) | 2015-06-02 09:36 → 2015-07-06 10:24 (+34d) |
| 227 | Complete system test case | 2015-06-02 09:36 → 2015-07-06 10:24 (+34d) | 2015-06-02 09:36 → 2015-07-06 10:24 (+34d) |
| 228 | **Progress report 3** | 2015-06-02 09:36 → 2015-07-06 10:24 (+34d) | 2015-06-02 14:36 → 2015-07-06 15:24 (+34d) |
| 229 | Develop Progress Report 3 | 2015-06-02 09:36 → 2015-07-06 10:24 (+34d) | 2015-06-02 12:00 → 2015-07-06 13:48 (+34d) |
| 230 | Review Progress Report 3 | 2015-06-02 13:00 → 2015-07-06 13:48 (+34d) | 2015-06-02 13:48 → 2015-07-06 14:36 (+34d) |
| 231 | Update Progress Report 3 | 2015-06-02 13:48 → 2015-07-06 14:36 (+34d) | 2015-06-02 14:36 → 2015-07-06 15:24 (+34d) |
| 232 | Complete Progress Report 3 | 2015-06-02 14:36 → 2015-07-06 15:24 (+34d) | 2015-06-02 14:36 → 2015-07-06 15:24 (+34d) |
| 233 | Q & A Management (update) | 2015-06-02 14:36 → 2015-07-06 15:24 (+34d) | 2015-06-03 09:36 → 2015-07-07 10:24 (+34d) |
| 234 | **Report no.3** | 2015-06-03 09:36 → 2015-07-07 10:24 (+34d) | 2015-06-05 11:12 → 2015-07-09 12:00 (+34d) |
| 235 | Develop Report no.3 (draft version) | 2015-06-03 09:36 → 2015-07-07 10:24 (+34d) | 2015-06-03 11:12 → 2015-07-07 12:00 (+34d) |
| 236 | Review Report no.3 (draft version) | 2015-06-03 11:12 → 2015-07-07 13:00 (+34d) | 2015-06-04 11:12 → 2015-07-08 12:00 (+34d) |
| 237 | Update Report no.3 (draft version) | 2015-06-04 11:12 → 2015-07-08 13:00 (+34d) | 2015-06-04 16:12 → 2015-07-08 17:00 (+34d) |
| 238 | Submit Report no.3 (first version) | 2015-06-04 16:12 → 2015-07-08 17:00 (+34d) | 2015-06-04 16:12 → 2015-07-08 17:00 (+34d) |
| 239 | Revise after got comments for Report no.3 | 2015-06-04 16:12 → 2015-07-09 08:00 (+35d) | 2015-06-05 11:12 → 2015-07-09 12:00 (+34d) |
| 240 | Submit Report no.3 (final version) | 2015-06-05 11:12 → 2015-07-09 12:00 (+34d) | 2015-06-05 11:12 → 2015-07-09 12:00 (+34d) |
| 241 | **Construction** | 2015-05-22 08:00 → 2015-06-18 08:48 (+27d) | 2015-07-22 13:48 → 2015-08-18 14:36 (+27d) |
| 242 | **Code Review checklist** | 2015-06-05 11:12 → 2015-07-09 13:00 (+34d) | 2015-06-08 17:00 → 2015-07-13 08:48 (+35d) |
| 243 | Develop review checklist | 2015-06-05 11:12 → 2015-07-09 13:00 (+34d) | 2015-06-08 10:24 → 2015-07-10 11:12 (+32d) |
| 244 | Review review checklist | 2015-06-08 10:24 → 2015-07-10 11:12 (+32d) | 2015-06-08 14:36 → 2015-07-10 15:24 (+32d) |
| 245 | Update review checklist | 2015-06-08 14:36 → 2015-07-10 15:24 (+32d) | 2015-06-08 17:00 → 2015-07-13 08:48 (+35d) |
| 246 | Complete review checklist | 2015-06-08 17:00 → 2015-07-13 08:48 (+35d) | 2015-06-08 17:00 → 2015-07-13 08:48 (+35d) |
| 247 | **Coding & Unit testing (continue)** | 2015-05-22 08:00 → 2015-06-18 08:48 (+27d) | 2015-06-18 17:00 → 2015-07-23 08:48 (+35d) |
| 248 | **Bus Rider Module** | 2015-05-22 08:00 → 2015-06-18 08:48 (+27d) | 2015-06-18 17:00 → 2015-07-23 08:48 (+35d) |
| 249 | **Sync module** | 2015-05-22 08:00 → 2015-06-18 08:48 (+27d) | 2015-06-03 17:00 → 2015-07-08 08:48 (+35d) |
| 250 | PhoneNumberSync module | 2015-05-22 08:00 → 2015-06-18 08:48 (+27d) | 2015-05-26 17:00 → 2015-06-30 08:48 (+35d) |
| 251 | Connect Facebook module | 2015-05-27 08:00 → 2015-06-30 08:48 (+34d) | 2015-05-28 17:00 → 2015-07-02 08:48 (+35d) |
| 252 | Show Favorite place module | 2015-05-29 08:00 → 2015-07-02 08:48 (+34d) | 2015-05-29 17:00 → 2015-07-03 08:48 (+35d) |
| 253 | Show Favorite bus module | 2015-06-01 08:00 → 2015-07-03 08:48 (+32d) | 2015-06-01 17:00 → 2015-07-06 08:48 (+35d) |
| 254 | Add/remove Favorite place module | 2015-06-02 08:00 → 2015-07-06 08:48 (+34d) | 2015-06-02 17:00 → 2015-07-07 08:48 (+35d) |
| 255 | About module | 2015-06-03 08:00 → 2015-07-07 08:48 (+34d) | 2015-06-03 17:00 → 2015-07-08 08:48 (+35d) |
| 256 | **Bus module** | 2015-05-22 08:00 → 2015-06-18 08:48 (+27d) | 2015-06-16 17:00 → 2015-07-21 08:48 (+35d) |
| 257 | Bus list module | 2015-05-22 08:00 → 2015-06-18 08:48 (+27d) | 2015-05-22 17:00 → 2015-06-19 08:48 (+28d) |
| 258 | Bus info module | 2015-05-25 08:00 → 2015-06-19 08:48 (+25d) | 2015-05-27 17:00 → 2015-07-01 08:48 (+35d) |
| 259 | Bus route module | 2015-05-28 08:00 → 2015-07-01 08:48 (+34d) | 2015-05-29 17:00 → 2015-07-03 08:48 (+35d) |
| 260 | Bus nearest module | 2015-06-01 08:00 → 2015-07-03 08:48 (+32d) | 2015-06-03 17:00 → 2015-07-08 08:48 (+35d) |
| 261 | Bus map module | 2015-06-04 08:00 → 2015-07-08 08:48 (+34d) | 2015-06-05 12:00 → 2015-07-09 13:48 (+34d) |
| 262 | Set/unset favorite bus module | 2015-06-05 13:00 → 2015-07-09 13:48 (+34d) | 2015-06-08 12:00 → 2015-07-10 13:48 (+32d) |
| 263 | Remind module | 2015-06-08 13:00 → 2015-07-10 13:48 (+32d) | 2015-06-10 17:00 → 2015-07-15 08:48 (+35d) |
| 264 | Track module | 2015-06-11 08:00 → 2015-07-15 08:48 (+34d) | 2015-06-12 12:00 → 2015-07-16 13:48 (+34d) |
| 265 | Get notification module | 2015-06-12 13:00 → 2015-07-16 13:48 (+34d) | 2015-06-16 12:00 → 2015-07-20 13:48 (+34d) |
| 266 | Swap direction module | 2015-06-16 13:00 → 2015-07-20 13:48 (+34d) | 2015-06-16 17:00 → 2015-07-21 08:48 (+35d) |
| 267 | **Shigeki module** | 2015-05-22 08:00 → 2015-06-18 08:48 (+27d) | 2015-06-03 12:00 → 2015-07-07 13:48 (+34d) |
| 268 | Achievement module | 2015-05-22 08:00 → 2015-06-18 08:48 (+27d) | 2015-05-25 12:00 → 2015-06-19 13:48 (+25d) |
| 269 | Collection module | 2015-05-25 13:00 → 2015-06-19 13:48 (+25d) | 2015-05-26 17:00 → 2015-06-30 08:48 (+35d) |
| 270 | Mission module | 2015-05-27 08:00 → 2015-06-30 08:48 (+34d) | 2015-05-28 12:00 → 2015-07-01 13:48 (+34d) |
| 271 | Statistic module | 2015-05-28 13:00 → 2015-07-01 13:48 (+34d) | 2015-05-29 17:00 → 2015-07-03 08:48 (+35d) |
| 272 | Rank module | 2015-06-01 08:00 → 2015-07-03 08:48 (+32d) | 2015-06-01 17:00 → 2015-07-06 08:48 (+35d) |
| 273 | Scan QR code module | 2015-06-02 08:00 → 2015-07-06 08:48 (+34d) | 2015-06-03 12:00 → 2015-07-07 13:48 (+34d) |
| 274 | **Search module** | 2015-06-04 08:00 → 2015-07-08 08:48 (+34d) | 2015-06-15 17:00 → 2015-07-20 08:48 (+35d) |
| 275 | Search bus module | 2015-06-04 08:00 → 2015-07-08 08:48 (+34d) | 2015-06-04 17:00 → 2015-07-09 08:48 (+35d) |
| 276 | Search route module | 2015-06-05 08:00 → 2015-07-09 08:48 (+34d) | 2015-06-11 17:00 → 2015-07-16 08:48 (+35d) |
| 277 | Search Favorite bus module | 2015-06-12 08:00 → 2015-07-16 08:48 (+34d) | 2015-06-12 17:00 → 2015-07-17 08:48 (+35d) |
| 278 | Search Favorite place module | 2015-06-15 08:00 → 2015-07-17 08:48 (+32d) | 2015-06-15 17:00 → 2015-07-20 08:48 (+35d) |
| 279 | Setting module | 2015-06-16 08:00 → 2015-07-20 08:48 (+34d) | 2015-06-18 17:00 → 2015-07-23 08:48 (+35d) |
| 280 | Web service | 2015-06-03 13:00 → 2015-07-07 13:48 (+34d) | 2015-06-10 12:00 → 2015-07-14 13:48 (+34d) |

| ID | Task | Start | Finish |
| --- | --- | --- | --- |
| 281 | Complete coding | 2015-06-18 17:00 → 2015-07-23 08:48 (+35d) | 2015-06-18 17:00 → 2015-07-23 08:48 (+35d) |
| 282 | Q & A Management (update) | 2015-06-09 08:00 → 2015-07-13 08:48 (+34d) | 2015-06-09 17:00 → 2015-07-14 08:48 (+35d) |
| 283 | **Progress report 4** | 2015-06-19 08:00 → 2015-07-23 08:48 (+34d) | 2015-06-19 12:00 → 2015-07-23 13:48 (+34d) |
| 284 | Develop Progress Report 4 | 2015-06-19 08:00 → 2015-07-23 08:48 (+34d) | 2015-06-19 10:24 → 2015-07-23 11:12 (+34d) |
| 285 | Review Progress Report 4 | 2015-06-19 10:24 → 2015-07-23 11:12 (+34d) | 2015-06-19 11:12 → 2015-07-23 12:00 (+34d) |
| 286 | Update Progress Report 4 | 2015-06-19 11:12 → 2015-07-23 13:00 (+34d) | 2015-06-19 12:00 → 2015-07-23 13:48 (+34d) |
| 287 | Complete Progress Report 4 | 2015-06-19 12:00 → 2015-07-23 13:48 (+34d) | 2015-06-19 12:00 → 2015-07-23 13:48 (+34d) |
| 288 | **Report no.4** | 2015-06-19 10:24 → 2015-07-23 11:12 (+34d) | 2015-07-07 10:24 → 2015-08-03 11:12 (+27d) |
| 289 | Develop Report no.4 (draft version) | 2015-06-19 10:24 → 2015-07-23 11:12 (+34d) | 2015-06-29 10:24 → 2015-07-24 11:12 (+25d) |
| 290 | Review Report no.4 (draft version) | 2015-06-29 10:24 → 2015-07-24 11:12 (+25d) | 2015-07-01 10:24 → 2015-07-28 11:12 (+27d) |
| 291 | Update Report no.4 (draft version) | 2015-07-01 10:24 → 2015-07-28 11:12 (+27d) | 2015-07-03 10:24 → 2015-07-30 11:12 (+27d) |
| 292 | Submit Report no.4 (first version) | 2015-07-03 10:24 → 2015-07-30 11:12 (+27d) | 2015-07-03 10:24 → 2015-07-30 11:12 (+27d) |
| 293 | Revise after got comments for Report no.4 | 2015-07-03 10:24 → 2015-07-30 11:12 (+27d) | 2015-07-07 10:24 → 2015-08-03 11:12 (+27d) |
| 294 | Submit Report no.4 (final version) | 2015-07-07 10:24 → 2015-08-03 11:12 (+27d) | 2015-07-07 10:24 → 2015-08-03 11:12 (+27d) |
| 295 | **Testing** | 2015-05-22 09:36 → 2015-06-18 10:24 (+27d) | 2015-07-20 16:12 → 2015-08-14 17:00 (+25d) |
| 296 | **Execute test & fix bugs** | 2015-05-22 09:36 → 2015-06-18 10:24 (+27d) | 2015-07-20 10:24 → 2015-08-14 11:12 (+25d) |
| 297 | **Round 1** | 2015-05-22 09:36 → 2015-06-18 10:24 (+27d) | 2015-07-08 15:24 → 2015-08-04 16:12 (+27d) |
| 298 | **Execute unit test** | 2015-05-22 09:36 → 2015-06-18 10:24 (+27d) | 2015-06-19 15:24 → 2015-07-23 16:12 (+34d) |
| 299 | Bus driver module | 2015-05-22 09:36 → 2015-06-18 10:24 (+27d) | 2015-05-22 17:00 → 2015-06-19 08:48 (+28d) |
| 300 | Sync module | 2015-06-04 08:00 → 2015-07-08 08:48 (+34d) | 2015-06-04 15:24 → 2015-07-08 16:12 (+34d) |
| 301 | Bus module | 2015-06-17 08:00 → 2015-07-21 08:48 (+34d) | 2015-06-18 17:00 → 2015-07-23 08:48 (+35d) |
| 302 | Shigeki module | 2015-06-03 13:00 → 2015-07-07 13:48 (+34d) | 2015-06-04 10:24 → 2015-07-08 11:12 (+34d) |
| 303 | Search module | 2015-06-16 08:00 → 2015-07-20 08:48 (+34d) | 2015-06-17 17:00 → 2015-07-22 08:48 (+35d) |
| 304 | Setting module | 2015-06-19 08:00 → 2015-07-23 08:48 (+34d) | 2015-06-19 15:24 → 2015-07-23 16:12 (+34d) |
| 305 | Fix bugs unit test | 2015-06-19 15:24 → 2015-07-23 16:12 (+34d) | 2015-07-02 15:24 → 2015-07-29 16:12 (+27d) |
| 306 | Execute integration test | 2015-07-02 15:24 → 2015-07-29 16:12 (+27d) | 2015-07-03 15:24 → 2015-07-30 16:12 (+27d) |
| 307 | Fix bugs integration test | 2015-07-03 15:24 → 2015-07-30 16:12 (+27d) | 2015-07-06 15:24 → 2015-07-31 16:12 (+25d) |
| 308 | Execute system test | 2015-07-06 15:24 → 2015-07-31 16:12 (+25d) | 2015-07-07 15:24 → 2015-08-03 16:12 (+27d) |
| 309 | Fix bugs system test | 2015-07-07 15:24 → 2015-08-03 16:12 (+27d) | 2015-07-08 15:24 → 2015-08-04 16:12 (+27d) |
| 310 | **Round 2** | 2015-07-08 15:24 → 2015-08-04 16:12 (+27d) | 2015-07-17 10:24 → 2015-08-13 11:12 (+27d) |
| 311 | **Execute unit test** | 2015-07-08 15:24 → 2015-08-04 16:12 (+27d) | 2015-07-09 15:24 → 2015-08-05 16:12 (+27d) |
| 312 | Bus driver module | 2015-07-08 15:24 → 2015-08-04 16:12 (+27d) | 2015-07-09 10:24 → 2015-08-05 11:12 (+27d) |
| 313 | Sync module | 2015-07-08 15:24 → 2015-08-04 16:12 (+27d) | 2015-07-09 11:12 → 2015-08-05 12:00 (+27d) |
| 314 | Bus module | 2015-07-08 15:24 → 2015-08-04 16:12 (+27d) | 2015-07-09 15:24 → 2015-08-05 16:12 (+27d) |
| 315 | Shigeki module | 2015-07-08 15:24 → 2015-08-04 16:12 (+27d) | 2015-07-09 10:24 → 2015-08-05 11:12 (+27d) |
| 316 | Search module | 2015-07-08 15:24 → 2015-08-04 16:12 (+27d) | 2015-07-09 15:24 → 2015-08-05 16:12 (+27d) |
| 317 | Setting module | 2015-07-08 15:24 → 2015-08-04 16:12 (+27d) | 2015-07-09 13:48 → 2015-08-05 14:36 (+27d) |
| 318 | Fix bugs unit test | 2015-07-09 15:24 → 2015-08-05 16:12 (+27d) | 2015-07-13 15:24 → 2015-08-07 16:12 (+25d) |
| 319 | Execute integration test | 2015-07-13 15:24 → 2015-08-07 16:12 (+25d) | 2015-07-14 15:24 → 2015-08-10 16:12 (+27d) |
| 320 | Fix bugs integration test | 2015-07-14 15:24 → 2015-08-10 16:12 (+27d) | 2015-07-15 15:24 → 2015-08-11 16:12 (+27d) |
| 321 | Execute system test | 2015-07-15 15:24 → 2015-08-11 16:12 (+27d) | 2015-07-16 10:24 → 2015-08-12 11:12 (+27d) |
| 322 | Fix bugs system test | 2015-07-16 10:24 → 2015-08-12 11:12 (+27d) | 2015-07-17 10:24 → 2015-08-13 11:12 (+27d) |
| 323 | Execute acceptance test & collect data | 2015-07-17 10:24 → 2015-08-13 11:12 (+27d) | 2015-07-20 10:24 → 2015-08-14 11:12 (+25d) |
| 324 | Complete execute test | 2015-07-20 10:24 → 2015-08-14 11:12 (+25d) | 2015-07-20 10:24 → 2015-08-14 11:12 (+25d) |
| 325 | **Test Report** | 2015-07-20 10:24 → 2015-08-14 11:12 (+25d) | 2015-07-20 16:12 → 2015-08-14 17:00 (+25d) |
| 326 | Develop test report | 2015-07-20 10:24 → 2015-08-14 11:12 (+25d) | 2015-07-20 12:00 → 2015-08-14 13:48 (+25d) |
| 327 | Review test report | 2015-07-20 13:00 → 2015-08-14 13:48 (+25d) | 2015-07-20 14:36 → 2015-08-14 15:24 (+25d) |
| 328 | Update test report | 2015-07-20 14:36 → 2015-08-14 15:24 (+25d) | 2015-07-20 16:12 → 2015-08-14 17:00 (+25d) |
| 329 | Complete test report | 2015-07-20 16:12 → 2015-08-14 17:00 (+25d) | 2015-07-20 16:12 → 2015-08-14 17:00 (+25d) |
| 330 | **Quality report** | 2015-07-20 16:12 → 2015-08-17 08:00 (+28d) | 2015-07-21 13:48 → 2015-08-17 14:36 (+27d) |
| 331 | Develop quality report | 2015-07-20 16:12 → 2015-08-17 08:00 (+28d) | 2015-07-21 09:36 → 2015-08-17 10:24 (+27d) |
| 332 | Review quality report | 2015-07-21 09:36 → 2015-08-17 10:24 (+27d) | 2015-07-21 11:12 → 2015-08-17 12:00 (+27d) |
| 333 | Update quality report | 2015-07-21 11:12 → 2015-08-17 13:00 (+27d) | 2015-07-21 13:48 → 2015-08-17 14:36 (+27d) |
| 334 | Complete quality report | 2015-07-21 13:48 → 2015-08-17 14:36 (+27d) | 2015-07-21 13:48 → 2015-08-17 14:36 (+27d) |
| 335 | **Progress report 5** | 2015-07-21 13:48 → 2015-08-17 14:36 (+27d) | 2015-07-22 08:48 → 2015-08-18 09:36 (+27d) |
| 336 | Develop Progress Report 5 | 2015-07-21 13:48 → 2015-08-17 14:36 (+27d) | 2015-07-21 16:12 → 2015-08-17 17:00 (+27d) |
| 337 | Review Progress Report 5 | 2015-07-21 16:12 → 2015-08-18 08:00 (+28d) | 2015-07-21 17:00 → 2015-08-18 08:48 (+28d) |
| 338 | Update Progress Report 5 | 2015-07-22 08:00 → 2015-08-18 08:48 (+27d) | 2015-07-22 08:48 → 2015-08-18 09:36 (+27d) |
| 339 | Complete Progress Report 5 | 2015-07-22 08:48 → 2015-08-18 09:36 (+27d) | 2015-07-22 08:48 → 2015-08-18 09:36 (+27d) |
| 340 | **Report no.5** | 2015-07-22 08:48 → 2015-08-18 09:36 (+27d) | 2015-07-22 13:48 → 2015-08-18 14:36 (+27d) |
| 341 | Develop Report no.5 (draft version) | 2015-07-22 08:48 → 2015-08-18 09:36 (+27d) | 2015-07-22 09:36 → 2015-08-18 10:24 (+27d) |
| 342 | Review Report no.5 (draft version) | 2015-07-22 09:36 → 2015-08-18 10:24 (+27d) | 2015-07-22 11:12 → 2015-08-18 12:00 (+27d) |
| 343 | Update Report no.5 (draft version) | 2015-07-22 11:12 → 2015-08-18 13:00 (+27d) | 2015-07-22 12:00 → 2015-08-18 13:48 (+27d) |
| 344 | Submit Report no.5 (first version) | 2015-07-22 12:00 → 2015-08-18 13:48 (+27d) | 2015-07-22 12:00 → 2015-08-18 13:48 (+27d) |
| 345 | Revise after got comments for Report no.5 | 2015-07-22 13:00 → 2015-08-18 13:48 (+27d) | 2015-07-22 13:48 → 2015-08-18 14:36 (+27d) |
| 346 | Submit Report no.5 (final version) | 2015-07-22 13:48 → 2015-08-18 14:36 (+27d) | 2015-07-22 13:48 → 2015-08-18 14:36 (+27d) |
| 347 | **Termination** | 2015-07-22 13:48 → 2015-08-18 14:36 (+27d) | 2015-08-05 14:36 → 2015-09-01 15:24 (+27d) |
| 348 | **Report no.6** | 2015-07-22 13:48 → 2015-08-18 14:36 (+27d) | 2015-07-31 14:36 → 2015-08-27 15:24 (+27d) |
| 349 | Complete source code & final report | 2015-07-22 13:48 → 2015-08-18 14:36 (+27d) | 2015-07-23 13:48 → 2015-08-19 14:36 (+27d) |
| 350 | Develop installation guide | 2015-07-23 13:48 → 2015-08-19 14:36 (+27d) | 2015-07-24 08:48 → 2015-08-20 09:36 (+27d) |

| ID | Task | Start | Finish |
| --- | --- | --- | --- |
| 351 | Develop user guideline | 2015-07-24 08:48 → 2015-08-20 09:36 (+27d) | 2015-07-27 08:48 → 2015-08-21 09:36 (+25d) |
| 352 | Complete Project Result Assessment | 2015-07-27 08:48 → 2015-08-21 09:36 (+25d) | 2015-07-28 08:48 → 2015-08-24 09:36 (+27d) |
| 353 | Conduct lessons learned | 2015-07-28 08:48 → 2015-08-24 09:36 (+27d) | 2015-07-28 14:36 → 2015-08-24 15:24 (+27d) |
| 354 | Complete Presentation slide | 2015-07-28 14:36 → 2015-08-24 15:24 (+27d) | 2015-07-29 14:36 → 2015-08-25 15:24 (+27d) |
| 355 | Review Report no.6 (draft version) | 2015-07-29 14:36 → 2015-08-25 15:24 (+27d) | 2015-07-30 14:36 → 2015-08-26 15:24 (+27d) |
| 356 | Update Report no.6 (draft version) | 2015-07-30 14:36 → 2015-08-26 15:24 (+27d) | 2015-07-31 09:36 → 2015-08-27 10:24 (+27d) |
| 357 | Submit Report no.6 (first version) | 2015-07-31 09:36 → 2015-08-27 10:24 (+27d) | 2015-07-31 09:36 → 2015-08-27 10:24 (+27d) |
| 358 | Revise after got comments for Report no.6 | 2015-07-31 09:36 → 2015-08-27 10:24 (+27d) | 2015-07-31 14:36 → 2015-08-27 15:24 (+27d) |
| 359 | Submit Report no.6 (final version) | 2015-07-31 14:36 → 2015-08-27 15:24 (+27d) | 2015-07-31 14:36 → 2015-08-27 15:24 (+27d) |
| 360 | Submit Final report & CD source code | 2015-07-31 14:36 → 2015-08-27 15:24 (+27d) | 2015-07-31 14:36 → 2015-08-27 15:24 (+27d) |
| 361 | **Pre-closing** | 2015-07-31 14:36 → 2015-08-27 15:24 (+27d) | 2015-08-05 09:36 → 2015-09-01 10:24 (+27d) |
| 362 | Training presentation | 2015-07-31 14:36 → 2015-08-27 15:24 (+27d) | 2015-08-05 09:36 → 2015-09-01 10:24 (+27d) |
| 363 | **Closing** | 2015-08-05 09:36 → 2015-09-01 10:24 (+27d) | 2015-08-05 14:36 → 2015-09-01 15:24 (+27d) |
| 364 | Present Capstone Project & Completed | 2015-08-05 09:36 → 2015-09-01 10:24 (+27d) | 2015-08-05 14:36 → 2015-09-01 15:24 (+27d) |

## Version 6 (saved 2015-06-07, file BUSS_Project_Schedule_v1.04 _EN.mpp)

Note of the change: update plan

Last finish stays 2015-09-01.

Removed: 58 View notification; 59 Turn on/off Notification; 98 Edit favorite buses; 101 Interactive module; 102 View Achievement; 103 Share Achievement; 104 View Collection; 105 Share Collection; 106 View Mission; 107 Share Mission; 108 View Statistic; 109 Connect Facebook; 110 Scan QR code module

Changed:

| ID | Task | Start | Finish | Duration | Complete | Total float | Predecessors | Other |
| --- | --- | --- | --- | --- | --- | --- | --- | --- |
| 1 | **BL** |  |  |  | 14% → 13% |  |  |  |
| 3 | System feasible study |  |  |  |  |  |  | resources NamNT; MaiTTT; PhuongBB; CuongNLT; AnhTT → NamNT; MaiTTT; PhuongBB; AnhTT |
| 4 | Define business situation |  |  |  |  |  |  | resources NamNT; MaiTTT; PhuongBB; CuongNLT; AnhTT → NamNT; MaiTTT; PhuongBB; AnhTT |
| 5 | Develop project idea |  |  |  |  |  |  | resources NamNT; MaiTTT; PhuongBB; CuongNLT; AnhTT → NamNT; MaiTTT; PhuongBB; AnhTT |
| 6 | Define project and system scope |  |  |  |  |  |  | resources NamNT; MaiTTT; PhuongBB; CuongNLT; AnhTT → NamNT; MaiTTT; PhuongBB; AnhTT |
| 7 | Prepare project |  |  |  |  |  |  | resources NamNT; MaiTTT; PhuongBB; CuongNLT; AnhTT → NamNT; MaiTTT; PhuongBB; AnhTT |
| 8 | Kick-off meeting |  |  |  |  |  |  | resources NamNT; MaiTTT; PhuongBB; CuongNLT; AnhTT → NamNT; MaiTTT; PhuongBB; AnhTT |
| 10 | **Technologies** |  |  |  | 82% → 79% |  |  |  |
| 11 | Research development technologies |  |  | 2d → 1.3d |  |  |  | resources CuongNLT; NamNT; AnhTT → NamNT; AnhTT |
| 12 | Install and configure Eclipse IDE and Android SDK |  |  | 1d → 0.6d |  |  |  | resources CuongNLT; NamNT; AnhTT → NamNT; AnhTT |
| 13 | Training Java, Android SDK & Eclipse IDE |  |  |  |  |  |  | resources CuongNLT; AnhTT → AnhTT |
| 31 | Create draft concept design |  |  | 1.5d → 1d |  |  |  | resources CuongNLT; AnhTT → AnhTT |
| 33 | Update concept design |  |  |  |  |  |  | resources CuongNLT → AnhTT |
| 36 | Develop project definition |  |  |  |  |  |  | resources CuongNLT → none |
| 56 | **Common module** |  | 2015-05-28 17:00 → 2015-06-01 09:36 (+4d) | 4d → 5.2d |  | 2d → 0.8d |  |  |
| 57 | Turn on/off Snooze mode |  |  |  |  |  |  | resources CuongNLT → NamNT |
| 58 | Change app setting |  |  |  |  |  | Turn on/off Notification → 57 | resources CuongNLT → NamNT |
| 59 | View dashboard | 2015-05-28 08:00 → 2015-05-29 09:36 (+1d) | 2015-05-28 17:00 → 2015-06-01 09:36 (+4d) |  |  | 2d → 0.8d |  | resources CuongNLT → NamNT |
| 60 | **Account Management module** | 2015-05-25 08:00 → 2015-05-26 08:00 (+1d) | 2015-05-26 13:48 → 2015-05-29 09:36 (+3d) | 1.6d → 3.2d |  | 2.1d → 1.4d |  |  |
| 61 | Log in | 2015-05-25 08:00 → 2015-05-26 08:00 (+1d) | 2015-05-25 13:48 → 2015-05-26 13:48 (+1d) |  |  | 2.1d → 1.4d |  |  |
| 62 | Log out | 2015-05-25 13:48 → 2015-05-28 08:00 (+3d) | 2015-05-25 16:12 → 2015-05-28 10:24 (+3d) |  |  | 2.1d → 1.8d |  |  |
| 63 | View account profile | 2015-05-25 16:12 → 2015-05-28 10:24 (+3d) | 2015-05-26 08:48 → 2015-05-28 12:00 (+2d) |  |  | 2.1d → 1.8d |  |  |
| 64 | Change account info | 2015-05-26 08:48 → 2015-05-28 13:00 (+2d) | 2015-05-26 10:24 → 2015-05-28 14:36 (+2d) |  |  | 2.1d → 1.8d |  |  |
| 65 | Forgot password | 2015-05-26 10:24 → 2015-05-28 14:36 (+2d) | 2015-05-26 13:48 → 2015-05-29 09:36 (+3d) |  |  | 2.1d → 1.8d |  |  |
| 88 | **Favorite module** |  | 2015-05-28 15:24 → 2015-05-28 12:00 | 2.6d → 2.3d |  |  |  |  |
| 96 | Delete favorite buses | 2015-05-28 11:12 → 2015-05-28 08:48 | 2015-05-28 13:48 → 2015-05-28 10:24 |  |  |  | Edit favorite buses → 95 |  |
| 97 | Search favorite buses | 2015-05-28 13:48 → 2015-05-28 10:24 | 2015-05-28 15:24 → 2015-05-28 12:00 |  |  |  |  |  |
| 98 | **Non-functional Requirement Specification** | 2015-05-28 15:24 → 2015-05-28 13:00 |  | 2.2d → 2.5d |  |  |  |  |
| 99 | Develop User Interface Requirement | 2015-05-28 15:24 → 2015-05-28 13:00 | 2015-06-01 09:36 → 2015-05-29 16:12 (-3d) |  |  |  |  |  |
| 100 | Develop Performance Requirement |  |  |  |  |  |  | resources CuongNLT → NamNT |
| 101 | Review Software Requirement Specification with checklist |  |  |  |  |  | 54, 59, 65, 72, 77, 84, 87, 97, Scan QR code module, 100 → 54, 59, 65, 72, 77, 84, 87, 97, 100 |  |
| 102 | Update Software Requirement Specification |  |  |  |  |  |  | resources CuongNLT; AnhTT; NamNT → AnhTT; NamNT |
| 104 | **Design** | 2015-06-01 09:36 → 2015-05-29 16:12 (-3d) |  | 11.9d → 12.2d |  | 2.1d → 2.4d |  |  |
| 105 | **Design Review checklist** | 2015-06-01 09:36 → 2015-05-29 16:12 (-3d) | 2015-06-05 15:24 → 2015-06-05 12:00 |  |  | 2.1d → 2.4d |  |  |
| 106 | Develop review checklist | 2015-06-01 09:36 → 2015-05-29 16:12 (-3d) | 2015-06-05 12:00 → 2015-06-05 09:36 |  |  | 2.1d → 2.4d |  |  |
| 107 | Review review checklist | 2015-06-05 13:00 → 2015-06-05 09:36 | 2015-06-05 13:48 → 2015-06-05 10:24 |  |  | 2.1d → 2.4d |  |  |
| 108 | Update review checklist | 2015-06-05 13:48 → 2015-06-05 10:24 | 2015-06-05 15:24 → 2015-06-05 12:00 |  |  | 2.1d → 2.4d |  |  |
| 109 | Complete review checklist | 2015-06-05 15:24 → 2015-06-05 12:00 | 2015-06-05 15:24 → 2015-06-05 12:00 |  |  | 2.1d → 2.4d |  |  |
| 111 | Define system structure and collect system features |  |  |  |  |  |  | resources NamNT; CuongNLT → NamNT |
| 112 | Study & choose System Architecture |  |  |  |  |  |  | resources NamNT; CuongNLT → NamNT |
| 114 | Update Architecture Design |  |  |  |  |  |  | resources NamNT; CuongNLT → NamNT |

## Version 7 (saved 2015-06-09, file BUSS_Project_Schedule_v1.04 _EN.mpp)

Note of the change: update plan

Last finish stays 2015-09-01. Complete tasks 36 → 74.

Changed:

| ID | Task | Start | Finish | Complete | Total float |
| --- | --- | --- | --- | --- | --- |
| 1 | **BL** |  |  | 13% → 24% |  |
| 48 | Submit PP, URS, Concept Design | 2015-05-22 17:00 A | 2015-05-22 17:00 A | 0% → 100% | 0d → none |
| 49 | **Solution** |  |  | 1% → 35% |  |
| 50 | **Requirements** |  |  | 2% → 89% |  |
| 51 | **Software Requirements Specification** |  |  | 2% → 89% |  |
| 52 | **Functional Requirement Specification** |  | 2015-06-01 13:48 A | 3% → 100% | 0.4d → none |
| 55 | **Bus Rider Module** | 2015-05-25 08:00 A | 2015-06-01 13:48 A | 0% → 100% | 0d → none |
| 56 | **Common module** | 2015-05-25 08:00 A | 2015-06-01 09:36 A | 0% → 100% | 0.8d → none |
| 57 | Turn on/off Snooze mode | 2015-05-25 08:00 A | 2015-05-25 17:00 A | 0% → 100% | 2d → none |
| 58 | Change app setting | 2015-05-26 13:48 A | 2015-05-27 17:00 A | 0% → 100% | 2d → none |
| 59 | View dashboard | 2015-05-29 09:36 A | 2015-06-01 09:36 A | 0% → 100% | 0.8d → none |
| 60 | **Account Management module** | 2015-05-26 08:00 A | 2015-05-29 09:36 A | 0% → 100% | 1.4d → none |
| 61 | Log in | 2015-05-26 08:00 A | 2015-05-26 13:48 A | 0% → 100% | 1.4d → none |
| 62 | Log out | 2015-05-28 08:00 A | 2015-05-28 10:24 A | 0% → 100% | 1.8d → none |
| 63 | View account profile | 2015-05-28 10:24 A | 2015-05-28 12:00 A | 0% → 100% | 1.8d → none |
| 64 | Change account info | 2015-05-28 13:00 A | 2015-05-28 14:36 A | 0% → 100% | 1.8d → none |
| 65 | Forgot password | 2015-05-28 14:36 A | 2015-05-29 09:36 A | 0% → 100% | 1.8d → none |
| 66 | **Bus module** | 2015-05-25 08:00 A | 2015-05-28 17:00 A | 0% → 100% | 2d → none |
| 67 | View bus list | 2015-05-25 08:00 A | 2015-05-25 10:24 A | 0% → 100% | 2d → none |
| 68 | View bus info | 2015-05-25 10:24 A | 2015-05-25 13:48 A | 0% → 100% | 2d → none |
| 69 | View bus route | 2015-05-25 13:48 A | 2015-05-26 09:36 A | 0% → 100% | 2d → none |
| 70 | View nearest bus | 2015-05-26 09:36 A | 2015-05-27 09:36 A | 0% → 100% | 2d → none |
| 71 | View bus map | 2015-05-27 09:36 A | 2015-05-27 17:00 A | 0% → 100% | 2d → none |
| 72 | View bus near me | 2015-05-28 08:00 A | 2015-05-28 17:00 A | 0% → 100% | 2d → none |
| 73 | **Path Finder module** | 2015-05-25 13:48 A | 2015-05-28 15:24 A | 0% → 100% | 0.4d → none |
| 74 | Find path | 2015-05-25 13:48 A | 2015-05-27 08:48 A | 0% → 100% | 0.4d → none |
| 75 | View paths found | 2015-05-27 08:48 A | 2015-05-27 12:00 A | 0% → 100% | 0.4d → none |
| 76 | View path detail | 2015-05-27 13:00 A | 2015-05-28 09:36 A | 0% → 100% | 0.4d → none |
| 77 | View direction | 2015-05-28 09:36 A | 2015-05-28 15:24 A | 0% → 100% | 0.4d → none |
| 78 | **Reminder module** | 2015-05-28 15:24 A | 2015-06-01 13:48 A | 0% → 100% | 0.4d → none |
| 79 | View bus reminder | 2015-05-28 15:24 A | 2015-05-29 10:24 A | 0% → 100% | 0.4d → none |
| 80 | Add reminder | 2015-05-29 10:24 A | 2015-05-29 12:00 A | 0% → 100% | 0.4d → none |
| 81 | Edit reminder | 2015-05-29 13:00 A | 2015-05-29 15:24 A | 0% → 100% | 0.4d → none |
| 82 | Delete reminder | 2015-05-29 15:24 A | 2015-05-29 16:12 A | 0% → 100% | 0.4d → none |
| 83 | Suspend/Unsuspend all reminder | 2015-05-29 16:12 A | 2015-06-01 11:12 A | 0% → 100% | 0.4d → none |
| 84 | Suspend/Unsuspend a chosen reminder | 2015-06-01 11:12 A | 2015-06-01 13:48 A | 0% → 100% | 0.4d → none |
| 85 | **Track module** | 2015-05-25 08:00 A | 2015-05-26 09:36 A | 0% → 100% | 0d → none |
| 86 | Tracking | 2015-05-25 08:00 A | 2015-05-25 17:00 A | 0% → 100% | 0d → none |
| 87 | Cancel track | 2015-05-26 08:00 A | 2015-05-26 09:36 A | 0% → 100% | 0d → none |
| 88 | **Favorite module** | 2015-05-26 09:36 A | 2015-05-28 12:00 A | 0% → 100% | 0d → none |
| 89 | View favorite places | 2015-05-26 09:36 A | 2015-05-26 13:48 A | 0% → 100% | 0d → none |
| 90 | Add favorite places | 2015-05-26 13:48 A | 2015-05-26 15:24 A | 0% → 100% | 0d → none |
| 91 | Edit favorite places | 2015-05-26 15:24 A | 2015-05-27 08:48 A | 0% → 100% | 0d → none |
| 92 | Delete favorite places | 2015-05-27 08:48 A | 2015-05-27 10:24 A | 0% → 100% | 0d → none |
| 93 | Search favorite places | 2015-05-27 10:24 A | 2015-05-27 12:00 A | 0% → 100% | 0d → none |
| 94 | View favorite buses | 2015-05-27 13:00 A | 2015-05-27 16:12 A | 0% → 100% | 0d → none |
| 95 | Add favorite buses | 2015-05-27 16:12 A | 2015-05-28 08:48 A | 0% → 100% | 0d → none |
| 96 | Delete favorite buses | 2015-05-28 08:48 A | 2015-05-28 10:24 A | 0% → 100% | 0d → none |
| 97 | Search favorite buses | 2015-05-28 10:24 A | 2015-05-28 12:00 A | 0% → 100% | 0d → none |
| 98 | **Non-functional Requirement Specification** | 2015-05-28 13:00 A | 2015-06-01 17:00 A | 0% → 100% | 0d → none |
| 99 | Develop User Interface Requirement | 2015-05-28 13:00 A | 2015-05-29 16:12 A | 0% → 100% | 0d → none |
| 100 | Develop Performance Requirement | 2015-06-01 09:36 A | 2015-06-01 17:00 A | 0% → 100% | 0d → none |
| 101 | Review Software Requirement Specification with checklist | 2015-06-02 08:00 A |  | 0% → 70% |  |

## Version 8 (saved 2015-06-15, file BUSS_Project_Schedule_v1.05 _EN.mpp)

Note of the change: udpate

Last finish stays 2015-09-01. Complete tasks 74 → 86.

Changed:

| ID | Task | Start | Finish | Complete | Total float |
| --- | --- | --- | --- | --- | --- |
| 1 | **BL** |  |  | 24% → 29% |  |
| 49 | **Solution** |  |  | 35% → 47% |  |
| 50 | **Requirements** |  | 2015-06-08 08:48 A | 89% → 100% | 0d → none |
| 51 | **Software Requirements Specification** |  | 2015-06-08 08:48 A | 89% → 100% | 0d → none |
| 101 | Review Software Requirement Specification with checklist |  | 2015-06-03 17:00 A | 70% → 100% | 0d → none |
| 102 | Update Software Requirement Specification | 2015-06-04 08:00 A | 2015-06-08 08:48 A | 0% → 100% | 0d → none |
| 103 | Complete Software Requirement Specification | 2015-06-08 08:48 A | 2015-06-08 08:48 A | 0% → 100% | 0d → none |
| 104 | **Design** | 2015-05-29 16:12 A |  | 0% → 30% | 2.4d → 49.7d |
| 105 | **Design Review checklist** | 2015-05-29 16:12 A | 2015-06-05 12:00 A | 0% → 100% | 2.4d → none |
| 106 | Develop review checklist | 2015-05-29 16:12 A | 2015-06-05 09:36 A | 0% → 100% | 2.4d → none |
| 107 | Review review checklist | 2015-06-05 09:36 A | 2015-06-05 10:24 A | 0% → 100% | 2.4d → none |
| 108 | Update review checklist | 2015-06-05 10:24 A | 2015-06-05 12:00 A | 0% → 100% | 2.4d → none |
| 109 | Complete review checklist | 2015-06-05 12:00 A | 2015-06-05 12:00 A | 0% → 100% | 2.4d → none |
| 110 | **Architecture design** | 2015-06-08 08:48 A | 2015-06-10 12:00 A | 0% → 100% | 0d → none |
| 111 | Define system structure and collect system features | 2015-06-08 08:48 A | 2015-06-09 08:48 A | 0% → 100% | 0d → none |
| 112 | Study & choose System Architecture | 2015-06-09 08:48 A | 2015-06-09 16:12 A | 0% → 100% | 0d → none |
| 113 | Review Architecture Design with checklist | 2015-06-09 16:12 A | 2015-06-10 09:36 A | 0% → 100% | 0d → none |
| 114 | Update Architecture Design | 2015-06-10 09:36 A | 2015-06-10 12:00 A | 0% → 100% | 0d → none |
| 115 | Complete System Architecture version 1.0 | 2015-06-10 12:00 A | 2015-06-10 12:00 A | 0% → 100% | 0d → none |

## Version 9 (saved 2015-06-19, file BUSS_Project_Schedule_v1.05 _EN.mpp)

Last finish 2015-09-01 → 2015-09-10 (+9d).

Added:

| ID | Task | Duration | Start | Finish | Predecessors | Resources |
| --- | --- | --- | --- | --- | --- | --- |
| 121 | **Common module** | 1.4d | 2015-06-18 15:24 | 2015-06-29 09:36 |  |  |
| 122 | Change app setting | 1.4d | 2015-06-18 15:24 | 2015-06-29 09:36 | 115 | NamNT |
| 123 | **Account Management module** | 3.4d | 2015-06-17 13:00 | 2015-06-29 16:12 |  |  |
| 124 | Log in | 0.6d | 2015-06-17 13:00 | 2015-06-18 08:48 | 115 | NamNT |
| 125 | Log out | 0.3d | 2015-06-18 08:48 | 2015-06-18 11:12 | 124 | NamNT |
| 126 | View account profile | 0.2d | 2015-06-18 11:12 | 2015-06-18 13:48 | 125 | NamNT |
| 127 | Change account info | 0.2d | 2015-06-18 13:48 | 2015-06-18 15:24 | 126 | NamNT |
| 128 | Forgot password | 0.3d | 2015-06-29 13:48 | 2015-06-29 16:12 | 127 | NamNT |
| 130 | View bus list | 0.3d | 2015-06-10 13:00 | 2015-06-10 15:24 | 115 | MaiTTT |
| 131 | View bus info | 0.3d | 2015-06-10 15:24 | 2015-06-11 08:48 | 130 | MaiTTT |
| 132 | View bus route | 0.6d | 2015-06-11 08:48 | 2015-06-11 14:36 | 131 | MaiTTT |
| 133 | View nearest bus | 1d | 2015-06-11 14:36 | 2015-06-12 14:36 | 132 | MaiTTT |
| 134 | View bus map | 0.8d | 2015-06-12 14:36 | 2015-06-15 12:00 | 133 | MaiTTT |
| 135 | View bus near me | 1d | 2015-06-15 13:00 | 2015-06-16 12:00 | 134 | MaiTTT |
| 136 | **Path Finder module** | 4.2d | 2015-06-10 13:00 | 2015-06-16 14:36 |  |  |
| 137 | Find path | 1.5d | 2015-06-10 13:00 | 2015-06-11 17:00 | 115 | NamNT |
| 138 | View paths found | 0.4d | 2015-06-12 08:00 | 2015-06-12 11:12 | 137 | NamNT |
| 139 | View path detail | 0.7d | 2015-06-12 11:12 | 2015-06-15 08:48 | 138 | NamNT |
| 140 | View direction | 0.6d | 2015-06-16 08:48 | 2015-06-16 14:36 | 139 | NamNT |
| 141 | **Reminder module** | 1.8d | 2015-06-16 14:36 | 2015-06-18 12:00 |  |  |
| 142 | View bus reminder | 0.5d | 2015-06-16 14:36 | 2015-06-17 09:36 | 140 | AnhTT |
| 143 | Add reminder | 0.2d | 2015-06-17 09:36 | 2015-06-17 11:12 | 142 | AnhTT |
| 144 | Edit reminder | 0.3d | 2015-06-17 11:12 | 2015-06-17 14:36 | 143 | AnhTT |
| 145 | Delete reminder | 0.1d | 2015-06-17 14:36 | 2015-06-17 15:24 | 144 | AnhTT |
| 146 | Suspend/Unsuspend all reminder | 0.5d | 2015-06-17 15:24 | 2015-06-18 10:24 | 145 | AnhTT |
| 147 | Suspend/Unsuspend a chosen reminder | 0.2d | 2015-06-18 10:24 | 2015-06-18 12:00 | 146 | AnhTT |
| 148 | **Track module** | 1.2d | 2015-06-10 13:00 | 2015-06-11 14:36 |  |  |
| 149 | Tracking | 1d | 2015-06-10 13:00 | 2015-06-11 12:00 | 115 | PhuongBB |
| 150 | Cancel track | 0.2d | 2015-06-11 13:00 | 2015-06-11 14:36 | 149 | PhuongBB |
| 151 | **Favorite module** | 2.3d | 2015-06-11 14:36 | 2015-06-15 17:00 |  |  |
| 152 | View favorite places | 0.4d | 2015-06-11 14:36 | 2015-06-12 08:48 | 150 | PhuongBB |
| 153 | Add favorite places | 0.2d | 2015-06-12 08:48 | 2015-06-12 10:24 | 152 | PhuongBB |
| 154 | Edit favorite places | 0.3d | 2015-06-12 10:24 | 2015-06-12 13:48 | 153 | PhuongBB |
| 155 | Delete favorite places | 0.2d | 2015-06-12 13:48 | 2015-06-12 15:24 | 154 | PhuongBB |
| 156 | Search favorite places | 0.2d | 2015-06-12 15:24 | 2015-06-12 17:00 | 155 | PhuongBB |
| 157 | View favorite buses | 0.4d | 2015-06-15 08:00 | 2015-06-15 11:12 | 156 | PhuongBB |
| 158 | Add favorite buses | 0.2d | 2015-06-15 11:12 | 2015-06-15 13:48 | 157 | PhuongBB |
| 159 | Delete favorite buses | 0.2d | 2015-06-15 13:48 | 2015-06-15 15:24 | 158 | PhuongBB |
| 160 | Search favorite buses | 0.2d | 2015-06-15 15:24 | 2015-06-15 17:00 | 159 | PhuongBB |

Removed: 121 Sync module; 122 PhoneNumberSync module; 123 Connect Facebook module; 124 Show Favorite place module; 125 Show Favorite bus module; 126 Add/remove Favorite place module; 127 About module; 129 Bus list module; 130 Bus info module; 131 Bus route module; 132 Bus nearest module; 133 Bus map module; 134 Set/unset favorite bus module; 135 Remind module; 136 Track module; 137 Get notification module; 138 Swap direction module; 139 Shigeki module; 140 Achievement module; 141 Collection module; 142 Mission module; 143 Statistic module; 144 Rank module; 145 Scan QR code module; 146 Search module; 147 Search bus module; 148 Search route module; 149 Search Favorite bus module; 150 Search Favorite place module; 151 Setting module

Changed:

| ID | Task | Start | Finish | Duration | Complete | Total float | Predecessors | Other |
| --- | --- | --- | --- | --- | --- | --- | --- | --- |
| 1 | **BL** |  | 2015-09-01 15:24 → 2015-09-10 16:12 (+9d) | 76.8d → 83.9d | 29% → 27% |  |  |  |
| 49 | **Solution** |  | 2015-07-09 12:00 → 2015-07-24 09:36 (+15d) | 28.5d → 39.2d | 47% → 40% | 38.3d → 34.7d |  |  |
| 104 | **Design** |  | 2015-06-17 08:48 → 2015-07-03 09:36 (+16d) | 12.2d → 19.3d | 30% → 18% |  |  |  |
| 116 | **Detailed design** |  | 2015-06-15 13:48 → 2015-07-02 11:12 (+17d) | 3.1d → 10.9d |  | 1.5d → 0.8d |  |  |
| 117 | **User Interface design** |  | 2015-06-12 13:48 → 2015-06-29 16:12 (+17d) | 2.1d → 8.4d |  | 1.5d → 0.8d |  |  |
| 118 | **Bus Driver Module** | 2015-06-10 13:00 → 2015-06-29 09:36 (+19d) | 2015-06-10 16:12 → 2015-06-29 13:48 (+19d) |  |  | 2.4d → 1.1d |  |  |
| 119 | Send bus info module | 2015-06-10 13:00 → 2015-06-29 09:36 (+19d) | 2015-06-10 16:12 → 2015-06-29 13:48 (+19d) |  |  | 2.4d → 1.1d |  | resources none → NamNT |
| 120 | **Bus Rider Module** |  | 2015-06-12 13:48 → 2015-06-29 16:12 (+17d) | 2.1d → 8.4d |  | 1.5d → 0.8d |  |  |
| 129 | **Bus module** |  | 2015-06-12 13:48 → 2015-06-16 12:00 (+4d) | 2.1d → 4d |  | 1.5d → 5.2d |  |  |
| 161 | Review Detailed Design with checklist | 2015-06-12 13:48 → 2015-06-29 16:12 (+17d) | 2015-06-15 13:48 → 2015-06-30 16:12 (+15d) |  |  | 1.5d → 0.8d | 109, 119, About module, Swap direction module, Scan QR code module, Setting module → 109, 119, 122, 128, 135, 140, 147, 150, 160 | resources none → PhuongBB; MaiTTT |
| 162 | Update Detailed Design | 2015-06-15 13:48 → 2015-06-30 16:12 (+15d) | 2015-06-15 13:48 → 2015-07-02 11:12 (+17d) | 0d → 1d |  | 1.5d → 0.8d |  | resources none → NamNT; MaiTTT |
| 163 | Complete Detailed Design version 1.0 | 2015-06-15 13:48 → 2015-07-02 11:12 (+17d) | 2015-06-15 13:48 → 2015-07-02 11:12 (+17d) |  |  | 1.5d → 0.8d |  | resources none → NamNT |
| 164 | **Database design** | 2015-06-10 13:00 → 2015-06-15 08:48 (+5d) | 2015-06-12 10:24 → 2015-06-17 12:00 (+5d) | 1.8d → 2.4d |  |  |  |  |
| 165 | Create Databse Design draft version | 2015-06-10 13:00 → 2015-06-15 08:48 (+5d) | 2015-06-11 12:00 → 2015-06-16 08:48 (+5d) |  |  |  |  | resources none → NamNT |
| 166 | Review Database Design with checklist | 2015-06-11 13:00 → 2015-06-16 14:36 (+5d) | 2015-06-11 17:00 → 2015-06-17 09:36 (+6d) |  |  |  |  | resources none → NamNT |
| 167 | Update Database Design | 2015-06-12 08:00 → 2015-06-17 09:36 (+5d) | 2015-06-12 10:24 → 2015-06-17 12:00 (+5d) |  |  |  |  | resources none → NamNT |
| 168 | Complete Database Design version 1.0 | 2015-06-12 10:24 → 2015-06-17 12:00 (+5d) | 2015-06-12 10:24 → 2015-06-17 12:00 (+5d) |  |  |  |  | resources none → NamNT |
| 169 | **Class design** | 2015-06-12 10:24 → 2015-06-29 16:12 (+17d) | 2015-06-17 08:48 → 2015-07-03 09:36 (+16d) | 2.8d → 3.3d |  |  |  |  |
| 170 | Define class/component | 2015-06-12 10:24 → 2015-06-29 16:12 (+17d) | 2015-06-16 10:24 → 2015-07-01 16:12 (+15d) |  |  |  |  | resources none → NamNT |
| 171 | Review Class Design with checklist | 2015-06-16 10:24 → 2015-07-02 11:12 (+16d) | 2015-06-16 15:24 → 2015-07-02 16:12 (+16d) |  |  |  |  | resources none → NamNT |
| 172 | Update Class Design | 2015-06-16 15:24 → 2015-07-02 16:12 (+16d) | 2015-06-17 08:48 → 2015-07-03 09:36 (+16d) |  |  |  |  | resources none → NamNT |
| 173 | Complete Class Design version 1.0 | 2015-06-17 08:48 → 2015-07-03 09:36 (+16d) | 2015-06-17 08:48 → 2015-07-03 09:36 (+16d) |  |  |  |  | resources none → NamNT |
| 174 | Complete design | 2015-06-17 08:48 → 2015-07-03 09:36 (+16d) | 2015-06-17 08:48 → 2015-07-03 09:36 (+16d) |  |  |  |  | resources none → NamNT |
| 175 | **Progress Report 2** | 2015-06-17 08:48 → 2015-07-03 14:36 (+16d) | 2015-06-17 13:48 → 2015-07-06 09:36 (+19d) |  |  | 49.2d → 48.7d |  |  |
| 176 | Develop Progress Report 2 | 2015-06-17 08:48 → 2015-07-03 14:36 (+16d) | 2015-06-17 11:12 → 2015-07-03 17:00 (+16d) |  |  | 49.2d → 48.7d |  | resources none → NamNT |
| 177 | Review Progress Report 2 | 2015-06-17 11:12 → 2015-07-06 08:00 (+19d) | 2015-06-17 12:00 → 2015-07-06 08:48 (+19d) |  |  | 49.2d → 48.7d |  | resources none → MaiTTT |
| 178 | Update Progress Report 2 | 2015-06-17 13:00 → 2015-07-06 08:48 (+19d) | 2015-06-17 13:48 → 2015-07-06 09:36 (+19d) |  |  | 49.2d → 48.7d |  | resources none → NamNT |
| 179 | Complete Progress Report 2 | 2015-06-17 13:48 → 2015-07-06 09:36 (+19d) | 2015-06-17 13:48 → 2015-07-06 09:36 (+19d) |  |  | 49.2d → 48.7d |  | resources none → NamNT |
| 180 | Submit SRS,AD,DD | 2015-06-17 08:48 → 2015-07-03 09:36 (+16d) | 2015-06-17 08:48 → 2015-07-03 09:36 (+16d) |  |  |  |  | resources none → NamNT |
| 181 | **Coding & Unit Testing** | 2015-06-17 08:48 → 2015-07-03 09:36 (+16d) | 2015-06-18 08:48 → 2015-07-06 09:36 (+18d) |  |  |  |  |  |
| 182 | **Bus Driver Module** | 2015-06-17 08:48 → 2015-07-03 09:36 (+16d) | 2015-06-18 08:48 → 2015-07-06 09:36 (+18d) |  |  |  |  |  |
| 183 | Send bus info module | 2015-06-17 08:48 → 2015-07-03 09:36 (+16d) | 2015-06-18 08:48 → 2015-07-06 09:36 (+18d) |  |  |  |  | resources none → AnhTT |
| 184 | **Testing** | 2015-06-10 13:00 → 2015-06-16 08:00 (+6d) | 2015-07-06 10:24 → 2015-07-20 17:00 (+14d) | 12.8d → 20d |  | 18.6d → 10d |  |  |
| 185 | **Test review checklist** | 2015-06-10 13:00 → 2015-06-16 08:00 (+6d) | 2015-06-11 12:00 → 2015-06-19 08:48 (+8d) | 1d → 3.1d |  | 19d → 10d |  |  |
| 186 | **Test plan review checklist** | 2015-06-10 13:00 → 2015-06-16 08:00 (+6d) | 2015-06-11 08:48 → 2015-06-18 13:48 (+7d) | 0.6d → 2.6d |  | 19d → 10d |  |  |
| 187 | Develop test plan review checklist | 2015-06-10 13:00 → 2015-06-16 08:00 (+6d) | 2015-06-10 15:24 → 2015-06-16 15:24 (+6d) | 0.3d → 0.6d |  | 19d → 10d |  | resources none → MaiTTT; PhuongBB |
| 188 | Review test plan review checklist | 2015-06-10 15:24 → 2015-06-16 15:24 (+6d) | 2015-06-10 17:00 → 2015-06-16 17:00 (+6d) |  |  | 19d → 10d |  | resources none → MaiTTT; PhuongBB |
| 189 | Update test plan review checklist | 2015-06-11 08:00 → 2015-06-17 08:00 (+6d) | 2015-06-11 08:48 → 2015-06-18 13:48 (+7d) | 0.1d → 0.2d |  | 19d → 10d |  | resources none → MaiTTT; PhuongBB |
| 190 | Complete test plan review checklist | 2015-06-11 08:48 → 2015-06-18 13:48 (+7d) | 2015-06-11 08:48 → 2015-06-18 13:48 (+7d) |  |  | 19d → 10d |  | resources none → MaiTTT; PhuongBB |
| 191 | **Test case review checklist** | 2015-06-10 13:00 → 2015-06-16 08:00 (+6d) | 2015-06-11 12:00 → 2015-06-19 08:48 (+8d) | 1d → 3.1d |  | 40.5d → 42d |  |  |
| 192 | Develop test case review checklist | 2015-06-10 13:00 → 2015-06-16 08:00 (+6d) | 2015-06-10 17:00 → 2015-06-18 12:00 (+8d) | 0.5d → 1d |  | 40.5d → 42d |  | resources none → MaiTTT; PhuongBB |
| 193 | Review test case review checklist | 2015-06-11 08:00 → 2015-06-18 13:00 (+7d) | 2015-06-11 10:24 → 2015-06-18 16:12 (+7d) | 0.3d → 0.4d |  | 40.5d → 42d |  | resources none → MaiTTT; PhuongBB |
| 194 | Update test case review checklist | 2015-06-11 10:24 → 2015-06-18 16:12 (+7d) | 2015-06-11 12:00 → 2015-06-19 08:48 (+8d) |  |  | 40.5d → 42d |  | resources none → MaiTTT; PhuongBB |
| 195 | Complete test case review checklist | 2015-06-11 12:00 → 2015-06-19 08:48 (+8d) | 2015-06-11 12:00 → 2015-06-19 08:48 (+8d) |  |  | 40.5d → 42d |  | resources none → MaiTTT; PhuongBB |
| 196 | Complete review checklist | 2015-06-11 12:00 → 2015-06-19 08:48 (+8d) | 2015-06-11 12:00 → 2015-06-19 08:48 (+8d) |  |  | 40.5d → 42d |  | resources none → MaiTTT; PhuongBB |
| 197 | **Test plan** | 2015-06-10 13:00 → 2015-06-17 08:00 (+7d) | 2015-06-12 10:24 → 2015-07-03 17:00 (+21d) | 1.8d → 8d |  | 18.6d → 10.6d |  |  |
| 198 | Develop test plan | 2015-06-10 13:00 → 2015-06-17 08:00 (+7d) | 2015-06-11 12:00 → 2015-06-17 17:00 (+6d) |  |  | 18.6d → 10.6d |  | resources none → MaiTTT |
| 199 | Review test plan | 2015-06-11 13:00 → 2015-07-03 09:36 (+22d) | 2015-06-11 17:00 → 2015-07-03 14:36 (+22d) |  |  | 18.6d → 15d |  | resources none → NamNT |
| 200 | Update test plan | 2015-06-12 08:00 → 2015-07-03 14:36 (+21d) | 2015-06-12 10:24 → 2015-07-03 17:00 (+21d) |  |  | 18.6d → 15d |  | resources none → MaiTTT |
| 201 | Complete test plan | 2015-06-12 10:24 → 2015-07-03 17:00 (+21d) | 2015-06-12 10:24 → 2015-07-03 17:00 (+21d) |  |  | 18.6d → 15d |  | resources none → MaiTTT |
| 202 | **Test case** | 2015-06-12 10:24 → 2015-07-06 08:00 (+24d) | 2015-07-06 10:24 → 2015-07-20 17:00 (+14d) |  |  | 18.6d → 15d |  |  |
| 203 | **Unit test** | 2015-06-12 10:24 → 2015-07-06 08:00 (+24d) | 2015-06-18 10:24 → 2015-07-09 17:00 (+21d) |  |  | 18.6d → 15d |  |  |
| 204 | **Develop unit test case** | 2015-06-12 10:24 → 2015-07-06 08:00 (+24d) | 2015-06-16 10:24 → 2015-07-07 17:00 (+21d) |  |  | 18.6d → 15d |  |  |
| 205 | Bus driver module | 2015-06-12 10:24 → 2015-07-06 08:00 (+24d) | 2015-06-12 15:24 → 2015-07-06 12:00 (+24d) |  |  | 18.6d → 15d |  | resources none → PhuongBB |
| 206 | Sync module | 2015-06-12 15:24 → 2015-07-06 13:00 (+24d) | 2015-06-15 10:24 → 2015-07-06 17:00 (+21d) |  |  | 18.6d → 15d |  |  |
| 207 | Bus module | 2015-06-15 10:24 → 2015-07-07 08:00 (+22d) | 2015-06-16 10:24 → 2015-07-07 17:00 (+21d) |  |  | 18.6d → 15d |  |  |
| 208 | Shigeki module | 2015-06-12 10:24 → 2015-07-06 08:00 (+24d) | 2015-06-15 08:48 → 2015-07-06 15:24 (+21d) |  |  | 18.6d → 15d |  |  |
| 209 | Search module | 2015-06-15 08:48 → 2015-07-06 15:24 (+21d) | 2015-06-15 13:48 → 2015-07-07 10:24 (+22d) |  |  | 18.6d → 15d |  |  |
| 210 | Setting module | 2015-06-15 13:48 → 2015-07-07 10:24 (+22d) | 2015-06-16 10:24 → 2015-07-07 17:00 (+21d) |  |  | 18.6d → 15d |  |  |
| 211 | Review unit test case | 2015-06-16 10:24 → 2015-07-08 08:00 (+22d) | 2015-06-17 10:24 → 2015-07-08 17:00 (+21d) |  |  | 18.6d → 15d |  |  |
| 212 | Update unit test case | 2015-06-17 10:24 → 2015-07-09 08:00 (+22d) | 2015-06-18 10:24 → 2015-07-09 17:00 (+21d) |  |  | 18.6d → 15d |  |  |
| 213 | Complete unit test case | 2015-06-18 10:24 → 2015-07-09 17:00 (+21d) | 2015-06-18 10:24 → 2015-07-09 17:00 (+21d) |  |  | 18.6d → 15d |  |  |
| 214 | **Integration test** | 2015-06-18 10:24 → 2015-07-10 08:00 (+22d) | 2015-07-01 10:24 → 2015-07-15 17:00 (+14d) |  |  | 28.7d → 25.1d |  |  |
| 215 | Develop integration test case | 2015-06-18 10:24 → 2015-07-10 08:00 (+22d) | 2015-06-29 10:24 → 2015-07-13 17:00 (+14d) |  |  | 28.7d → 25.1d |  |  |
| 216 | Review integration test case | 2015-06-29 10:24 → 2015-07-14 08:00 (+15d) | 2015-06-30 10:24 → 2015-07-14 17:00 (+14d) |  |  | 28.7d → 25.1d |  |  |
| 217 | Update integration test case | 2015-06-30 10:24 → 2015-07-15 08:00 (+15d) | 2015-07-01 10:24 → 2015-07-15 17:00 (+14d) |  |  | 28.7d → 25.1d |  |  |
| 218 | Complete integration test case | 2015-07-01 10:24 → 2015-07-15 17:00 (+14d) | 2015-07-01 10:24 → 2015-07-15 17:00 (+14d) |  |  | 28.7d → 25.1d |  |  |
| 219 | **System test** | 2015-07-01 10:24 → 2015-07-16 08:00 (+15d) | 2015-07-06 10:24 → 2015-07-20 17:00 (+14d) |  |  | 28.7d → 25.1d |  |  |
| 220 | Develop system test case | 2015-07-01 10:24 → 2015-07-16 08:00 (+15d) | 2015-07-02 10:24 → 2015-07-16 17:00 (+14d) |  |  | 28.7d → 25.1d |  |  |
| 221 | Review system test case | 2015-07-02 10:24 → 2015-07-17 08:00 (+15d) | 2015-07-03 10:24 → 2015-07-17 17:00 (+14d) |  |  | 28.7d → 25.1d |  |  |

| ID | Task | Start | Finish | Duration | Total float |
| --- | --- | --- | --- | --- | --- |
| 222 | Update system test case | 2015-07-03 10:24 → 2015-07-20 08:00 (+17d) | 2015-07-06 10:24 → 2015-07-20 17:00 (+14d) |  | 28.7d → 25.1d |
| 223 | Complete system test case | 2015-07-06 10:24 → 2015-07-20 17:00 (+14d) | 2015-07-06 10:24 → 2015-07-20 17:00 (+14d) |  | 28.7d → 25.1d |
| 224 | **Progress report 3** | 2015-07-06 10:24 → 2015-07-21 08:00 (+15d) | 2015-07-06 15:24 → 2015-07-21 12:00 (+15d) |  | 28.7d → 25.1d |
| 225 | Develop Progress Report 3 | 2015-07-06 10:24 → 2015-07-21 08:00 (+15d) | 2015-07-06 13:48 → 2015-07-21 10:24 (+15d) |  | 28.7d → 25.1d |
| 226 | Review Progress Report 3 | 2015-07-06 13:48 → 2015-07-21 10:24 (+15d) | 2015-07-06 14:36 → 2015-07-21 11:12 (+15d) |  | 28.7d → 25.1d |
| 227 | Update Progress Report 3 | 2015-07-06 14:36 → 2015-07-21 11:12 (+15d) | 2015-07-06 15:24 → 2015-07-21 12:00 (+15d) |  | 28.7d → 25.1d |
| 228 | Complete Progress Report 3 | 2015-07-06 15:24 → 2015-07-21 12:00 (+15d) | 2015-07-06 15:24 → 2015-07-21 12:00 (+15d) |  | 28.7d → 25.1d |
| 229 | Q & A Management (update) | 2015-07-06 15:24 → 2015-07-21 13:00 (+15d) | 2015-07-07 10:24 → 2015-07-21 17:00 (+14d) |  | 28.7d → 25.1d |
| 230 | **Report no.3** | 2015-07-07 10:24 → 2015-07-22 08:00 (+15d) | 2015-07-09 12:00 → 2015-07-24 09:36 (+15d) |  | 28.7d → 25.1d |
| 231 | Develop Report no.3 (draft version) | 2015-07-07 10:24 → 2015-07-22 08:00 (+15d) | 2015-07-07 12:00 → 2015-07-22 09:36 (+15d) |  | 28.7d → 25.1d |
| 232 | Review Report no.3 (draft version) | 2015-07-07 13:00 → 2015-07-22 09:36 (+15d) | 2015-07-08 12:00 → 2015-07-23 09:36 (+15d) |  | 28.7d → 25.1d |
| 233 | Update Report no.3 (draft version) | 2015-07-08 13:00 → 2015-07-23 09:36 (+15d) | 2015-07-08 17:00 → 2015-07-23 14:36 (+15d) |  | 28.7d → 25.1d |
| 234 | Submit Report no.3 (first version) | 2015-07-08 17:00 → 2015-07-23 14:36 (+15d) | 2015-07-08 17:00 → 2015-07-23 14:36 (+15d) |  | 28.7d → 25.1d |
| 235 | Revise after got comments for Report no.3 | 2015-07-09 08:00 → 2015-07-23 14:36 (+14d) | 2015-07-09 12:00 → 2015-07-24 09:36 (+15d) |  | 28.7d → 25.1d |
| 236 | Submit Report no.3 (final version) | 2015-07-09 12:00 → 2015-07-24 09:36 (+15d) | 2015-07-09 12:00 → 2015-07-24 09:36 (+15d) |  | 28.7d → 25.1d |
| 237 | **Construction** | 2015-06-18 08:48 → 2015-07-06 09:36 (+18d) | 2015-08-18 14:36 → 2015-08-27 15:24 (+9d) |  |  |
| 238 | **Code Review checklist** | 2015-07-09 13:00 → 2015-07-24 09:36 (+15d) | 2015-07-13 08:48 → 2015-07-27 15:24 (+14d) |  | 28.7d → 25.1d |
| 239 | Develop review checklist | 2015-07-09 13:00 → 2015-07-24 09:36 (+15d) | 2015-07-10 11:12 → 2015-07-27 08:48 (+17d) |  | 28.7d → 25.1d |
| 240 | Review review checklist | 2015-07-10 11:12 → 2015-07-27 08:48 (+17d) | 2015-07-10 15:24 → 2015-07-27 12:00 (+17d) |  | 28.7d → 25.1d |
| 241 | Update review checklist | 2015-07-10 15:24 → 2015-07-27 13:00 (+17d) | 2015-07-13 08:48 → 2015-07-27 15:24 (+14d) |  | 28.7d → 25.1d |
| 242 | Complete review checklist | 2015-07-13 08:48 → 2015-07-27 15:24 (+14d) | 2015-07-13 08:48 → 2015-07-27 15:24 (+14d) |  | 28.7d → 25.1d |
| 243 | **Coding & Unit testing (continue)** | 2015-06-18 08:48 → 2015-07-06 09:36 (+18d) | 2015-07-23 08:48 → 2015-08-03 09:36 (+11d) |  |  |
| 244 | **Bus Rider Module** | 2015-06-18 08:48 → 2015-07-06 09:36 (+18d) | 2015-07-23 08:48 → 2015-08-03 09:36 (+11d) |  |  |
| 245 | **Sync module** | 2015-06-18 08:48 → 2015-07-06 09:36 (+18d) | 2015-07-08 08:48 → 2015-07-17 09:36 (+9d) |  |  |
| 246 | PhoneNumberSync module | 2015-06-18 08:48 → 2015-07-06 09:36 (+18d) | 2015-06-30 08:48 → 2015-07-09 09:36 (+9d) |  |  |
| 247 | Connect Facebook module | 2015-06-30 08:48 → 2015-07-09 09:36 (+9d) | 2015-07-02 08:48 → 2015-07-13 09:36 (+11d) |  |  |
| 248 | Show Favorite place module | 2015-07-02 08:48 → 2015-07-13 09:36 (+11d) | 2015-07-03 08:48 → 2015-07-14 09:36 (+11d) |  |  |
| 249 | Show Favorite bus module | 2015-07-03 08:48 → 2015-07-14 09:36 (+11d) | 2015-07-06 08:48 → 2015-07-15 09:36 (+9d) |  |  |
| 250 | Add/remove Favorite place module | 2015-07-06 08:48 → 2015-07-15 09:36 (+9d) | 2015-07-07 08:48 → 2015-07-16 09:36 (+9d) |  |  |
| 251 | About module | 2015-07-07 08:48 → 2015-07-16 09:36 (+9d) | 2015-07-08 08:48 → 2015-07-17 09:36 (+9d) |  |  |
| 252 | **Bus module** | 2015-06-18 08:48 → 2015-07-06 09:36 (+18d) | 2015-07-21 08:48 → 2015-07-30 09:36 (+9d) |  |  |
| 253 | Bus list module | 2015-06-18 08:48 → 2015-07-06 09:36 (+18d) | 2015-06-19 08:48 → 2015-07-07 09:36 (+18d) |  |  |
| 254 | Bus info module | 2015-06-19 08:48 → 2015-07-07 09:36 (+18d) | 2015-07-01 08:48 → 2015-07-10 09:36 (+9d) |  |  |
| 255 | Bus route module | 2015-07-01 08:48 → 2015-07-10 09:36 (+9d) | 2015-07-03 08:48 → 2015-07-14 09:36 (+11d) |  |  |
| 256 | Bus nearest module | 2015-07-03 08:48 → 2015-07-14 09:36 (+11d) | 2015-07-08 08:48 → 2015-07-17 09:36 (+9d) |  |  |
| 257 | Bus map module | 2015-07-08 08:48 → 2015-07-17 09:36 (+9d) | 2015-07-09 13:48 → 2015-07-20 14:36 (+11d) |  |  |
| 258 | Set/unset favorite bus module | 2015-07-09 13:48 → 2015-07-20 14:36 (+11d) | 2015-07-10 13:48 → 2015-07-21 14:36 (+11d) |  |  |
| 259 | Remind module | 2015-07-10 13:48 → 2015-07-21 14:36 (+11d) | 2015-07-15 08:48 → 2015-07-24 09:36 (+9d) |  |  |
| 260 | Track module | 2015-07-15 08:48 → 2015-07-24 09:36 (+9d) | 2015-07-16 13:48 → 2015-07-27 14:36 (+11d) |  |  |
| 261 | Get notification module | 2015-07-16 13:48 → 2015-07-27 14:36 (+11d) | 2015-07-20 13:48 → 2015-07-29 14:36 (+9d) |  |  |
| 262 | Swap direction module | 2015-07-20 13:48 → 2015-07-29 14:36 (+9d) | 2015-07-21 08:48 → 2015-07-30 09:36 (+9d) |  |  |
| 263 | **Shigeki module** | 2015-06-18 08:48 → 2015-07-06 09:36 (+18d) | 2015-07-07 13:48 → 2015-07-16 14:36 (+9d) |  |  |
| 264 | Achievement module | 2015-06-18 08:48 → 2015-07-06 09:36 (+18d) | 2015-06-19 13:48 → 2015-07-07 14:36 (+18d) |  |  |
| 265 | Collection module | 2015-06-19 13:48 → 2015-07-07 14:36 (+18d) | 2015-06-30 08:48 → 2015-07-09 09:36 (+9d) |  |  |
| 266 | Mission module | 2015-06-30 08:48 → 2015-07-09 09:36 (+9d) | 2015-07-01 13:48 → 2015-07-10 14:36 (+9d) |  |  |
| 267 | Statistic module | 2015-07-01 13:48 → 2015-07-10 14:36 (+9d) | 2015-07-03 08:48 → 2015-07-14 09:36 (+11d) |  |  |
| 268 | Rank module | 2015-07-03 08:48 → 2015-07-14 09:36 (+11d) | 2015-07-06 08:48 → 2015-07-15 09:36 (+9d) |  |  |
| 269 | Scan QR code module | 2015-07-06 08:48 → 2015-07-15 09:36 (+9d) | 2015-07-07 13:48 → 2015-07-16 14:36 (+9d) |  |  |
| 270 | **Search module** | 2015-07-08 08:48 → 2015-07-17 09:36 (+9d) | 2015-07-20 08:48 → 2015-07-29 09:36 (+9d) |  |  |
| 271 | Search bus module | 2015-07-08 08:48 → 2015-07-17 09:36 (+9d) | 2015-07-09 08:48 → 2015-07-20 09:36 (+11d) |  |  |
| 272 | Search route module | 2015-07-09 08:48 → 2015-07-20 09:36 (+11d) | 2015-07-16 08:48 → 2015-07-27 09:36 (+11d) |  |  |
| 273 | Search Favorite bus module | 2015-07-16 08:48 → 2015-07-27 09:36 (+11d) | 2015-07-17 08:48 → 2015-07-28 09:36 (+11d) |  |  |
| 274 | Search Favorite place module | 2015-07-17 08:48 → 2015-07-28 09:36 (+11d) | 2015-07-20 08:48 → 2015-07-29 09:36 (+9d) |  |  |
| 275 | Setting module | 2015-07-20 08:48 → 2015-07-29 09:36 (+9d) | 2015-07-23 08:48 → 2015-08-03 09:36 (+11d) |  |  |
| 276 | Web service | 2015-07-07 13:48 → 2015-07-16 14:36 (+9d) | 2015-07-14 13:48 → 2015-07-23 14:36 (+9d) |  |  |
| 277 | Complete coding | 2015-07-23 08:48 → 2015-08-03 09:36 (+11d) | 2015-07-23 08:48 → 2015-08-03 09:36 (+11d) |  |  |
| 278 | Q & A Management (update) | 2015-07-13 08:48 → 2015-07-27 15:24 (+14d) | 2015-07-14 08:48 → 2015-07-28 15:24 (+14d) |  | 28.7d → 25.1d |
| 279 | **Progress report 4** | 2015-07-23 08:48 → 2015-08-03 09:36 (+11d) | 2015-07-23 13:48 → 2015-08-03 14:36 (+11d) |  |  |
| 280 | Develop Progress Report 4 | 2015-07-23 08:48 → 2015-08-03 09:36 (+11d) | 2015-07-23 11:12 → 2015-08-03 12:00 (+11d) |  |  |
| 281 | Review Progress Report 4 | 2015-07-23 11:12 → 2015-08-03 13:00 (+11d) | 2015-07-23 12:00 → 2015-08-03 13:48 (+11d) |  |  |
| 282 | Update Progress Report 4 | 2015-07-23 13:00 → 2015-08-03 13:48 (+11d) | 2015-07-23 13:48 → 2015-08-03 14:36 (+11d) |  |  |
| 283 | Complete Progress Report 4 | 2015-07-23 13:48 → 2015-08-03 14:36 (+11d) | 2015-07-23 13:48 → 2015-08-03 14:36 (+11d) |  |  |
| 284 | **Report no.4** | 2015-07-23 11:12 → 2015-08-03 13:00 (+11d) | 2015-08-03 11:12 → 2015-08-12 12:00 (+9d) |  |  |
| 285 | Develop Report no.4 (draft version) | 2015-07-23 11:12 → 2015-08-03 13:00 (+11d) | 2015-07-24 11:12 → 2015-08-04 12:00 (+11d) |  |  |
| 286 | Review Report no.4 (draft version) | 2015-07-24 11:12 → 2015-08-04 13:00 (+11d) | 2015-07-28 11:12 → 2015-08-06 12:00 (+9d) |  |  |
| 287 | Update Report no.4 (draft version) | 2015-07-28 11:12 → 2015-08-06 13:00 (+9d) | 2015-07-30 11:12 → 2015-08-10 12:00 (+11d) |  |  |
| 288 | Submit Report no.4 (first version) | 2015-07-30 11:12 → 2015-08-10 12:00 (+11d) | 2015-07-30 11:12 → 2015-08-10 12:00 (+11d) |  |  |
| 289 | Revise after got comments for Report no.4 | 2015-07-30 11:12 → 2015-08-10 13:00 (+11d) | 2015-08-03 11:12 → 2015-08-12 12:00 (+9d) |  |  |
| 290 | Submit Report no.4 (final version) | 2015-08-03 11:12 → 2015-08-12 12:00 (+9d) | 2015-08-03 11:12 → 2015-08-12 12:00 (+9d) |  |  |
| 291 | **Testing** | 2015-06-18 10:24 → 2015-07-10 08:00 (+22d) | 2015-08-14 17:00 → 2015-08-26 08:48 (+12d) | 36.7d → 33.1d |  |

| ID | Task | Start | Finish | Duration | Total float |
| --- | --- | --- | --- | --- | --- |
| 292 | **Execute test & fix bugs** | 2015-06-18 10:24 → 2015-07-10 08:00 (+22d) | 2015-08-14 11:12 → 2015-08-25 12:00 (+11d) | 36.1d → 32.5d |  |
| 293 | **Round 1** | 2015-06-18 10:24 → 2015-07-10 08:00 (+22d) | 2015-08-04 16:12 → 2015-08-13 17:00 (+9d) | 28.6d → 25d |  |
| 294 | **Execute unit test** | 2015-06-18 10:24 → 2015-07-10 08:00 (+22d) | 2015-07-23 16:12 → 2015-08-03 17:00 (+11d) | 20.6d → 17d |  |
| 295 | Bus driver module | 2015-06-18 10:24 → 2015-07-10 08:00 (+22d) | 2015-06-19 08:48 → 2015-07-10 15:24 (+21d) |  | 19.8d → 16.2d |
| 296 | Sync module | 2015-07-08 08:48 → 2015-07-17 09:36 (+9d) | 2015-07-08 16:12 → 2015-07-17 17:00 (+9d) |  |  |
| 297 | Bus module | 2015-07-21 08:48 → 2015-07-30 09:36 (+9d) | 2015-07-23 08:48 → 2015-08-03 09:36 (+11d) |  |  |
| 298 | Shigeki module | 2015-07-07 13:48 → 2015-07-16 14:36 (+9d) | 2015-07-08 11:12 → 2015-07-17 12:00 (+9d) |  |  |
| 299 | Search module | 2015-07-20 08:48 → 2015-07-29 09:36 (+9d) | 2015-07-22 08:48 → 2015-07-31 09:36 (+9d) |  |  |
| 300 | Setting module | 2015-07-23 08:48 → 2015-08-03 09:36 (+11d) | 2015-07-23 16:12 → 2015-08-03 17:00 (+11d) |  |  |
| 301 | Fix bugs unit test | 2015-07-23 16:12 → 2015-08-04 08:00 (+12d) | 2015-07-29 16:12 → 2015-08-07 17:00 (+9d) |  |  |
| 302 | Execute integration test | 2015-07-29 16:12 → 2015-08-10 08:00 (+12d) | 2015-07-30 16:12 → 2015-08-10 17:00 (+11d) |  |  |
| 303 | Fix bugs integration test | 2015-07-30 16:12 → 2015-08-11 08:00 (+12d) | 2015-07-31 16:12 → 2015-08-11 17:00 (+11d) |  |  |
| 304 | Execute system test | 2015-07-31 16:12 → 2015-08-12 08:00 (+12d) | 2015-08-03 16:12 → 2015-08-12 17:00 (+9d) |  |  |
| 305 | Fix bugs system test | 2015-08-03 16:12 → 2015-08-13 08:00 (+10d) | 2015-08-04 16:12 → 2015-08-13 17:00 (+9d) |  |  |
| 306 | **Round 2** | 2015-08-04 16:12 → 2015-08-14 08:00 (+10d) | 2015-08-13 11:12 → 2015-08-24 12:00 (+11d) |  |  |
| 307 | **Execute unit test** | 2015-08-04 16:12 → 2015-08-14 08:00 (+10d) | 2015-08-05 16:12 → 2015-08-14 17:00 (+9d) |  |  |
| 308 | Bus driver module | 2015-08-04 16:12 → 2015-08-14 08:00 (+10d) | 2015-08-05 11:12 → 2015-08-14 12:00 (+9d) |  |  |
| 309 | Sync module | 2015-08-04 16:12 → 2015-08-14 08:00 (+10d) | 2015-08-05 12:00 → 2015-08-14 13:48 (+9d) |  |  |
| 310 | Bus module | 2015-08-04 16:12 → 2015-08-14 08:00 (+10d) | 2015-08-05 16:12 → 2015-08-14 17:00 (+9d) |  |  |
| 311 | Shigeki module | 2015-08-04 16:12 → 2015-08-14 08:00 (+10d) | 2015-08-05 11:12 → 2015-08-14 12:00 (+9d) |  |  |
| 312 | Search module | 2015-08-04 16:12 → 2015-08-14 08:00 (+10d) | 2015-08-05 16:12 → 2015-08-14 17:00 (+9d) |  |  |
| 313 | Setting module | 2015-08-04 16:12 → 2015-08-14 08:00 (+10d) | 2015-08-05 14:36 → 2015-08-14 15:24 (+9d) |  |  |
| 314 | Fix bugs unit test | 2015-08-05 16:12 → 2015-08-17 08:00 (+12d) | 2015-08-07 16:12 → 2015-08-18 17:00 (+11d) |  |  |
| 315 | Execute integration test | 2015-08-07 16:12 → 2015-08-19 08:00 (+12d) | 2015-08-10 16:12 → 2015-08-19 17:00 (+9d) |  |  |
| 316 | Fix bugs integration test | 2015-08-10 16:12 → 2015-08-20 08:00 (+10d) | 2015-08-11 16:12 → 2015-08-20 17:00 (+9d) |  |  |
| 317 | Execute system test | 2015-08-11 16:12 → 2015-08-21 08:00 (+10d) | 2015-08-12 11:12 → 2015-08-21 12:00 (+9d) |  |  |
| 318 | Fix bugs system test | 2015-08-12 11:12 → 2015-08-21 13:00 (+9d) | 2015-08-13 11:12 → 2015-08-24 12:00 (+11d) |  |  |
| 319 | Execute acceptance test & collect data | 2015-08-13 11:12 → 2015-08-24 13:00 (+11d) | 2015-08-14 11:12 → 2015-08-25 12:00 (+11d) |  |  |
| 320 | Complete execute test | 2015-08-14 11:12 → 2015-08-25 12:00 (+11d) | 2015-08-14 11:12 → 2015-08-25 12:00 (+11d) |  |  |
| 321 | **Test Report** | 2015-08-14 11:12 → 2015-08-25 13:00 (+11d) | 2015-08-14 17:00 → 2015-08-26 08:48 (+12d) |  |  |
| 322 | Develop test report | 2015-08-14 11:12 → 2015-08-25 13:00 (+11d) | 2015-08-14 13:48 → 2015-08-25 14:36 (+11d) |  |  |
| 323 | Review test report | 2015-08-14 13:48 → 2015-08-25 14:36 (+11d) | 2015-08-14 15:24 → 2015-08-25 16:12 (+11d) |  |  |
| 324 | Update test report | 2015-08-14 15:24 → 2015-08-25 16:12 (+11d) | 2015-08-14 17:00 → 2015-08-26 08:48 (+12d) |  |  |
| 325 | Complete test report | 2015-08-14 17:00 → 2015-08-26 08:48 (+12d) | 2015-08-14 17:00 → 2015-08-26 08:48 (+12d) |  |  |
| 326 | **Quality report** | 2015-08-17 08:00 → 2015-08-26 08:48 (+9d) | 2015-08-17 14:36 → 2015-08-26 15:24 (+9d) |  |  |
| 327 | Develop quality report | 2015-08-17 08:00 → 2015-08-26 08:48 (+9d) | 2015-08-17 10:24 → 2015-08-26 11:12 (+9d) |  |  |
| 328 | Review quality report | 2015-08-17 10:24 → 2015-08-26 11:12 (+9d) | 2015-08-17 12:00 → 2015-08-26 13:48 (+9d) |  |  |
| 329 | Update quality report | 2015-08-17 13:00 → 2015-08-26 13:48 (+9d) | 2015-08-17 14:36 → 2015-08-26 15:24 (+9d) |  |  |
| 330 | Complete quality report | 2015-08-17 14:36 → 2015-08-26 15:24 (+9d) | 2015-08-17 14:36 → 2015-08-26 15:24 (+9d) |  |  |
| 331 | **Progress report 5** | 2015-08-17 14:36 → 2015-08-26 15:24 (+9d) | 2015-08-18 09:36 → 2015-08-27 10:24 (+9d) |  |  |
| 332 | Develop Progress Report 5 | 2015-08-17 14:36 → 2015-08-26 15:24 (+9d) | 2015-08-17 17:00 → 2015-08-27 08:48 (+10d) |  |  |
| 333 | Review Progress Report 5 | 2015-08-18 08:00 → 2015-08-27 08:48 (+9d) | 2015-08-18 08:48 → 2015-08-27 09:36 (+9d) |  |  |
| 334 | Update Progress Report 5 | 2015-08-18 08:48 → 2015-08-27 09:36 (+9d) | 2015-08-18 09:36 → 2015-08-27 10:24 (+9d) |  |  |
| 335 | Complete Progress Report 5 | 2015-08-18 09:36 → 2015-08-27 10:24 (+9d) | 2015-08-18 09:36 → 2015-08-27 10:24 (+9d) |  |  |
| 336 | **Report no.5** | 2015-08-18 09:36 → 2015-08-27 10:24 (+9d) | 2015-08-18 14:36 → 2015-08-27 15:24 (+9d) |  |  |
| 337 | Develop Report no.5 (draft version) | 2015-08-18 09:36 → 2015-08-27 10:24 (+9d) | 2015-08-18 10:24 → 2015-08-27 11:12 (+9d) |  |  |
| 338 | Review Report no.5 (draft version) | 2015-08-18 10:24 → 2015-08-27 11:12 (+9d) | 2015-08-18 12:00 → 2015-08-27 13:48 (+9d) |  |  |
| 339 | Update Report no.5 (draft version) | 2015-08-18 13:00 → 2015-08-27 13:48 (+9d) | 2015-08-18 13:48 → 2015-08-27 14:36 (+9d) |  |  |
| 340 | Submit Report no.5 (first version) | 2015-08-18 13:48 → 2015-08-27 14:36 (+9d) | 2015-08-18 13:48 → 2015-08-27 14:36 (+9d) |  |  |
| 341 | Revise after got comments for Report no.5 | 2015-08-18 13:48 → 2015-08-27 14:36 (+9d) | 2015-08-18 14:36 → 2015-08-27 15:24 (+9d) |  |  |
| 342 | Submit Report no.5 (final version) | 2015-08-18 14:36 → 2015-08-27 15:24 (+9d) | 2015-08-18 14:36 → 2015-08-27 15:24 (+9d) |  |  |
| 343 | **Termination** | 2015-08-18 14:36 → 2015-08-27 15:24 (+9d) | 2015-09-01 15:24 → 2015-09-10 16:12 (+9d) |  |  |
| 344 | **Report no.6** | 2015-08-18 14:36 → 2015-08-27 15:24 (+9d) | 2015-08-27 15:24 → 2015-09-07 16:12 (+11d) |  |  |
| 345 | Complete source code & final report | 2015-08-18 14:36 → 2015-08-27 15:24 (+9d) | 2015-08-19 14:36 → 2015-08-28 15:24 (+9d) |  |  |
| 346 | Develop installation guide | 2015-08-19 14:36 → 2015-08-28 15:24 (+9d) | 2015-08-20 09:36 → 2015-08-31 10:24 (+11d) |  |  |
| 347 | Develop user guideline | 2015-08-20 09:36 → 2015-08-31 10:24 (+11d) | 2015-08-21 09:36 → 2015-09-01 10:24 (+11d) |  |  |
| 348 | Complete Project Result Assessment | 2015-08-21 09:36 → 2015-09-01 10:24 (+11d) | 2015-08-24 09:36 → 2015-09-02 10:24 (+9d) |  |  |
| 349 | Conduct lessons learned | 2015-08-24 09:36 → 2015-09-02 10:24 (+9d) | 2015-08-24 15:24 → 2015-09-02 16:12 (+9d) |  |  |
| 350 | Complete Presentation slide | 2015-08-24 15:24 → 2015-09-02 16:12 (+9d) | 2015-08-25 15:24 → 2015-09-03 16:12 (+9d) |  |  |
| 351 | Review Report no.6 (draft version) | 2015-08-25 15:24 → 2015-09-03 16:12 (+9d) | 2015-08-26 15:24 → 2015-09-04 16:12 (+9d) |  |  |
| 352 | Update Report no.6 (draft version) | 2015-08-26 15:24 → 2015-09-04 16:12 (+9d) | 2015-08-27 10:24 → 2015-09-07 11:12 (+11d) |  |  |
| 353 | Submit Report no.6 (first version) | 2015-08-27 10:24 → 2015-09-07 11:12 (+11d) | 2015-08-27 10:24 → 2015-09-07 11:12 (+11d) |  |  |
| 354 | Revise after got comments for Report no.6 | 2015-08-27 10:24 → 2015-09-07 11:12 (+11d) | 2015-08-27 15:24 → 2015-09-07 16:12 (+11d) |  |  |
| 355 | Submit Report no.6 (final version) | 2015-08-27 15:24 → 2015-09-07 16:12 (+11d) | 2015-08-27 15:24 → 2015-09-07 16:12 (+11d) |  |  |
| 356 | Submit Final report & CD source code | 2015-08-27 15:24 → 2015-09-07 16:12 (+11d) | 2015-08-27 15:24 → 2015-09-07 16:12 (+11d) |  |  |
| 357 | **Pre-closing** | 2015-08-27 15:24 → 2015-09-07 16:12 (+11d) | 2015-09-01 10:24 → 2015-09-10 11:12 (+9d) |  |  |
| 358 | Training presentation | 2015-08-27 15:24 → 2015-09-07 16:12 (+11d) | 2015-09-01 10:24 → 2015-09-10 11:12 (+9d) |  |  |
| 359 | **Closing** | 2015-09-01 10:24 → 2015-09-10 11:12 (+9d) | 2015-09-01 15:24 → 2015-09-10 16:12 (+9d) |  |  |
| 360 | Present Capstone Project & Completed | 2015-09-01 10:24 → 2015-09-10 11:12 (+9d) | 2015-09-01 15:24 → 2015-09-10 16:12 (+9d) |  |  |
