How a schedule from MS Project changed from version to version. A marks actual dates.

## Version 1 (saved 2015-06-01, file BUSS_Project_Schedule_v1.02_EN.mpp)

Note of the change: update things

| ID | WBS | Task | Duration | Start | Finish | Predecessors | Total float |
| --- | --- | --- | --- | --- | --- | --- | --- |
| 1 | 1 | **BL** | 76.7d | 2015-05-11 08:00 | 2015-09-01 14:36 |  | 0d |
| 2 | 1.1 | **Initiation** | 21.3d | 2015-05-11 08:00 | 2015-06-09 10:24 |  | 0d |
| 3 |  | System feasible study | 0.3d | 2015-05-11 08:00 | 2015-05-11 10:24 |  | 0d |
| 4 |  | Define business situation | 0.4d | 2015-05-11 10:24 | 2015-05-11 14:36 | 3 | 0d |
| 5 |  | Develop project idea | 0.8d | 2015-05-11 14:36 | 2015-05-12 12:00 | 4 | 0d |
| 6 |  | Define project and system scope | 0.5d | 2015-05-12 13:00 | 2015-05-12 17:00 | 5 | 0d |
| 7 |  | Prepare project | 1d | 2015-05-13 08:00 | 2015-05-13 17:00 | 6 | 0d |
| 8 |  | Kick-off meeting | 0.4d | 2015-05-14 08:00 | 2015-05-14 11:12 | 7 | 0d |
| 9 |  | Q & A Management | 0.5d | 2015-05-14 11:12 | 2015-05-14 16:12 | 8 | 2.1d |
| 10 | 1.1.8 | **Technologies** | 17.9d | 2015-05-14 11:12 | 2015-06-09 10:24 |  | 55.4d |
| 11 |  | Research development technologies | 2d | 2015-05-14 11:12 | 2015-05-28 17:00 | 8 | 55.6d |
| 12 |  | Install and configure Eclipse IDE and Android SDK | 1d | 2015-05-29 08:00 | 2015-06-02 08:48 | 11 | 55.6d |
| 13 |  | Training Java, Android SDK & Eclipse IDE | 2.1d | 2015-06-02 08:48 | 2015-06-09 08:48 | 12 | 55.6d |
| 14 |  | Install and configure Visual Studio, SQL Server | 1d | 2015-05-29 08:00 | 2015-06-04 09:36 | 11 | 56.8d |
| 15 |  | Study web service using .NET & SQL Server | 1.5d | 2015-06-05 15:24 | 2015-06-09 10:24 | 14 | 55.4d |
| 16 | 1.1.9 | **SRS/PP/Concept design Review checklist** | 3d | 2015-05-14 16:12 | 2015-05-19 16:12 |  | 2.1d |
| 17 |  | Develop review checklist | 2.5d | 2015-05-14 16:12 | 2015-05-19 11:12 | 9 | 2.1d |
| 18 |  | Review review checklist | 0.2d | 2015-05-19 11:12 | 2015-05-19 13:48 | 17 | 2.1d |
| 19 |  | Update review checklist | 0.3d | 2015-05-19 13:48 | 2015-05-19 16:12 | 18 | 2.1d |
| 20 |  | Complete review checklist | 0d | 2015-05-19 16:12 | 2015-05-19 16:12 | 19 | 2.1d |
| 21 | 1.1.10 | **Requirements** | 5.2d | 2015-05-14 11:12 | 2015-05-21 13:48 |  | 0.1d |
| 22 | 1.1.10.1 | **User Requirements Specification** | 4.5d | 2015-05-14 11:12 | 2015-05-20 16:12 |  | 0.1d |
| 23 |  | Collect business requirements and processes | 0.5d | 2015-05-14 11:12 | 2015-05-14 16:12 | 8 | 0.1d |
| 24 |  | Create draft requirements | 1d | 2015-05-14 16:12 | 2015-05-15 16:12 | 23 | 0.1d |
| 25 |  | Complete draft requirements | 0d | 2015-05-15 16:12 | 2015-05-15 16:12 | 24 | 0.1d |
| 26 |  | Develop main function and processes | 1d | 2015-05-19 16:12 | 2015-05-20 16:12 | 25 | 1.4d |
| 27 |  | Review User Requirement Specification with checklist | 0.3d | 2015-05-20 16:12 | 2015-05-21 09:36 | 26, 20 | 1.4d |
| 28 |  | Update User Requirement Specification | 0.4d | 2015-05-21 09:36 | 2015-05-21 13:48 | 27 | 1.4d |
| 29 |  | Complete User Requirement Specification | 0d | 2015-05-21 13:48 | 2015-05-21 13:48 | 28 | 1.4d |
| 30 | 1.1.11 | **Concept design** | 3d | 2015-05-15 16:12 | 2015-05-20 16:12 |  | 2.1d |
| 31 |  | Create draft concept design | 1.5d | 2015-05-15 16:12 | 2015-05-19 11:12 | 25 | 2.6d |
| 32 |  | Review concept design with checklist | 0.5d | 2015-05-19 16:12 | 2015-05-20 11:12 | 31, 20 | 2.1d |
| 33 |  | Update concept design | 0.5d | 2015-05-20 11:12 | 2015-05-20 16:12 | 32 | 2.1d |
| 34 |  | Complete concept design | 0d | 2015-05-20 16:12 | 2015-05-20 16:12 | 33 | 2.1d |
| 35 | 1.1.12 | **Project plan** | 6.4d | 2015-05-14 11:12 | 2015-05-22 15:24 |  | 0d |
| 36 |  | Develop project definition | 0.7d | 2015-05-14 11:12 | 2015-05-15 08:48 | 8 | 0d |
| 37 |  | Develop Work Breakdown Structure | 0.9d | 2015-05-15 08:48 | 2015-05-15 17:00 | 36 | 0d |
| 38 |  | Create Project Schedule | 2d | 2015-05-18 08:00 | 2015-05-19 17:00 | 37 | 0d |
| 39 |  | Create Configuration Management Plan version 1.0 | 0.8d | 2015-05-20 08:00 | 2015-05-20 15:24 | 38 | 0.2d |
| 40 |  | Create Project Plan (first version) | 1.5d | 2015-05-20 15:24 | 2015-05-22 10:24 | 39 | 0.2d |
| 41 |  | Review Project Plan (first version) | 0.5d | 2015-05-22 10:24 | 2015-05-22 15:24 | 40 | 0.2d |
| 42 |  | Complete Project Plan (final version) | 0d | 2015-05-22 15:24 | 2015-05-22 15:24 | 41 | 0.2d |
| 43 | 1.1.13 | **Progress Report 1** | 0.7d | 2015-05-22 10:24 | 2015-05-22 17:00 |  | 0d |
| 44 |  | Develop Progress Report 1 | 0.4d | 2015-05-22 10:24 | 2015-05-22 14:36 | 38 | 0d |
| 45 |  | Review Progress Report 1 | 0.2d | 2015-05-22 14:36 | 2015-05-22 16:12 | 44 | 0d |
| 46 |  | Update Progress Report 1 | 0.1d | 2015-05-22 16:12 | 2015-05-22 17:00 | 45 | 0d |
| 47 |  | Complete Progress Report 1 | 0d | 2015-05-22 17:00 | 2015-05-22 17:00 | 46 | 0d |
| 48 |  | Submit PP, URS, Concept Design | 0d | 2015-05-22 17:00 | 2015-05-22 17:00 | 42, 47, 29, 34 | 0d |
| 49 | 1.2 | **Solution** | 28.4d | 2015-05-25 08:00 | 2015-07-09 11:12 |  | 0d |
| 50 | 1.2.1 | **Requirements** | 10d | 2015-05-25 08:00 | 2015-06-05 17:00 |  | 0d |
| 51 | 1.2.1.1 | **Software Requirements Specification** | 10d | 2015-05-25 08:00 | 2015-06-05 17:00 |  | 0d |
| 52 | 1.2.1.1.1 | **Functional Requirement Specification** | 5.6d | 2015-05-25 08:00 | 2015-06-01 13:48 |  | 0d |
| 53 | 1.2.1.1.1.1 | **Bus Driver Module** | 0.6d | 2015-05-25 08:00 | 2015-05-25 13:48 |  | 0.4d |
| 54 |  | Send bus info module | 0.6d | 2015-05-25 08:00 | 2015-05-25 13:48 | 48 | 0.4d |
| 55 | 1.2.1.1.1.2 | **Bus Rider Module** | 5.6d | 2015-05-25 08:00 | 2015-06-01 13:48 |  | 0d |
| 56 | 1.2.1.1.1.2.1 | **Common module** | 4d | 2015-05-25 08:00 | 2015-05-28 17:00 |  | 2d |
| 57 |  | Turn on/off Snooze mode | 1d | 2015-05-25 08:00 | 2015-05-25 17:00 | 48 | 2d |
| 58 |  | View notification | 0.4d | 2015-05-26 08:00 | 2015-05-26 11:12 | 57 | 2d |
| 59 |  | Turn on/off Notification | 0.2d | 2015-05-26 11:12 | 2015-05-26 13:48 | 58 | 2d |
| 60 |  | Change app setting | 1.4d | 2015-05-26 13:48 | 2015-05-27 17:00 | 59 | 2d |
| 61 |  | View dashboard | 1d | 2015-05-28 08:00 | 2015-05-28 17:00 | 60 | 2d |
| 62 | 1.2.1.1.1.2.2 | **Account Management module** | 1.6d | 2015-05-25 08:00 | 2015-05-26 13:48 |  | 2.1d |
| 63 |  | Log in | 0.6d | 2015-05-25 08:00 | 2015-05-25 13:48 | 48 | 2.1d |
| 64 |  | Log out | 0.3d | 2015-05-25 13:48 | 2015-05-25 16:12 | 63 | 2.1d |
| 65 |  | View account profile | 0.2d | 2015-05-25 16:12 | 2015-05-26 08:48 | 64 | 2.1d |
| 66 |  | Change account info | 0.2d | 2015-05-26 08:48 | 2015-05-26 10:24 | 65 | 2.1d |
| 67 |  | Forgot password | 0.3d | 2015-05-26 10:24 | 2015-05-26 13:48 | 66 | 2.1d |
| 68 | 1.2.1.1.1.2.3 | **Bus module** | 4d | 2015-05-25 08:00 | 2015-05-28 17:00 |  | 2d |
| 69 |  | View bus list | 0.3d | 2015-05-25 08:00 | 2015-05-25 10:24 | 48 | 2d |
| 70 |  | View bus info | 0.3d | 2015-05-25 10:24 | 2015-05-25 13:48 | 69 | 2d |

| ID | WBS | Task | Duration | Start | Finish | Predecessors | Total float |
| --- | --- | --- | --- | --- | --- | --- | --- |
| 71 |  | View bus route | 0.6d | 2015-05-25 13:48 | 2015-05-26 09:36 | 70 | 2d |
| 72 |  | View nearest bus | 1d | 2015-05-26 09:36 | 2015-05-27 09:36 | 71 | 2d |
| 73 |  | View bus map | 0.8d | 2015-05-27 09:36 | 2015-05-27 17:00 | 72 | 2d |
| 74 |  | View bus near me | 1d | 2015-05-28 08:00 | 2015-05-28 17:00 | 73 | 2d |
| 75 | 1.2.1.1.1.2.4 | **Path Finder module** | 3.2d | 2015-05-25 13:48 | 2015-05-28 15:24 |  | 0.4d |
| 76 |  | Find path | 1.5d | 2015-05-25 13:48 | 2015-05-27 08:48 | 54 | 0.4d |
| 77 |  | View paths found | 0.4d | 2015-05-27 08:48 | 2015-05-27 12:00 | 76 | 0.4d |
| 78 |  | View path detail | 0.7d | 2015-05-27 13:00 | 2015-05-28 09:36 | 77 | 0.4d |
| 79 |  | View direction | 0.6d | 2015-05-28 09:36 | 2015-05-28 15:24 | 78 | 0.4d |
| 80 | 1.2.1.1.1.2.5 | **Reminder module** | 1.8d | 2015-05-28 15:24 | 2015-06-01 13:48 |  | 0.4d |
| 81 |  | View bus reminder | 0.5d | 2015-05-28 15:24 | 2015-05-29 10:24 | 79 | 0.4d |
| 82 |  | Add reminder | 0.2d | 2015-05-29 10:24 | 2015-05-29 12:00 | 81 | 0.4d |
| 83 |  | Edit reminder | 0.3d | 2015-05-29 13:00 | 2015-05-29 15:24 | 82 | 0.4d |
| 84 |  | Delete reminder | 0.1d | 2015-05-29 15:24 | 2015-05-29 16:12 | 83 | 0.4d |
| 85 |  | Suspend/Unsuspend all reminder | 0.5d | 2015-05-29 16:12 | 2015-06-01 11:12 | 84 | 0.4d |
| 86 |  | Suspend/Unsuspend a chosen reminder | 0.2d | 2015-06-01 11:12 | 2015-06-01 13:48 | 85 | 0.4d |
| 87 | 1.2.1.1.1.2.6 | **Track module** | 1.2d | 2015-05-25 08:00 | 2015-05-26 09:36 |  | 0d |
| 88 |  | Tracking | 1d | 2015-05-25 08:00 | 2015-05-25 17:00 | 48 | 0d |
| 89 |  | Cancel track | 0.2d | 2015-05-26 08:00 | 2015-05-26 09:36 | 88 | 0d |
| 90 | 1.2.1.1.1.2.7 | **Favorite module** | 2.6d | 2015-05-26 09:36 | 2015-05-28 15:24 |  | 0d |
| 91 |  | View favorite places | 0.4d | 2015-05-26 09:36 | 2015-05-26 13:48 | 89 | 0d |
| 92 |  | Add favorite places | 0.2d | 2015-05-26 13:48 | 2015-05-26 15:24 | 91 | 0d |
| 93 |  | Edit favorite places | 0.3d | 2015-05-26 15:24 | 2015-05-27 08:48 | 92 | 0d |
| 94 |  | Delete favorite places | 0.2d | 2015-05-27 08:48 | 2015-05-27 10:24 | 93 | 0d |
| 95 |  | Search favorite places | 0.2d | 2015-05-27 10:24 | 2015-05-27 12:00 | 94 | 0d |
| 96 |  | View favorite buses | 0.4d | 2015-05-27 13:00 | 2015-05-27 16:12 | 95 | 0d |
| 97 |  | Add favorite buses | 0.2d | 2015-05-27 16:12 | 2015-05-28 08:48 | 96 | 0d |
| 98 |  | Edit favorite buses | 0.3d | 2015-05-28 08:48 | 2015-05-28 11:12 | 97 | 0d |
| 99 |  | Delete favorite buses | 0.2d | 2015-05-28 11:12 | 2015-05-28 13:48 | 98 | 0d |
| 100 |  | Search favorite buses | 0.2d | 2015-05-28 13:48 | 2015-05-28 15:24 | 99 | 0d |
| 101 | 1.2.1.1.1.2.8 | **Interactive module** | 2.3d | 2015-05-26 13:48 | 2015-05-28 16:12 |  | 2.1d |
| 102 |  | View Achievement | 0.2d | 2015-05-26 13:48 | 2015-05-26 15:24 | 67 | 2.1d |
| 103 |  | Share Achievement | 0.3d | 2015-05-26 15:24 | 2015-05-27 08:48 | 102 | 2.1d |
| 104 |  | View Collection | 0.2d | 2015-05-27 08:48 | 2015-05-27 10:24 | 103 | 2.1d |
| 105 |  | Share Collection | 0.3d | 2015-05-27 10:24 | 2015-05-27 13:48 | 104 | 2.1d |
| 106 |  | View Mission | 0.2d | 2015-05-27 13:48 | 2015-05-27 15:24 | 105 | 2.1d |
| 107 |  | Share Mission | 0.3d | 2015-05-27 15:24 | 2015-05-28 08:48 | 106 | 2.1d |
| 108 |  | View Statistic | 0.3d | 2015-05-28 08:48 | 2015-05-28 11:12 | 107 | 2.1d |
| 109 |  | Connect Facebook | 0.3d | 2015-05-28 11:12 | 2015-05-28 14:36 | 108 | 2.1d |
| 110 |  | Scan QR code module | 0.2d | 2015-05-28 14:36 | 2015-05-28 16:12 | 109 | 2.1d |
| 111 | 1.2.1.1.2 | **Non-functional Requirement Specification** | 2.2d | 2015-05-28 15:24 | 2015-06-01 17:00 |  | 0d |
| 112 |  | Develop User Interface Requirement | 1.4d | 2015-05-28 15:24 | 2015-06-01 09:36 | 100 | 0d |
| 113 |  | Develop Performance Requirement | 0.8d | 2015-06-01 09:36 | 2015-06-01 17:00 | 112 | 0d |
| 114 |  | Review Software Requirement Specification with checklist | 2d | 2015-06-02 08:00 | 2015-06-03 17:00 | 54, 61, 67, 74, 79, 86, 89, 100, 110, 113 | 0d |
| 115 |  | Update Software Requirement Specification | 2d | 2015-06-04 08:00 | 2015-06-05 17:00 | 114 | 0d |
| 116 |  | Complete Software Requirement Specification | 0d | 2015-06-05 17:00 | 2015-06-05 17:00 | 115 | 0d |
| 117 | 1.2.2 | **Design** | 11.8d | 2015-06-01 09:36 | 2015-06-16 17:00 |  | 2d |
| 118 | 1.2.2.1 | **Design Review checklist** | 4.6d | 2015-06-01 09:36 | 2015-06-05 15:24 |  | 2d |
| 119 |  | Develop review checklist | 2.3d | 2015-06-01 09:36 | 2015-06-05 12:00 | 112 | 2d |
| 120 |  | Review review checklist | 0.1d | 2015-06-05 13:00 | 2015-06-05 13:48 | 119 | 2d |
| 121 |  | Update review checklist | 0.2d | 2015-06-05 13:48 | 2015-06-05 15:24 | 120 | 2d |
| 122 |  | Complete review checklist | 0d | 2015-06-05 15:24 | 2015-06-05 15:24 | 121 | 2d |
| 123 | 1.2.2.2 | **Architecture design** | 2.4d | 2015-06-08 08:00 | 2015-06-10 11:12 |  | 0d |
| 124 |  | Define system structure and collect system features | 1d | 2015-06-08 08:00 | 2015-06-08 17:00 | 116 | 0d |
| 125 |  | Study & choose System Architecture | 0.8d | 2015-06-09 08:00 | 2015-06-09 15:24 | 124 | 0d |
| 126 |  | Review Architecture Design with checklist | 0.3d | 2015-06-09 15:24 | 2015-06-10 08:48 | 122, 125 | 0d |
| 127 |  | Update Architecture Design | 0.3d | 2015-06-10 08:48 | 2015-06-10 11:12 | 126 | 0d |
| 128 |  | Complete System Architecture version 1.0 | 0d | 2015-06-10 11:12 | 2015-06-10 11:12 | 127 | 0d |
| 129 | 1.2.2.3 | **Detailed design** | 3.1d | 2015-06-10 11:12 | 2015-06-15 12:00 |  | 1.5d |
| 130 | 1.2.2.3.1 | **User Interface design** | 2.1d | 2015-06-10 11:12 | 2015-06-12 12:00 |  | 1.5d |
| 131 | 1.2.2.3.1.1 | **Bus Driver Module** | 0.4d | 2015-06-10 11:12 | 2015-06-10 15:24 |  | 2.4d |
| 132 |  | Send bus info module | 0.4d | 2015-06-10 11:12 | 2015-06-10 15:24 | 128 | 2.4d |
| 133 | 1.2.2.3.1.2 | **Bus Rider Module** | 2.1d | 2015-06-10 11:12 | 2015-06-12 12:00 |  | 1.5d |
| 134 | 1.2.2.3.1.2.1 | **Sync module** | 0.8d | 2015-06-10 15:24 | 2015-06-11 13:48 |  | 2.4d |
| 135 |  | PhoneNumberSync module | 0.3d | 2015-06-10 15:24 | 2015-06-11 08:48 | 132 | 2.4d |
| 136 |  | Connect Facebook module | 0.1d | 2015-06-11 08:48 | 2015-06-11 09:36 | 135 | 2.4d |
| 137 |  | Show Favorite place module | 0.1d | 2015-06-11 09:36 | 2015-06-11 10:24 | 136 | 2.4d |
| 138 |  | Show Favorite bus module | 0.1d | 2015-06-11 10:24 | 2015-06-11 11:12 | 137 | 2.4d |
| 139 |  | Add/remove Favorite place module | 0.1d | 2015-06-11 11:12 | 2015-06-11 12:00 | 138 | 2.4d |
| 140 |  | About module | 0.1d | 2015-06-11 13:00 | 2015-06-11 13:48 | 139 | 2.4d |

| ID | WBS | Task | Duration | Start | Finish | Predecessors | Total float |
| --- | --- | --- | --- | --- | --- | --- | --- |
| 141 | 1.2.2.3.1.2.2 | **Bus module** | 2.1d | 2015-06-10 11:12 | 2015-06-12 12:00 |  | 1.5d |
| 142 |  | Bus list module | 0.1d | 2015-06-10 11:12 | 2015-06-10 12:00 | 128 | 1.5d |
| 143 |  | Bus info module | 0.3d | 2015-06-10 13:00 | 2015-06-10 15:24 | 142 | 1.5d |
| 144 |  | Bus route module | 0.2d | 2015-06-10 15:24 | 2015-06-10 17:00 | 143 | 1.5d |
| 145 |  | Bus nearest module | 0.3d | 2015-06-11 08:00 | 2015-06-11 10:24 | 144 | 1.5d |
| 146 |  | Bus map module | 0.2d | 2015-06-11 10:24 | 2015-06-11 12:00 | 145 | 1.5d |
| 147 |  | Set/unset favorite bus module | 0.1d | 2015-06-11 13:00 | 2015-06-11 13:48 | 146 | 1.5d |
| 148 |  | Remind module | 0.3d | 2015-06-11 13:48 | 2015-06-11 16:12 | 147 | 1.5d |
| 149 |  | Track module | 0.2d | 2015-06-11 16:12 | 2015-06-12 08:48 | 148 | 1.5d |
| 150 |  | Get notification module | 0.3d | 2015-06-12 08:48 | 2015-06-12 11:12 | 149 | 1.5d |
| 151 |  | Swap direction module | 0.1d | 2015-06-12 11:12 | 2015-06-12 12:00 | 150 | 1.5d |
| 152 | 1.2.2.3.1.2.3 | **Shigeki module** | 1.6d | 2015-06-10 11:12 | 2015-06-11 17:00 |  | 2d |
| 153 |  | Achievement module | 0.3d | 2015-06-10 11:12 | 2015-06-10 14:36 | 128 | 2d |
| 154 |  | Collection module | 0.3d | 2015-06-10 14:36 | 2015-06-10 17:00 | 153 | 2d |
| 155 |  | Mission module | 0.3d | 2015-06-11 08:00 | 2015-06-11 10:24 | 154 | 2d |
| 156 |  | Statistic module | 0.3d | 2015-06-11 10:24 | 2015-06-11 13:48 | 155 | 2d |
| 157 |  | Rank module | 0.1d | 2015-06-11 13:48 | 2015-06-11 14:36 | 156 | 2d |
| 158 |  | Scan QR code module | 0.3d | 2015-06-11 14:36 | 2015-06-11 17:00 | 157 | 2d |
| 159 | 1.2.2.3.1.2.4 | **Search module** | 0.6d | 2015-06-10 11:12 | 2015-06-10 17:00 |  | 2.5d |
| 160 |  | Search bus module | 0.1d | 2015-06-10 11:12 | 2015-06-10 12:00 | 128 | 2.5d |
| 161 |  | Search route module | 0.3d | 2015-06-10 13:00 | 2015-06-10 15:24 | 160 | 2.5d |
| 162 |  | Search Favorite bus module | 0.1d | 2015-06-10 15:24 | 2015-06-10 16:12 | 161 | 2.5d |
| 163 |  | Search Favorite place module | 0.1d | 2015-06-10 16:12 | 2015-06-10 17:00 | 162 | 2.5d |
| 164 |  | Setting module | 0.5d | 2015-06-11 08:00 | 2015-06-11 12:00 | 163 | 2.5d |
| 165 |  | Review Detailed Design with checklist | 1d | 2015-06-12 13:00 | 2015-06-15 12:00 | 122, 132, 140, 151, 158, 164 | 1.5d |
| 166 |  | Update Detailed Design | 0d | 2015-06-15 12:00 | 2015-06-15 12:00 | 165 | 1.5d |
| 167 |  | Complete Detailed Design version 1.0 | 0d | 2015-06-15 12:00 | 2015-06-15 12:00 | 166 | 1.5d |
| 168 | 1.2.2.4 | **Database design** | 1.8d | 2015-06-10 11:12 | 2015-06-12 09:36 |  | 0d |
| 169 |  | Create Databse Design draft version | 1d | 2015-06-10 11:12 | 2015-06-11 11:12 | 128 | 0d |
| 170 |  | Review Database Design with checklist | 0.5d | 2015-06-11 11:12 | 2015-06-11 16:12 | 121, 169 | 0d |
| 171 |  | Update Database Design | 0.3d | 2015-06-11 16:12 | 2015-06-12 09:36 | 170 | 0d |
| 172 |  | Complete Database Design version 1.0 | 0d | 2015-06-12 09:36 | 2015-06-12 09:36 | 171 | 0d |
| 173 | 1.2.2.5 | **Class design** | 2.8d | 2015-06-12 09:36 | 2015-06-16 17:00 |  | 0d |
| 174 |  | Define class/component | 2d | 2015-06-12 09:36 | 2015-06-16 09:36 | 172 | 0d |
| 175 |  | Review Class Design with checklist | 0.5d | 2015-06-16 09:36 | 2015-06-16 14:36 | 174 | 0d |
| 176 |  | Update Class Design | 0.3d | 2015-06-16 14:36 | 2015-06-16 17:00 | 175 | 0d |
| 177 |  | Complete Class Design version 1.0 | 0d | 2015-06-16 17:00 | 2015-06-16 17:00 | 176 | 0d |
| 178 |  | Complete design | 0d | 2015-06-16 17:00 | 2015-06-16 17:00 | 128, 167, 172, 177 | 49.7d |
| 179 | 1.2.3 | **Progress Report 2** | 0.5d | 2015-06-17 08:00 | 2015-06-17 12:00 |  | 49.2d |
| 180 |  | Develop Progress Report 2 | 0.3d | 2015-06-17 08:00 | 2015-06-17 10:24 | 167, 172, 177 | 49.2d |
| 181 |  | Review Progress Report 2 | 0.1d | 2015-06-17 10:24 | 2015-06-17 11:12 | 180 | 49.2d |
| 182 |  | Update Progress Report 2 | 0.1d | 2015-06-17 11:12 | 2015-06-17 12:00 | 181 | 49.2d |
| 183 |  | Complete Progress Report 2 | 0d | 2015-06-17 12:00 | 2015-06-17 12:00 | 182 | 49.2d |
| 184 |  | Submit SRS,AD,DD | 0d | 2015-06-16 17:00 | 2015-06-16 17:00 | 116, 178 | 49.7d |
| 185 | 1.2.5 | **Coding & Unit Testing** | 1d | 2015-06-17 08:00 | 2015-06-17 17:00 |  | 0d |
| 186 | 1.2.5.1 | **Bus Driver Module** | 1d | 2015-06-17 08:00 | 2015-06-17 17:00 |  | 0d |
| 187 |  | Send bus info module | 1d | 2015-06-17 08:00 | 2015-06-17 17:00 | 128, 167, 172, 177 | 0d |
| 188 | 1.2.6 | **Testing** | 12.8d | 2015-06-10 11:12 | 2015-07-06 09:36 |  | 18.6d |
| 189 | 1.2.6.1 | **Test review checklist** | 1d | 2015-06-10 11:12 | 2015-06-11 11:12 |  | 19d |
| 190 | 1.2.6.1.1 | **Test plan review checklist** | 0.6d | 2015-06-10 11:12 | 2015-06-10 17:00 |  | 19d |
| 191 |  | Develop test plan review checklist | 0.3d | 2015-06-10 11:12 | 2015-06-10 14:36 | 128 | 19d |
| 192 |  | Review test plan review checklist | 0.2d | 2015-06-10 14:36 | 2015-06-10 16:12 | 191 | 19d |
| 193 |  | Update test plan review checklist | 0.1d | 2015-06-10 16:12 | 2015-06-10 17:00 | 192 | 19d |
| 194 |  | Complete test plan review checklist | 0d | 2015-06-10 17:00 | 2015-06-10 17:00 | 193 | 19d |
| 195 | 1.2.6.1.2 | **Test case review checklist** | 1d | 2015-06-10 11:12 | 2015-06-11 11:12 |  | 40.5d |
| 196 |  | Develop test case review checklist | 0.5d | 2015-06-10 11:12 | 2015-06-10 16:12 | 128 | 40.5d |
| 197 |  | Review test case review checklist | 0.3d | 2015-06-10 16:12 | 2015-06-11 09:36 | 196 | 40.5d |
| 198 |  | Update test case review checklist | 0.2d | 2015-06-11 09:36 | 2015-06-11 11:12 | 197 | 40.5d |
| 199 |  | Complete test case review checklist | 0d | 2015-06-11 11:12 | 2015-06-11 11:12 | 198 | 40.5d |
| 200 |  | Complete review checklist | 0d | 2015-06-11 11:12 | 2015-06-11 11:12 | 194, 199 | 40.5d |
| 201 | 1.2.6.2 | **Test plan** | 1.8d | 2015-06-10 11:12 | 2015-06-12 09:36 |  | 18.6d |
| 202 |  | Develop test plan | 1d | 2015-06-10 11:12 | 2015-06-11 11:12 | 128 | 18.6d |
| 203 |  | Review test plan | 0.5d | 2015-06-11 11:12 | 2015-06-11 16:12 | 202, 194 | 18.6d |
| 204 |  | Update test plan | 0.3d | 2015-06-11 16:12 | 2015-06-12 09:36 | 203 | 18.6d |
| 205 |  | Complete test plan | 0d | 2015-06-12 09:36 | 2015-06-12 09:36 | 204 | 18.6d |
| 206 | 1.2.6.3 | **Test case** | 11d | 2015-06-12 09:36 | 2015-07-06 09:36 |  | 18.6d |
| 207 | 1.2.6.3.1 | **Unit test** | 4d | 2015-06-12 09:36 | 2015-06-18 09:36 |  | 18.6d |
| 208 | 1.2.6.3.1.1 | **Develop unit test case** | 2d | 2015-06-12 09:36 | 2015-06-16 09:36 |  | 18.6d |
| 209 |  | Bus driver module | 0.5d | 2015-06-12 09:36 | 2015-06-12 14:36 | 205 | 18.6d |
| 210 |  | Sync module | 0.5d | 2015-06-12 14:36 | 2015-06-15 09:36 | 209 | 18.6d |

| ID | WBS | Task | Duration | Start | Finish | Predecessors | Total float |
| --- | --- | --- | --- | --- | --- | --- | --- |
| 211 |  | Bus module | 1d | 2015-06-15 09:36 | 2015-06-16 09:36 | 210 | 18.6d |
| 212 |  | Shigeki module | 0.8d | 2015-06-12 09:36 | 2015-06-12 17:00 | 205 | 18.6d |
| 213 |  | Search module | 0.5d | 2015-06-15 08:00 | 2015-06-15 12:00 | 212 | 18.6d |
| 214 |  | Setting module | 0.7d | 2015-06-15 13:00 | 2015-06-16 09:36 | 213 | 18.6d |
| 215 |  | Review unit test case | 1d | 2015-06-16 09:36 | 2015-06-17 09:36 | 211, 214 | 18.6d |
| 216 |  | Update unit test case | 1d | 2015-06-17 09:36 | 2015-06-18 09:36 | 215 | 18.6d |
| 217 |  | Complete unit test case | 0d | 2015-06-18 09:36 | 2015-06-18 09:36 | 216 | 18.6d |
| 218 | 1.2.6.3.2 | **Integration test** | 4d | 2015-06-18 09:36 | 2015-07-01 09:36 |  | 28.7d |
| 219 |  | Develop integration test case | 2d | 2015-06-18 09:36 | 2015-06-29 09:36 | 217 | 28.7d |
| 220 |  | Review integration test case | 1d | 2015-06-29 09:36 | 2015-06-30 09:36 | 219 | 28.7d |
| 221 |  | Update integration test case | 1d | 2015-06-30 09:36 | 2015-07-01 09:36 | 220 | 28.7d |
| 222 |  | Complete integration test case | 0d | 2015-07-01 09:36 | 2015-07-01 09:36 | 221 | 28.7d |
| 223 | 1.2.6.3.3 | **System test** | 3d | 2015-07-01 09:36 | 2015-07-06 09:36 |  | 28.7d |
| 224 |  | Develop system test case | 1d | 2015-07-01 09:36 | 2015-07-02 09:36 | 222 | 28.7d |
| 225 |  | Review system test case | 1d | 2015-07-02 09:36 | 2015-07-03 09:36 | 224 | 28.7d |
| 226 |  | Update system test case | 1d | 2015-07-03 09:36 | 2015-07-06 09:36 | 225 | 28.7d |
| 227 |  | Complete system test case | 0d | 2015-07-06 09:36 | 2015-07-06 09:36 | 226 | 28.7d |
| 228 | 1.2.7 | **Progress report 3** | 0.5d | 2015-07-06 09:36 | 2015-07-06 14:36 |  | 28.7d |
| 229 |  | Develop Progress Report 3 | 0.3d | 2015-07-06 09:36 | 2015-07-06 12:00 | 200, 217, 222, 227 | 28.7d |
| 230 |  | Review Progress Report 3 | 0.1d | 2015-07-06 13:00 | 2015-07-06 13:48 | 229 | 28.7d |
| 231 |  | Update Progress Report 3 | 0.1d | 2015-07-06 13:48 | 2015-07-06 14:36 | 230 | 28.7d |
| 232 |  | Complete Progress Report 3 | 0d | 2015-07-06 14:36 | 2015-07-06 14:36 | 231 | 28.7d |
| 233 |  | Q & A Management (update) | 0.5d | 2015-07-06 14:36 | 2015-07-07 09:36 | 232 | 28.7d |
| 234 | 1.2.9 | **Report no.3** | 2.2d | 2015-07-07 09:36 | 2015-07-09 11:12 |  | 28.7d |
| 235 |  | Develop Report no.3 (draft version) | 0.2d | 2015-07-07 09:36 | 2015-07-07 11:12 | 205, 217, 222, 227, 233 | 28.7d |
| 236 |  | Review Report no.3 (draft version) | 1d | 2015-07-07 11:12 | 2015-07-08 11:12 | 235 | 28.7d |
| 237 |  | Update Report no.3 (draft version) | 0.5d | 2015-07-08 11:12 | 2015-07-08 16:12 | 236 | 28.7d |
| 238 |  | Submit Report no.3 (first version) | 0d | 2015-07-08 16:12 | 2015-07-08 16:12 | 237 | 28.7d |
| 239 |  | Revise after got comments for Report no.3 | 0.5d | 2015-07-08 16:12 | 2015-07-09 11:12 | 238 | 28.7d |
| 240 |  | Submit Report no.3 (final version) | 0d | 2015-07-09 11:12 | 2015-07-09 11:12 | 239 | 28.7d |
| 241 | 1.3 | **Construction** | 38.6d | 2015-06-18 08:00 | 2015-08-18 13:48 |  | 0d |
| 242 | 1.3.1 | **Code Review checklist** | 1.6d | 2015-07-09 11:12 | 2015-07-10 17:00 |  | 28.7d |
| 243 |  | Develop review checklist | 0.9d | 2015-07-09 11:12 | 2015-07-10 10:24 | 240 | 28.7d |
| 244 |  | Review review checklist | 0.4d | 2015-07-10 10:24 | 2015-07-10 14:36 | 243 | 28.7d |
| 245 |  | Update review checklist | 0.3d | 2015-07-10 14:36 | 2015-07-10 17:00 | 244 | 28.7d |
| 246 |  | Complete review checklist | 0d | 2015-07-10 17:00 | 2015-07-10 17:00 | 245 | 28.7d |
| 247 | 1.3.2 | **Coding & Unit testing (continue)** | 20d | 2015-06-18 08:00 | 2015-07-22 17:00 |  | 0d |
| 248 | 1.3.2.1 | **Bus Rider Module** | 20d | 2015-06-18 08:00 | 2015-07-22 17:00 |  | 0d |
| 249 | 1.3.2.1.1 | **Sync module** | 9d | 2015-06-18 08:00 | 2015-07-07 17:00 |  | 0d |
| 250 |  | PhoneNumberSync module | 3d | 2015-06-18 08:00 | 2015-06-29 17:00 | 187 | 0d |
| 251 |  | Connect Facebook module | 2d | 2015-06-30 08:00 | 2015-07-01 17:00 | 250 | 0d |
| 252 |  | Show Favorite place module | 1d | 2015-07-02 08:00 | 2015-07-02 17:00 | 251 | 0d |
| 253 |  | Show Favorite bus module | 1d | 2015-07-03 08:00 | 2015-07-03 17:00 | 252 | 0d |
| 254 |  | Add/remove Favorite place module | 1d | 2015-07-06 08:00 | 2015-07-06 17:00 | 253 | 0d |
| 255 |  | About module | 1d | 2015-07-07 08:00 | 2015-07-07 17:00 | 254 | 0d |
| 256 | 1.3.2.1.2 | **Bus module** | 18d | 2015-06-18 08:00 | 2015-07-20 17:00 |  | 0.8d |
| 257 |  | Bus list module | 1d | 2015-06-18 08:00 | 2015-06-18 17:00 | 187 | 0.8d |
| 258 |  | Bus info module | 3d | 2015-06-19 08:00 | 2015-06-30 17:00 | 257 | 0.8d |
| 259 |  | Bus route module | 2d | 2015-07-01 08:00 | 2015-07-02 17:00 | 258 | 0.8d |
| 260 |  | Bus nearest module | 3d | 2015-07-03 08:00 | 2015-07-07 17:00 | 259 | 0.8d |
| 261 |  | Bus map module | 1.5d | 2015-07-08 08:00 | 2015-07-09 12:00 | 260 | 0.8d |
| 262 |  | Set/unset favorite bus module | 1d | 2015-07-09 13:00 | 2015-07-10 12:00 | 261 | 0.8d |
| 263 |  | Remind module | 2.5d | 2015-07-10 13:00 | 2015-07-14 17:00 | 262 | 0.8d |
| 264 |  | Track module | 1.5d | 2015-07-15 08:00 | 2015-07-16 12:00 | 263 | 0.8d |
| 265 |  | Get notification module | 2d | 2015-07-16 13:00 | 2015-07-20 12:00 | 264 | 0.8d |
| 266 |  | Swap direction module | 0.5d | 2015-07-20 13:00 | 2015-07-20 17:00 | 265 | 0.8d |
| 267 | 1.3.2.1.3 | **Shigeki module** | 8.5d | 2015-06-18 08:00 | 2015-07-07 12:00 |  | 11.5d |
| 268 |  | Achievement module | 1.5d | 2015-06-18 08:00 | 2015-06-19 12:00 | 187 | 11.5d |
| 269 |  | Collection module | 1.5d | 2015-06-19 13:00 | 2015-06-29 17:00 | 268 | 11.5d |
| 270 |  | Mission module | 1.5d | 2015-06-30 08:00 | 2015-07-01 12:00 | 269 | 11.5d |
| 271 |  | Statistic module | 1.5d | 2015-07-01 13:00 | 2015-07-02 17:00 | 270 | 11.5d |
| 272 |  | Rank module | 1d | 2015-07-03 08:00 | 2015-07-03 17:00 | 271 | 11.5d |
| 273 |  | Scan QR code module | 1.5d | 2015-07-06 08:00 | 2015-07-07 12:00 | 272 | 11.5d |
| 274 | 1.3.2.1.4 | **Search module** | 8d | 2015-07-08 08:00 | 2015-07-17 17:00 |  | 0d |
| 275 |  | Search bus module | 1d | 2015-07-08 08:00 | 2015-07-08 17:00 | 255 | 0d |
| 276 |  | Search route module | 5d | 2015-07-09 08:00 | 2015-07-15 17:00 | 275 | 0d |
| 277 |  | Search Favorite bus module | 1d | 2015-07-16 08:00 | 2015-07-16 17:00 | 276 | 0d |
| 278 |  | Search Favorite place module | 1d | 2015-07-17 08:00 | 2015-07-17 17:00 | 277 | 0d |
| 279 |  | Setting module | 3d | 2015-07-20 08:00 | 2015-07-22 17:00 | 278 | 0d |
| 280 |  | Web service | 5d | 2015-07-07 13:00 | 2015-07-14 12:00 | 273 | 27.9d |

| ID | WBS | Task | Duration | Start | Finish | Predecessors | Total float |
| --- | --- | --- | --- | --- | --- | --- | --- |
| 281 |  | Complete coding | 0d | 2015-07-22 17:00 | 2015-07-22 17:00 | 187, 255, 266, 273, 278, 280, 279 | 21.4d |
| 282 |  | Q & A Management (update) | 1d | 2015-07-13 08:00 | 2015-07-13 17:00 | 246 | 28.7d |
| 283 | 1.3.4 | **Progress report 4** | 0.5d | 2015-07-23 08:00 | 2015-07-23 12:00 |  | 21.4d |
| 284 |  | Develop Progress Report 4 | 0.3d | 2015-07-23 08:00 | 2015-07-23 10:24 | 246, 281 | 21.4d |
| 285 |  | Review Progress Report 4 | 0.1d | 2015-07-23 10:24 | 2015-07-23 11:12 | 284 | 28.2d |
| 286 |  | Update Progress Report 4 | 0.1d | 2015-07-23 11:12 | 2015-07-23 12:00 | 285 | 28.2d |
| 287 |  | Complete Progress Report 4 | 0d | 2015-07-23 12:00 | 2015-07-23 12:00 | 286 | 28.2d |
| 288 | 1.3.5 | **Report no.4** | 7d | 2015-07-23 10:24 | 2015-08-03 10:24 |  | 21.4d |
| 289 |  | Develop Report no.4 (draft version) | 1d | 2015-07-23 10:24 | 2015-07-24 10:24 | 246, 281, 282, 284 | 21.4d |
| 290 |  | Review Report no.4 (draft version) | 2d | 2015-07-24 10:24 | 2015-07-28 10:24 | 289 | 21.4d |
| 291 |  | Update Report no.4 (draft version) | 2d | 2015-07-28 10:24 | 2015-07-30 10:24 | 290 | 21.4d |
| 292 |  | Submit Report no.4 (first version) | 0d | 2015-07-30 10:24 | 2015-07-30 10:24 | 291 | 21.4d |
| 293 |  | Revise after got comments for Report no.4 | 2d | 2015-07-30 10:24 | 2015-08-03 10:24 | 292 | 21.4d |
| 294 |  | Submit Report no.4 (final version) | 0d | 2015-08-03 10:24 | 2015-08-03 10:24 | 293 | 21.4d |
| 295 | 1.3.6 | **Testing** | 36.7d | 2015-06-18 09:36 | 2015-08-14 16:12 |  | 0d |
| 296 | 1.3.6.1 | **Execute test & fix bugs** | 36.1d | 2015-06-18 09:36 | 2015-08-14 10:24 |  | 0d |
| 297 | 1.3.6.1.1 | **Round 1** | 28.6d | 2015-06-18 09:36 | 2015-08-04 15:24 |  | 0d |
| 298 | 1.3.6.1.1.1 | **Execute unit test** | 20.6d | 2015-06-18 09:36 | 2015-07-23 15:24 |  | 0d |
| 299 |  | Bus driver module | 0.8d | 2015-06-18 09:36 | 2015-06-18 17:00 | 187, 217 | 19.8d |
| 300 |  | Sync module | 0.8d | 2015-07-08 08:00 | 2015-07-08 15:24 | 217, 255 | 11d |
| 301 |  | Bus module | 2d | 2015-07-21 08:00 | 2015-07-22 17:00 | 217, 266 | 0.8d |
| 302 |  | Shigeki module | 0.8d | 2015-07-07 13:00 | 2015-07-08 10:24 | 217, 273 | 11.5d |
| 303 |  | Search module | 2d | 2015-07-20 08:00 | 2015-07-21 17:00 | 217, 278 | 1.8d |
| 304 |  | Setting module | 0.8d | 2015-07-23 08:00 | 2015-07-23 15:24 | 217, 279 | 0d |
| 305 |  | Fix bugs unit test | 4d | 2015-07-23 15:24 | 2015-07-29 15:24 | 299, 300, 301, 302, 303, 304 | 0d |
| 306 |  | Execute integration test | 1d | 2015-07-29 15:24 | 2015-07-30 15:24 | 305 | 0d |
| 307 |  | Fix bugs integration test | 1d | 2015-07-30 15:24 | 2015-07-31 15:24 | 306 | 0d |
| 308 |  | Execute system test | 1d | 2015-07-31 15:24 | 2015-08-03 15:24 | 307 | 0d |
| 309 |  | Fix bugs system test | 1d | 2015-08-03 15:24 | 2015-08-04 15:24 | 308 | 0d |
| 310 | 1.3.6.1.2 | **Round 2** | 6.5d | 2015-08-04 15:24 | 2015-08-13 10:24 |  | 0d |
| 311 | 1.3.6.1.2.1 | **Execute unit test** | 1d | 2015-08-04 15:24 | 2015-08-05 15:24 |  | 0d |
| 312 |  | Bus driver module | 0.5d | 2015-08-04 15:24 | 2015-08-05 10:24 | 309 | 0.5d |
| 313 |  | Sync module | 0.6d | 2015-08-04 15:24 | 2015-08-05 11:12 | 309 | 0.4d |
| 314 |  | Bus module | 1d | 2015-08-04 15:24 | 2015-08-05 15:24 | 309 | 0d |
| 315 |  | Shigeki module | 0.5d | 2015-08-04 15:24 | 2015-08-05 10:24 | 309 | 0.5d |
| 316 |  | Search module | 1d | 2015-08-04 15:24 | 2015-08-05 15:24 | 309 | 0d |
| 317 |  | Setting module | 0.8d | 2015-08-04 15:24 | 2015-08-05 13:48 | 309 | 0.2d |
| 318 |  | Fix bugs unit test | 2d | 2015-08-05 15:24 | 2015-08-07 15:24 | 312, 313, 314, 315, 316, 317 | 0d |
| 319 |  | Execute integration test | 1d | 2015-08-07 15:24 | 2015-08-10 15:24 | 318 | 0d |
| 320 |  | Fix bugs integration test | 1d | 2015-08-10 15:24 | 2015-08-11 15:24 | 319 | 0d |
| 321 |  | Execute system test | 0.5d | 2015-08-11 15:24 | 2015-08-12 10:24 | 320 | 0d |
| 322 |  | Fix bugs system test | 1d | 2015-08-12 10:24 | 2015-08-13 10:24 | 321 | 0d |
| 323 |  | Execute acceptance test & collect data | 1d | 2015-08-13 10:24 | 2015-08-14 10:24 | 322 | 0d |
| 324 |  | Complete execute test | 0d | 2015-08-14 10:24 | 2015-08-14 10:24 | 323 | 0d |
| 325 | 1.3.6.3 | **Test Report** | 0.6d | 2015-08-14 10:24 | 2015-08-14 16:12 |  | 0d |
| 326 |  | Develop test report | 0.2d | 2015-08-14 10:24 | 2015-08-14 12:00 | 324 | 0d |
| 327 |  | Review test report | 0.2d | 2015-08-14 13:00 | 2015-08-14 14:36 | 326 | 0d |
| 328 |  | Update test report | 0.2d | 2015-08-14 14:36 | 2015-08-14 16:12 | 327 | 0d |
| 329 |  | Complete test report | 0d | 2015-08-14 16:12 | 2015-08-14 16:12 | 328 | 0d |
| 330 | 1.3.7 | **Quality report** | 0.7d | 2015-08-14 16:12 | 2015-08-17 13:48 |  | 0d |
| 331 |  | Develop quality report | 0.3d | 2015-08-14 16:12 | 2015-08-17 09:36 | 329 | 0d |
| 332 |  | Review quality report | 0.2d | 2015-08-17 09:36 | 2015-08-17 11:12 | 331 | 0d |
| 333 |  | Update quality report | 0.2d | 2015-08-17 11:12 | 2015-08-17 13:48 | 332 | 0d |
| 334 |  | Complete quality report | 0d | 2015-08-17 13:48 | 2015-08-17 13:48 | 333 | 0d |
| 335 | 1.3.8 | **Progress report 5** | 0.5d | 2015-08-17 13:48 | 2015-08-18 08:48 |  | 0d |
| 336 |  | Develop Progress Report 5 | 0.3d | 2015-08-17 13:48 | 2015-08-17 16:12 | 334 | 0d |
| 337 |  | Review Progress Report 5 | 0.1d | 2015-08-17 16:12 | 2015-08-17 17:00 | 336 | 0d |
| 338 |  | Update Progress Report 5 | 0.1d | 2015-08-18 08:00 | 2015-08-18 08:48 | 337 | 0d |
| 339 |  | Complete Progress Report 5 | 0d | 2015-08-18 08:48 | 2015-08-18 08:48 | 338 | 0d |
| 340 | 1.3.9 | **Report no.5** | 0.5d | 2015-08-18 08:48 | 2015-08-18 13:48 |  | 0d |
| 341 |  | Develop Report no.5 (draft version) | 0.1d | 2015-08-18 08:48 | 2015-08-18 09:36 | 329, 334, 339 | 0d |
| 342 |  | Review Report no.5 (draft version) | 0.2d | 2015-08-18 09:36 | 2015-08-18 11:12 | 341 | 0d |
| 343 |  | Update Report no.5 (draft version) | 0.1d | 2015-08-18 11:12 | 2015-08-18 12:00 | 342 | 0d |
| 344 |  | Submit Report no.5 (first version) | 0d | 2015-08-18 12:00 | 2015-08-18 12:00 | 343 | 0d |
| 345 |  | Revise after got comments for Report no.5 | 0.1d | 2015-08-18 13:00 | 2015-08-18 13:48 | 344 | 0d |
| 346 |  | Submit Report no.5 (final version) | 0d | 2015-08-18 13:48 | 2015-08-18 13:48 | 345 | 0d |
| 347 | 1.4 | **Termination** | 10.1d | 2015-08-18 13:48 | 2015-09-01 14:36 |  | 0d |
| 348 | 1.4.1 | **Report no.6** | 7.1d | 2015-08-18 13:48 | 2015-08-27 14:36 |  | 0d |
| 349 |  | Complete source code & final report | 1d | 2015-08-18 13:48 | 2015-08-19 13:48 | 346 | 0d |
| 350 |  | Develop installation guide | 0.5d | 2015-08-19 13:48 | 2015-08-20 08:48 | 349 | 0d |

| ID | WBS | Task | Duration | Start | Finish | Predecessors | Total float |
| --- | --- | --- | --- | --- | --- | --- | --- |
| 351 |  | Develop user guideline | 1d | 2015-08-20 08:48 | 2015-08-21 08:48 | 350 | 0d |
| 352 |  | Complete Project Result Assessment | 1d | 2015-08-21 08:48 | 2015-08-24 08:48 | 351 | 0d |
| 353 |  | Conduct lessons learned | 0.6d | 2015-08-24 08:48 | 2015-08-24 14:36 | 352 | 0d |
| 354 |  | Complete Presentation slide | 1d | 2015-08-24 14:36 | 2015-08-25 14:36 | 353 | 0d |
| 355 |  | Review Report no.6 (draft version) | 1d | 2015-08-25 14:36 | 2015-08-26 14:36 | 354 | 0d |
| 356 |  | Update Report no.6 (draft version) | 0.5d | 2015-08-26 14:36 | 2015-08-27 09:36 | 355 | 0d |
| 357 |  | Submit Report no.6 (first version) | 0d | 2015-08-27 09:36 | 2015-08-27 09:36 | 356 | 0d |
| 358 |  | Revise after got comments for Report no.6 | 0.5d | 2015-08-27 09:36 | 2015-08-27 14:36 | 357 | 0d |
| 359 |  | Submit Report no.6 (final version) | 0d | 2015-08-27 14:36 | 2015-08-27 14:36 | 358 | 0d |
| 360 |  | Submit Final report & CD source code | 0d | 2015-08-27 14:36 | 2015-08-27 14:36 | 359 | 0d |
| 361 | 1.4.2 | **Pre-closing** | 2.5d | 2015-08-27 14:36 | 2015-09-01 09:36 |  | 0d |
| 362 |  | Training presentation | 2.5d | 2015-08-27 14:36 | 2015-09-01 09:36 | 360 | 0d |
| 363 | 1.4.3 | **Closing** | 0.5d | 2015-09-01 09:36 | 2015-09-01 14:36 |  | 0d |
| 364 |  | Present Capstone Project & Completed | 0.5d | 2015-09-01 09:36 | 2015-09-01 14:36 | 362 | 0d |

## Version 2 (saved 2015-06-15, file BUSS_Project_Schedule_v1.04 _EN.mpp)

Note of the change: update things

Last finish stays 2015-09-01. Complete tasks 0 → 74.

Removed: 58 View notification; 59 Turn on/off Notification; 98 Edit favorite buses; 101 Interactive module; 102 View Achievement; 103 Share Achievement; 104 View Collection; 105 Share Collection; 106 View Mission; 107 Share Mission; 108 View Statistic; 109 Connect Facebook; 110 Scan QR code module

Changed:

| ID | Task | Start | Finish | Duration | Complete | Total float | Predecessors | Other |
| --- | --- | --- | --- | --- | --- | --- | --- | --- |
| 1 | **BL** | 2015-05-11 08:00 A | 2015-09-01 14:36 → 2015-09-01 15:24 | 76.7d → 76.8d | 0% → 24% |  |  |  |
| 2 | **Initiation** | 2015-05-11 08:00 A |  |  | 0% → 95% | 0d → 55.5d |  |  |
| 3 | System feasible study | 2015-05-11 08:00 A | 2015-05-11 10:24 A |  | 0% → 100% | 0d → none |  | resources NamNT; MaiTTT; PhuongBB; CuongNLT; AnhTT → NamNT; MaiTTT; PhuongBB; AnhTT |
| 4 | Define business situation | 2015-05-11 10:24 A | 2015-05-11 14:36 A |  | 0% → 100% | 0d → none |  | resources NamNT; MaiTTT; PhuongBB; CuongNLT; AnhTT → NamNT; MaiTTT; PhuongBB; AnhTT |
| 5 | Develop project idea | 2015-05-11 14:36 A | 2015-05-12 12:00 A |  | 0% → 100% | 0d → none |  | resources NamNT; MaiTTT; PhuongBB; CuongNLT; AnhTT → NamNT; MaiTTT; PhuongBB; AnhTT |
| 6 | Define project and system scope | 2015-05-12 13:00 A | 2015-05-12 17:00 A |  | 0% → 100% | 0d → none |  | resources NamNT; MaiTTT; PhuongBB; CuongNLT; AnhTT → NamNT; MaiTTT; PhuongBB; AnhTT |
| 7 | Prepare project | 2015-05-13 08:00 A | 2015-05-13 17:00 A |  | 0% → 100% | 0d → none |  | resources NamNT; MaiTTT; PhuongBB; CuongNLT; AnhTT → NamNT; MaiTTT; PhuongBB; AnhTT |
| 8 | Kick-off meeting | 2015-05-14 08:00 A | 2015-05-14 11:12 A |  | 0% → 100% | 0d → none |  | resources NamNT; MaiTTT; PhuongBB; CuongNLT; AnhTT → NamNT; MaiTTT; PhuongBB; AnhTT |
| 9 | Q & A Management | 2015-05-14 11:12 A | 2015-05-14 16:12 A |  | 0% → 100% | 2.1d → none |  |  |
| 10 | **Technologies** | 2015-05-14 11:12 A |  |  | 0% → 79% | 55.4d → 55.5d |  |  |
| 11 | Research development technologies | 2015-05-14 11:12 A | 2015-05-28 17:00 A | 2d → 1.3d | 0% → 100% | 55.6d → none |  | resources CuongNLT; NamNT; AnhTT → NamNT; AnhTT |
| 12 | Install and configure Eclipse IDE and Android SDK | 2015-05-29 08:00 A | 2015-06-02 08:48 A | 1d → 0.6d | 0% → 100% | 55.6d → none |  | resources CuongNLT; NamNT; AnhTT → NamNT; AnhTT |
| 13 | Training Java, Android SDK & Eclipse IDE | 2015-06-02 08:48 A | 2015-06-09 08:48 → 2015-06-04 08:48 (-5d) | 2.1d → 2d | 0% → 95% | 55.6d → 58.7d |  | resources CuongNLT; AnhTT → AnhTT |
| 14 | Install and configure Visual Studio, SQL Server | 2015-05-29 08:00 A |  |  | 0% → 50% | 56.8d → 57.85d |  |  |
| 15 | Study web service | 2015-06-05 15:24 A |  |  | 0% → 50% | 55.4d → 55.5d |  | was named Study web service using .NET & SQL Server |
| 16 | **SRS/PP/Concept design Review checklist** | 2015-05-14 16:12 A | 2015-05-19 16:12 A |  | 0% → 100% | 2.1d → none |  |  |
| 17 | Develop review checklist | 2015-05-14 16:12 A | 2015-05-19 11:12 A |  | 0% → 100% | 2.1d → none |  |  |
| 18 | Review review checklist | 2015-05-19 11:12 A | 2015-05-19 13:48 A |  | 0% → 100% | 2.1d → none |  |  |
| 19 | Update review checklist | 2015-05-19 13:48 A | 2015-05-19 16:12 A |  | 0% → 100% | 2.1d → none |  |  |
| 20 | Complete review checklist | 2015-05-19 16:12 A | 2015-05-19 16:12 A |  | 0% → 100% | 2.1d → none |  |  |
| 21 | **Requirements** | 2015-05-14 11:12 A | 2015-05-21 13:48 A |  | 0% → 100% | 0.1d → none |  |  |
| 22 | **User Requirements Specification** | 2015-05-14 11:12 A | 2015-05-20 16:12 A |  | 0% → 100% | 0.1d → none |  |  |
| 23 | Collect business requirements and processes | 2015-05-14 11:12 A | 2015-05-14 16:12 A |  | 0% → 100% | 0.1d → none |  |  |
| 24 | Create draft requirements | 2015-05-14 16:12 A | 2015-05-15 16:12 A |  | 0% → 100% | 0.1d → none |  |  |
| 25 | Complete draft requirements | 2015-05-15 16:12 A | 2015-05-15 16:12 A |  | 0% → 100% | 0.1d → none |  |  |
| 26 | Develop main function and processes | 2015-05-19 16:12 A | 2015-05-20 16:12 A |  | 0% → 100% | 1.4d → none |  |  |
| 27 | Review User Requirement Specification with checklist | 2015-05-20 16:12 A | 2015-05-21 09:36 A |  | 0% → 100% | 1.4d → none |  |  |
| 28 | Update User Requirement Specification | 2015-05-21 09:36 A | 2015-05-21 13:48 A |  | 0% → 100% | 1.4d → none |  |  |
| 29 | Complete User Requirement Specification | 2015-05-21 13:48 A | 2015-05-21 13:48 A |  | 0% → 100% | 1.4d → none |  |  |
| 30 | **Concept design** | 2015-05-15 16:12 A | 2015-05-20 16:12 A |  | 0% → 100% | 2.1d → none |  |  |
| 31 | Create draft concept design | 2015-05-15 16:12 A | 2015-05-19 11:12 A | 1.5d → 1d | 0% → 100% | 2.6d → none |  | resources CuongNLT; AnhTT → AnhTT |
| 32 | Review concept design with checklist | 2015-05-19 16:12 A | 2015-05-20 11:12 A |  | 0% → 100% | 2.1d → none |  |  |
| 33 | Update concept design | 2015-05-20 11:12 A | 2015-05-20 16:12 A |  | 0% → 100% | 2.1d → none |  | resources CuongNLT → AnhTT |
| 34 | Complete concept design | 2015-05-20 16:12 A | 2015-05-20 16:12 A |  | 0% → 100% | 2.1d → none |  |  |
| 35 | **Project plan** | 2015-05-14 11:12 A | 2015-05-22 15:24 A |  | 0% → 100% | 0d → none |  |  |
| 36 | Develop project definition | 2015-05-14 11:12 A | 2015-05-15 08:48 A |  | 0% → 100% | 0d → none |  | resources CuongNLT → none |
| 37 | Develop Work Breakdown Structure | 2015-05-15 08:48 A | 2015-05-15 17:00 A |  | 0% → 100% | 0d → none |  |  |
| 38 | Create Project Schedule | 2015-05-18 08:00 A | 2015-05-19 17:00 A |  | 0% → 100% | 0d → none |  |  |
| 39 | Create Configuration Management Plan version 1.0 | 2015-05-20 08:00 A | 2015-05-20 15:24 A |  | 0% → 100% | 0.2d → none |  |  |
| 40 | Create Project Plan (first version) | 2015-05-20 15:24 A | 2015-05-22 10:24 A |  | 0% → 100% | 0.2d → none |  |  |
| 41 | Review Project Plan (first version) | 2015-05-22 10:24 A | 2015-05-22 15:24 A |  | 0% → 100% | 0.2d → none |  |  |
| 42 | Complete Project Plan (final version) | 2015-05-22 15:24 A | 2015-05-22 15:24 A |  | 0% → 100% | 0.2d → none |  |  |
| 43 | **Progress Report 1** | 2015-05-22 10:24 A | 2015-05-22 17:00 A |  | 0% → 100% | 0d → none |  |  |
| 44 | Develop Progress Report 1 | 2015-05-22 10:24 A | 2015-05-22 14:36 A |  | 0% → 100% | 0d → none |  |  |
| 45 | Review Progress Report 1 | 2015-05-22 14:36 A | 2015-05-22 16:12 A |  | 0% → 100% | 0d → none |  |  |
| 46 | Update Progress Report 1 | 2015-05-22 16:12 A | 2015-05-22 17:00 A |  | 0% → 100% | 0d → none |  |  |
| 47 | Complete Progress Report 1 | 2015-05-22 17:00 A | 2015-05-22 17:00 A |  | 0% → 100% | 0d → none |  |  |
| 48 | Submit PP, URS, Concept Design | 2015-05-22 17:00 A | 2015-05-22 17:00 A |  | 0% → 100% | 0d → none |  |  |
| 49 | **Solution** | 2015-05-25 08:00 A | 2015-07-09 11:12 → 2015-07-09 12:00 | 28.4d → 28.5d | 0% → 35% | 0d → 38.3d |  |  |
| 50 | **Requirements** | 2015-05-25 08:00 A | 2015-06-05 17:00 → 2015-06-08 08:48 (+3d) | 10d → 10.1d | 0% → 89% |  |  |  |
| 51 | **Software Requirements Specification** | 2015-05-25 08:00 A | 2015-06-05 17:00 → 2015-06-08 08:48 (+3d) | 10d → 10.1d | 0% → 89% |  |  |  |
| 52 | **Functional Requirement Specification** | 2015-05-25 08:00 A | 2015-06-01 13:48 A |  | 0% → 100% | 0d → none |  |  |
| 53 | **Bus Driver Module** | 2015-05-25 08:00 A | 2015-05-25 13:48 A |  | 0% → 100% | 0.4d → none |  |  |
| 54 | Send bus info module | 2015-05-25 08:00 A | 2015-05-25 13:48 A |  | 0% → 100% | 0.4d → none |  |  |
| 55 | **Bus Rider Module** | 2015-05-25 08:00 A | 2015-06-01 13:48 A |  | 0% → 100% | 0d → none |  |  |
| 56 | **Common module** | 2015-05-25 08:00 A | 2015-05-28 17:00 → 2015-06-01 09:36 A (+4d) | 4d → 5.2d | 0% → 100% | 2d → none |  |  |
| 57 | Turn on/off Snooze mode | 2015-05-25 08:00 A | 2015-05-25 17:00 A |  | 0% → 100% | 2d → none |  | resources CuongNLT → NamNT |
| 58 | Change app setting | 2015-05-26 13:48 A | 2015-05-27 17:00 A |  | 0% → 100% | 2d → none | Turn on/off Notification → 57 | resources CuongNLT → NamNT |
| 59 | View dashboard | 2015-05-28 08:00 → 2015-05-29 09:36 A (+1d) | 2015-05-28 17:00 → 2015-06-01 09:36 A (+4d) |  | 0% → 100% | 2d → none |  | resources CuongNLT → NamNT |
| 60 | **Account Management module** | 2015-05-25 08:00 → 2015-05-26 08:00 A (+1d) | 2015-05-26 13:48 → 2015-05-29 09:36 A (+3d) | 1.6d → 3.2d | 0% → 100% | 2.1d → none |  |  |
| 61 | Log in | 2015-05-25 08:00 → 2015-05-26 08:00 A (+1d) | 2015-05-25 13:48 → 2015-05-26 13:48 A (+1d) |  | 0% → 100% | 2.1d → none |  |  |
| 62 | Log out | 2015-05-25 13:48 → 2015-05-28 08:00 A (+3d) | 2015-05-25 16:12 → 2015-05-28 10:24 A (+3d) |  | 0% → 100% | 2.1d → none |  |  |
| 63 | View account profile | 2015-05-25 16:12 → 2015-05-28 10:24 A (+3d) | 2015-05-26 08:48 → 2015-05-28 12:00 A (+2d) |  | 0% → 100% | 2.1d → none |  |  |
| 64 | Change account info | 2015-05-26 08:48 → 2015-05-28 13:00 A (+2d) | 2015-05-26 10:24 → 2015-05-28 14:36 A (+2d) |  | 0% → 100% | 2.1d → none |  |  |
| 65 | Forgot password | 2015-05-26 10:24 → 2015-05-28 14:36 A (+2d) | 2015-05-26 13:48 → 2015-05-29 09:36 A (+3d) |  | 0% → 100% | 2.1d → none |  |  |
| 66 | **Bus module** | 2015-05-25 08:00 A | 2015-05-28 17:00 A |  | 0% → 100% | 2d → none |  |  |
| 67 | View bus list | 2015-05-25 08:00 A | 2015-05-25 10:24 A |  | 0% → 100% | 2d → none |  |  |
| 68 | View bus info | 2015-05-25 10:24 A | 2015-05-25 13:48 A |  | 0% → 100% | 2d → none |  |  |
| 69 | View bus route | 2015-05-25 13:48 A | 2015-05-26 09:36 A |  | 0% → 100% | 2d → none |  |  |
| 70 | View nearest bus | 2015-05-26 09:36 A | 2015-05-27 09:36 A |  | 0% → 100% | 2d → none |  |  |

| ID | Task | Start | Finish | Duration | Complete | Total float | Predecessors | Other |
| --- | --- | --- | --- | --- | --- | --- | --- | --- |
| 71 | View bus map | 2015-05-27 09:36 A | 2015-05-27 17:00 A |  | 0% → 100% | 2d → none |  |  |
| 72 | View bus near me | 2015-05-28 08:00 A | 2015-05-28 17:00 A |  | 0% → 100% | 2d → none |  |  |
| 73 | **Path Finder module** | 2015-05-25 13:48 A | 2015-05-28 15:24 A |  | 0% → 100% | 0.4d → none |  |  |
| 74 | Find path | 2015-05-25 13:48 A | 2015-05-27 08:48 A |  | 0% → 100% | 0.4d → none |  |  |
| 75 | View paths found | 2015-05-27 08:48 A | 2015-05-27 12:00 A |  | 0% → 100% | 0.4d → none |  |  |
| 76 | View path detail | 2015-05-27 13:00 A | 2015-05-28 09:36 A |  | 0% → 100% | 0.4d → none |  |  |
| 77 | View direction | 2015-05-28 09:36 A | 2015-05-28 15:24 A |  | 0% → 100% | 0.4d → none |  |  |
| 78 | **Reminder module** | 2015-05-28 15:24 A | 2015-06-01 13:48 A |  | 0% → 100% | 0.4d → none |  |  |
| 79 | View bus reminder | 2015-05-28 15:24 A | 2015-05-29 10:24 A |  | 0% → 100% | 0.4d → none |  |  |
| 80 | Add reminder | 2015-05-29 10:24 A | 2015-05-29 12:00 A |  | 0% → 100% | 0.4d → none |  |  |
| 81 | Edit reminder | 2015-05-29 13:00 A | 2015-05-29 15:24 A |  | 0% → 100% | 0.4d → none |  |  |
| 82 | Delete reminder | 2015-05-29 15:24 A | 2015-05-29 16:12 A |  | 0% → 100% | 0.4d → none |  |  |
| 83 | Suspend/Unsuspend all reminder | 2015-05-29 16:12 A | 2015-06-01 11:12 A |  | 0% → 100% | 0.4d → none |  |  |
| 84 | Suspend/Unsuspend a chosen reminder | 2015-06-01 11:12 A | 2015-06-01 13:48 A |  | 0% → 100% | 0.4d → none |  |  |
| 85 | **Track module** | 2015-05-25 08:00 A | 2015-05-26 09:36 A |  | 0% → 100% | 0d → none |  |  |
| 86 | Tracking | 2015-05-25 08:00 A | 2015-05-25 17:00 A |  | 0% → 100% | 0d → none |  |  |
| 87 | Cancel track | 2015-05-26 08:00 A | 2015-05-26 09:36 A |  | 0% → 100% | 0d → none |  |  |
| 88 | **Favorite module** | 2015-05-26 09:36 A | 2015-05-28 15:24 → 2015-05-28 12:00 A | 2.6d → 2.3d | 0% → 100% | 0d → none |  |  |
| 89 | View favorite places | 2015-05-26 09:36 A | 2015-05-26 13:48 A |  | 0% → 100% | 0d → none |  |  |
| 90 | Add favorite places | 2015-05-26 13:48 A | 2015-05-26 15:24 A |  | 0% → 100% | 0d → none |  |  |
| 91 | Edit favorite places | 2015-05-26 15:24 A | 2015-05-27 08:48 A |  | 0% → 100% | 0d → none |  |  |
| 92 | Delete favorite places | 2015-05-27 08:48 A | 2015-05-27 10:24 A |  | 0% → 100% | 0d → none |  |  |
| 93 | Search favorite places | 2015-05-27 10:24 A | 2015-05-27 12:00 A |  | 0% → 100% | 0d → none |  |  |
| 94 | View favorite buses | 2015-05-27 13:00 A | 2015-05-27 16:12 A |  | 0% → 100% | 0d → none |  |  |
| 95 | Add favorite buses | 2015-05-27 16:12 A | 2015-05-28 08:48 A |  | 0% → 100% | 0d → none |  |  |
| 96 | Delete favorite buses | 2015-05-28 11:12 → 2015-05-28 08:48 A | 2015-05-28 13:48 → 2015-05-28 10:24 A |  | 0% → 100% | 0d → none | Edit favorite buses → 95 |  |
| 97 | Search favorite buses | 2015-05-28 13:48 → 2015-05-28 10:24 A | 2015-05-28 15:24 → 2015-05-28 12:00 A |  | 0% → 100% | 0d → none |  |  |
| 98 | **Non-functional Requirement Specification** | 2015-05-28 15:24 → 2015-05-28 13:00 A | 2015-06-01 17:00 A | 2.2d → 2.5d | 0% → 100% | 0d → none |  |  |
| 99 | Develop User Interface Requirement | 2015-05-28 15:24 → 2015-05-28 13:00 A | 2015-06-01 09:36 → 2015-05-29 16:12 A (-3d) |  | 0% → 100% | 0d → none |  |  |
| 100 | Develop Performance Requirement | 2015-06-01 09:36 A | 2015-06-01 17:00 A |  | 0% → 100% | 0d → none |  | resources CuongNLT → NamNT |
| 101 | Review Software Requirement Specification with checklist | 2015-06-02 08:00 A |  |  | 0% → 70% |  | 54, 59, 65, 72, 77, 84, 87, 97, Scan QR code module, 100 → 54, 59, 65, 72, 77, 84, 87, 97, 100 |  |
| 102 | Update Software Requirement Specification |  | 2015-06-05 17:00 → 2015-06-08 08:48 (+3d) | 2d → 2.1d |  |  |  | resources CuongNLT; AnhTT; NamNT → AnhTT; NamNT |
| 103 | Complete Software Requirement Specification | 2015-06-05 17:00 → 2015-06-08 08:48 (+3d) | 2015-06-05 17:00 → 2015-06-08 08:48 (+3d) |  |  |  |  |  |
| 104 | **Design** | 2015-06-01 09:36 → 2015-05-29 16:12 (-3d) | 2015-06-16 17:00 → 2015-06-17 08:48 (+1d) | 11.8d → 12.2d |  | 2d → 2.4d |  |  |
| 105 | **Design Review checklist** | 2015-06-01 09:36 → 2015-05-29 16:12 (-3d) | 2015-06-05 15:24 → 2015-06-05 12:00 |  |  | 2d → 2.4d |  |  |
| 106 | Develop review checklist | 2015-06-01 09:36 → 2015-05-29 16:12 (-3d) | 2015-06-05 12:00 → 2015-06-05 09:36 |  |  | 2d → 2.4d |  |  |
| 107 | Review review checklist | 2015-06-05 13:00 → 2015-06-05 09:36 | 2015-06-05 13:48 → 2015-06-05 10:24 |  |  | 2d → 2.4d |  |  |
| 108 | Update review checklist | 2015-06-05 13:48 → 2015-06-05 10:24 | 2015-06-05 15:24 → 2015-06-05 12:00 |  |  | 2d → 2.4d |  |  |
| 109 | Complete review checklist | 2015-06-05 15:24 → 2015-06-05 12:00 | 2015-06-05 15:24 → 2015-06-05 12:00 |  |  | 2d → 2.4d |  |  |
| 110 | **Architecture design** | 2015-06-08 08:00 → 2015-06-08 08:48 | 2015-06-10 11:12 → 2015-06-10 12:00 |  |  |  |  |  |
| 111 | Define system structure and collect system features | 2015-06-08 08:00 → 2015-06-08 08:48 | 2015-06-08 17:00 → 2015-06-09 08:48 (+1d) |  |  |  |  | resources NamNT; CuongNLT → NamNT |
| 112 | Study & choose System Architecture | 2015-06-09 08:00 → 2015-06-09 08:48 | 2015-06-09 15:24 → 2015-06-09 16:12 |  |  |  |  | resources NamNT; CuongNLT → NamNT |
| 113 | Review Architecture Design with checklist | 2015-06-09 15:24 → 2015-06-09 16:12 | 2015-06-10 08:48 → 2015-06-10 09:36 |  |  |  |  |  |
| 114 | Update Architecture Design | 2015-06-10 08:48 → 2015-06-10 09:36 | 2015-06-10 11:12 → 2015-06-10 12:00 |  |  |  |  | resources NamNT; CuongNLT → NamNT |
| 115 | Complete System Architecture version 1.0 | 2015-06-10 11:12 → 2015-06-10 12:00 | 2015-06-10 11:12 → 2015-06-10 12:00 |  |  |  |  |  |
| 116 | **Detailed design** | 2015-06-10 11:12 → 2015-06-10 13:00 | 2015-06-15 12:00 → 2015-06-15 13:48 |  |  |  |  |  |
| 117 | **User Interface design** | 2015-06-10 11:12 → 2015-06-10 13:00 | 2015-06-12 12:00 → 2015-06-12 13:48 |  |  |  |  |  |
| 118 | **Bus Driver Module** | 2015-06-10 11:12 → 2015-06-10 13:00 | 2015-06-10 15:24 → 2015-06-10 16:12 |  |  |  |  |  |
| 119 | Send bus info module | 2015-06-10 11:12 → 2015-06-10 13:00 | 2015-06-10 15:24 → 2015-06-10 16:12 |  |  |  |  |  |
| 120 | **Bus Rider Module** | 2015-06-10 11:12 → 2015-06-10 13:00 | 2015-06-12 12:00 → 2015-06-12 13:48 |  |  |  |  |  |
| 121 | **Sync module** | 2015-06-10 15:24 → 2015-06-10 16:12 | 2015-06-11 13:48 → 2015-06-11 14:36 |  |  |  |  |  |
| 122 | PhoneNumberSync module | 2015-06-10 15:24 → 2015-06-10 16:12 | 2015-06-11 08:48 → 2015-06-11 09:36 |  |  |  |  |  |
| 123 | Connect Facebook module | 2015-06-11 08:48 → 2015-06-11 09:36 | 2015-06-11 09:36 → 2015-06-11 10:24 |  |  |  |  |  |
| 124 | Show Favorite place module | 2015-06-11 09:36 → 2015-06-11 10:24 | 2015-06-11 10:24 → 2015-06-11 11:12 |  |  |  |  |  |
| 125 | Show Favorite bus module | 2015-06-11 10:24 → 2015-06-11 11:12 | 2015-06-11 11:12 → 2015-06-11 12:00 |  |  |  |  |  |
| 126 | Add/remove Favorite place module | 2015-06-11 11:12 → 2015-06-11 13:00 | 2015-06-11 12:00 → 2015-06-11 13:48 |  |  |  |  |  |
| 127 | About module | 2015-06-11 13:00 → 2015-06-11 13:48 | 2015-06-11 13:48 → 2015-06-11 14:36 |  |  |  |  |  |
| 128 | **Bus module** | 2015-06-10 11:12 → 2015-06-10 13:00 | 2015-06-12 12:00 → 2015-06-12 13:48 |  |  |  |  |  |
| 129 | Bus list module | 2015-06-10 11:12 → 2015-06-10 13:00 | 2015-06-10 12:00 → 2015-06-10 13:48 |  |  |  |  |  |
| 130 | Bus info module | 2015-06-10 13:00 → 2015-06-10 13:48 | 2015-06-10 15:24 → 2015-06-10 16:12 |  |  |  |  |  |
| 131 | Bus route module | 2015-06-10 15:24 → 2015-06-10 16:12 | 2015-06-10 17:00 → 2015-06-11 08:48 (+1d) |  |  |  |  |  |
| 132 | Bus nearest module | 2015-06-11 08:00 → 2015-06-11 08:48 | 2015-06-11 10:24 → 2015-06-11 11:12 |  |  |  |  |  |
| 133 | Bus map module | 2015-06-11 10:24 → 2015-06-11 11:12 | 2015-06-11 12:00 → 2015-06-11 13:48 |  |  |  |  |  |
| 134 | Set/unset favorite bus module | 2015-06-11 13:00 → 2015-06-11 13:48 | 2015-06-11 13:48 → 2015-06-11 14:36 |  |  |  |  |  |
| 135 | Remind module | 2015-06-11 13:48 → 2015-06-11 14:36 | 2015-06-11 16:12 → 2015-06-11 17:00 |  |  |  |  |  |
| 136 | Track module | 2015-06-11 16:12 → 2015-06-12 08:00 (+1d) | 2015-06-12 08:48 → 2015-06-12 09:36 |  |  |  |  |  |
| 137 | Get notification module | 2015-06-12 08:48 → 2015-06-12 09:36 | 2015-06-12 11:12 → 2015-06-12 12:00 |  |  |  |  |  |
| 138 | Swap direction module | 2015-06-12 11:12 → 2015-06-12 13:00 | 2015-06-12 12:00 → 2015-06-12 13:48 |  |  |  |  |  |
| 139 | **Shigeki module** | 2015-06-10 11:12 → 2015-06-10 13:00 | 2015-06-11 17:00 → 2015-06-12 08:48 (+1d) |  |  |  |  |  |
| 140 | Achievement module | 2015-06-10 11:12 → 2015-06-10 13:00 | 2015-06-10 14:36 → 2015-06-10 15:24 |  |  |  |  |  |

| ID | Task | Start | Finish |
| --- | --- | --- | --- |
| 141 | Collection module | 2015-06-10 14:36 → 2015-06-10 15:24 | 2015-06-10 17:00 → 2015-06-11 08:48 (+1d) |
| 142 | Mission module | 2015-06-11 08:00 → 2015-06-11 08:48 | 2015-06-11 10:24 → 2015-06-11 11:12 |
| 143 | Statistic module | 2015-06-11 10:24 → 2015-06-11 11:12 | 2015-06-11 13:48 → 2015-06-11 14:36 |
| 144 | Rank module | 2015-06-11 13:48 → 2015-06-11 14:36 | 2015-06-11 14:36 → 2015-06-11 15:24 |
| 145 | Scan QR code module | 2015-06-11 14:36 → 2015-06-11 15:24 | 2015-06-11 17:00 → 2015-06-12 08:48 (+1d) |
| 146 | **Search module** | 2015-06-10 11:12 → 2015-06-10 13:00 | 2015-06-10 17:00 → 2015-06-11 08:48 (+1d) |
| 147 | Search bus module | 2015-06-10 11:12 → 2015-06-10 13:00 | 2015-06-10 12:00 → 2015-06-10 13:48 |
| 148 | Search route module | 2015-06-10 13:00 → 2015-06-10 13:48 | 2015-06-10 15:24 → 2015-06-10 16:12 |
| 149 | Search Favorite bus module | 2015-06-10 15:24 → 2015-06-10 16:12 | 2015-06-10 16:12 → 2015-06-10 17:00 |
| 150 | Search Favorite place module | 2015-06-10 16:12 → 2015-06-11 08:00 (+1d) | 2015-06-10 17:00 → 2015-06-11 08:48 (+1d) |
| 151 | Setting module | 2015-06-11 08:00 → 2015-06-11 08:48 | 2015-06-11 12:00 → 2015-06-11 13:48 |
| 152 | Review Detailed Design with checklist | 2015-06-12 13:00 → 2015-06-12 13:48 | 2015-06-15 12:00 → 2015-06-15 13:48 |
| 153 | Update Detailed Design | 2015-06-15 12:00 → 2015-06-15 13:48 | 2015-06-15 12:00 → 2015-06-15 13:48 |
| 154 | Complete Detailed Design version 1.0 | 2015-06-15 12:00 → 2015-06-15 13:48 | 2015-06-15 12:00 → 2015-06-15 13:48 |
| 155 | **Database design** | 2015-06-10 11:12 → 2015-06-10 13:00 | 2015-06-12 09:36 → 2015-06-12 10:24 |
| 156 | Create Databse Design draft version | 2015-06-10 11:12 → 2015-06-10 13:00 | 2015-06-11 11:12 → 2015-06-11 12:00 |
| 157 | Review Database Design with checklist | 2015-06-11 11:12 → 2015-06-11 13:00 | 2015-06-11 16:12 → 2015-06-11 17:00 |
| 158 | Update Database Design | 2015-06-11 16:12 → 2015-06-12 08:00 (+1d) | 2015-06-12 09:36 → 2015-06-12 10:24 |
| 159 | Complete Database Design version 1.0 | 2015-06-12 09:36 → 2015-06-12 10:24 | 2015-06-12 09:36 → 2015-06-12 10:24 |
| 160 | **Class design** | 2015-06-12 09:36 → 2015-06-12 10:24 | 2015-06-16 17:00 → 2015-06-17 08:48 (+1d) |
| 161 | Define class/component | 2015-06-12 09:36 → 2015-06-12 10:24 | 2015-06-16 09:36 → 2015-06-16 10:24 |
| 162 | Review Class Design with checklist | 2015-06-16 09:36 → 2015-06-16 10:24 | 2015-06-16 14:36 → 2015-06-16 15:24 |
| 163 | Update Class Design | 2015-06-16 14:36 → 2015-06-16 15:24 | 2015-06-16 17:00 → 2015-06-17 08:48 (+1d) |
| 164 | Complete Class Design version 1.0 | 2015-06-16 17:00 → 2015-06-17 08:48 (+1d) | 2015-06-16 17:00 → 2015-06-17 08:48 (+1d) |
| 165 | Complete design | 2015-06-16 17:00 → 2015-06-17 08:48 (+1d) | 2015-06-16 17:00 → 2015-06-17 08:48 (+1d) |
| 166 | **Progress Report 2** | 2015-06-17 08:00 → 2015-06-17 08:48 | 2015-06-17 12:00 → 2015-06-17 13:48 |
| 167 | Develop Progress Report 2 | 2015-06-17 08:00 → 2015-06-17 08:48 | 2015-06-17 10:24 → 2015-06-17 11:12 |
| 168 | Review Progress Report 2 | 2015-06-17 10:24 → 2015-06-17 11:12 | 2015-06-17 11:12 → 2015-06-17 12:00 |
| 169 | Update Progress Report 2 | 2015-06-17 11:12 → 2015-06-17 13:00 | 2015-06-17 12:00 → 2015-06-17 13:48 |
| 170 | Complete Progress Report 2 | 2015-06-17 12:00 → 2015-06-17 13:48 | 2015-06-17 12:00 → 2015-06-17 13:48 |
| 171 | Submit SRS,AD,DD | 2015-06-16 17:00 → 2015-06-17 08:48 (+1d) | 2015-06-16 17:00 → 2015-06-17 08:48 (+1d) |
| 172 | **Coding & Unit Testing** | 2015-06-17 08:00 → 2015-06-17 08:48 | 2015-06-17 17:00 → 2015-06-18 08:48 (+1d) |
| 173 | **Bus Driver Module** | 2015-06-17 08:00 → 2015-06-17 08:48 | 2015-06-17 17:00 → 2015-06-18 08:48 (+1d) |
| 174 | Send bus info module | 2015-06-17 08:00 → 2015-06-17 08:48 | 2015-06-17 17:00 → 2015-06-18 08:48 (+1d) |
| 175 | **Testing** | 2015-06-10 11:12 → 2015-06-10 13:00 | 2015-07-06 09:36 → 2015-07-06 10:24 |
| 176 | **Test review checklist** | 2015-06-10 11:12 → 2015-06-10 13:00 | 2015-06-11 11:12 → 2015-06-11 12:00 |
| 177 | **Test plan review checklist** | 2015-06-10 11:12 → 2015-06-10 13:00 | 2015-06-10 17:00 → 2015-06-11 08:48 (+1d) |
| 178 | Develop test plan review checklist | 2015-06-10 11:12 → 2015-06-10 13:00 | 2015-06-10 14:36 → 2015-06-10 15:24 |
| 179 | Review test plan review checklist | 2015-06-10 14:36 → 2015-06-10 15:24 | 2015-06-10 16:12 → 2015-06-10 17:00 |
| 180 | Update test plan review checklist | 2015-06-10 16:12 → 2015-06-11 08:00 (+1d) | 2015-06-10 17:00 → 2015-06-11 08:48 (+1d) |
| 181 | Complete test plan review checklist | 2015-06-10 17:00 → 2015-06-11 08:48 (+1d) | 2015-06-10 17:00 → 2015-06-11 08:48 (+1d) |
| 182 | **Test case review checklist** | 2015-06-10 11:12 → 2015-06-10 13:00 | 2015-06-11 11:12 → 2015-06-11 12:00 |
| 183 | Develop test case review checklist | 2015-06-10 11:12 → 2015-06-10 13:00 | 2015-06-10 16:12 → 2015-06-10 17:00 |
| 184 | Review test case review checklist | 2015-06-10 16:12 → 2015-06-11 08:00 (+1d) | 2015-06-11 09:36 → 2015-06-11 10:24 |
| 185 | Update test case review checklist | 2015-06-11 09:36 → 2015-06-11 10:24 | 2015-06-11 11:12 → 2015-06-11 12:00 |
| 186 | Complete test case review checklist | 2015-06-11 11:12 → 2015-06-11 12:00 | 2015-06-11 11:12 → 2015-06-11 12:00 |
| 187 | Complete review checklist | 2015-06-11 11:12 → 2015-06-11 12:00 | 2015-06-11 11:12 → 2015-06-11 12:00 |
| 188 | **Test plan** | 2015-06-10 11:12 → 2015-06-10 13:00 | 2015-06-12 09:36 → 2015-06-12 10:24 |
| 189 | Develop test plan | 2015-06-10 11:12 → 2015-06-10 13:00 | 2015-06-11 11:12 → 2015-06-11 12:00 |
| 190 | Review test plan | 2015-06-11 11:12 → 2015-06-11 13:00 | 2015-06-11 16:12 → 2015-06-11 17:00 |
| 191 | Update test plan | 2015-06-11 16:12 → 2015-06-12 08:00 (+1d) | 2015-06-12 09:36 → 2015-06-12 10:24 |
| 192 | Complete test plan | 2015-06-12 09:36 → 2015-06-12 10:24 | 2015-06-12 09:36 → 2015-06-12 10:24 |
| 193 | **Test case** | 2015-06-12 09:36 → 2015-06-12 10:24 | 2015-07-06 09:36 → 2015-07-06 10:24 |
| 194 | **Unit test** | 2015-06-12 09:36 → 2015-06-12 10:24 | 2015-06-18 09:36 → 2015-06-18 10:24 |
| 195 | **Develop unit test case** | 2015-06-12 09:36 → 2015-06-12 10:24 | 2015-06-16 09:36 → 2015-06-16 10:24 |
| 196 | Bus driver module | 2015-06-12 09:36 → 2015-06-12 10:24 | 2015-06-12 14:36 → 2015-06-12 15:24 |
| 197 | Sync module | 2015-06-12 14:36 → 2015-06-12 15:24 | 2015-06-15 09:36 → 2015-06-15 10:24 |
| 198 | Bus module | 2015-06-15 09:36 → 2015-06-15 10:24 | 2015-06-16 09:36 → 2015-06-16 10:24 |
| 199 | Shigeki module | 2015-06-12 09:36 → 2015-06-12 10:24 | 2015-06-12 17:00 → 2015-06-15 08:48 (+3d) |
| 200 | Search module | 2015-06-15 08:00 → 2015-06-15 08:48 | 2015-06-15 12:00 → 2015-06-15 13:48 |
| 201 | Setting module | 2015-06-15 13:00 → 2015-06-15 13:48 | 2015-06-16 09:36 → 2015-06-16 10:24 |
| 202 | Review unit test case | 2015-06-16 09:36 → 2015-06-16 10:24 | 2015-06-17 09:36 → 2015-06-17 10:24 |
| 203 | Update unit test case | 2015-06-17 09:36 → 2015-06-17 10:24 | 2015-06-18 09:36 → 2015-06-18 10:24 |
| 204 | Complete unit test case | 2015-06-18 09:36 → 2015-06-18 10:24 | 2015-06-18 09:36 → 2015-06-18 10:24 |
| 205 | **Integration test** | 2015-06-18 09:36 → 2015-06-18 10:24 | 2015-07-01 09:36 → 2015-07-01 10:24 |
| 206 | Develop integration test case | 2015-06-18 09:36 → 2015-06-18 10:24 | 2015-06-29 09:36 → 2015-06-29 10:24 |
| 207 | Review integration test case | 2015-06-29 09:36 → 2015-06-29 10:24 | 2015-06-30 09:36 → 2015-06-30 10:24 |
| 208 | Update integration test case | 2015-06-30 09:36 → 2015-06-30 10:24 | 2015-07-01 09:36 → 2015-07-01 10:24 |
| 209 | Complete integration test case | 2015-07-01 09:36 → 2015-07-01 10:24 | 2015-07-01 09:36 → 2015-07-01 10:24 |
| 210 | **System test** | 2015-07-01 09:36 → 2015-07-01 10:24 | 2015-07-06 09:36 → 2015-07-06 10:24 |

| ID | Task | Start | Finish |
| --- | --- | --- | --- |
| 211 | Develop system test case | 2015-07-01 09:36 → 2015-07-01 10:24 | 2015-07-02 09:36 → 2015-07-02 10:24 |
| 212 | Review system test case | 2015-07-02 09:36 → 2015-07-02 10:24 | 2015-07-03 09:36 → 2015-07-03 10:24 |
| 213 | Update system test case | 2015-07-03 09:36 → 2015-07-03 10:24 | 2015-07-06 09:36 → 2015-07-06 10:24 |
| 214 | Complete system test case | 2015-07-06 09:36 → 2015-07-06 10:24 | 2015-07-06 09:36 → 2015-07-06 10:24 |
| 215 | **Progress report 3** | 2015-07-06 09:36 → 2015-07-06 10:24 | 2015-07-06 14:36 → 2015-07-06 15:24 |
| 216 | Develop Progress Report 3 | 2015-07-06 09:36 → 2015-07-06 10:24 | 2015-07-06 12:00 → 2015-07-06 13:48 |
| 217 | Review Progress Report 3 | 2015-07-06 13:00 → 2015-07-06 13:48 | 2015-07-06 13:48 → 2015-07-06 14:36 |
| 218 | Update Progress Report 3 | 2015-07-06 13:48 → 2015-07-06 14:36 | 2015-07-06 14:36 → 2015-07-06 15:24 |
| 219 | Complete Progress Report 3 | 2015-07-06 14:36 → 2015-07-06 15:24 | 2015-07-06 14:36 → 2015-07-06 15:24 |
| 220 | Q & A Management (update) | 2015-07-06 14:36 → 2015-07-06 15:24 | 2015-07-07 09:36 → 2015-07-07 10:24 |
| 221 | **Report no.3** | 2015-07-07 09:36 → 2015-07-07 10:24 | 2015-07-09 11:12 → 2015-07-09 12:00 |
| 222 | Develop Report no.3 (draft version) | 2015-07-07 09:36 → 2015-07-07 10:24 | 2015-07-07 11:12 → 2015-07-07 12:00 |
| 223 | Review Report no.3 (draft version) | 2015-07-07 11:12 → 2015-07-07 13:00 | 2015-07-08 11:12 → 2015-07-08 12:00 |
| 224 | Update Report no.3 (draft version) | 2015-07-08 11:12 → 2015-07-08 13:00 | 2015-07-08 16:12 → 2015-07-08 17:00 |
| 225 | Submit Report no.3 (first version) | 2015-07-08 16:12 → 2015-07-08 17:00 | 2015-07-08 16:12 → 2015-07-08 17:00 |
| 226 | Revise after got comments for Report no.3 | 2015-07-08 16:12 → 2015-07-09 08:00 (+1d) | 2015-07-09 11:12 → 2015-07-09 12:00 |
| 227 | Submit Report no.3 (final version) | 2015-07-09 11:12 → 2015-07-09 12:00 | 2015-07-09 11:12 → 2015-07-09 12:00 |
| 228 | **Construction** | 2015-06-18 08:00 → 2015-06-18 08:48 | 2015-08-18 13:48 → 2015-08-18 14:36 |
| 229 | **Code Review checklist** | 2015-07-09 11:12 → 2015-07-09 13:00 | 2015-07-10 17:00 → 2015-07-13 08:48 (+3d) |
| 230 | Develop review checklist | 2015-07-09 11:12 → 2015-07-09 13:00 | 2015-07-10 10:24 → 2015-07-10 11:12 |
| 231 | Review review checklist | 2015-07-10 10:24 → 2015-07-10 11:12 | 2015-07-10 14:36 → 2015-07-10 15:24 |
| 232 | Update review checklist | 2015-07-10 14:36 → 2015-07-10 15:24 | 2015-07-10 17:00 → 2015-07-13 08:48 (+3d) |
| 233 | Complete review checklist | 2015-07-10 17:00 → 2015-07-13 08:48 (+3d) | 2015-07-10 17:00 → 2015-07-13 08:48 (+3d) |
| 234 | **Coding & Unit testing (continue)** | 2015-06-18 08:00 → 2015-06-18 08:48 | 2015-07-22 17:00 → 2015-07-23 08:48 (+1d) |
| 235 | **Bus Rider Module** | 2015-06-18 08:00 → 2015-06-18 08:48 | 2015-07-22 17:00 → 2015-07-23 08:48 (+1d) |
| 236 | **Sync module** | 2015-06-18 08:00 → 2015-06-18 08:48 | 2015-07-07 17:00 → 2015-07-08 08:48 (+1d) |
| 237 | PhoneNumberSync module | 2015-06-18 08:00 → 2015-06-18 08:48 | 2015-06-29 17:00 → 2015-06-30 08:48 (+1d) |
| 238 | Connect Facebook module | 2015-06-30 08:00 → 2015-06-30 08:48 | 2015-07-01 17:00 → 2015-07-02 08:48 (+1d) |
| 239 | Show Favorite place module | 2015-07-02 08:00 → 2015-07-02 08:48 | 2015-07-02 17:00 → 2015-07-03 08:48 (+1d) |
| 240 | Show Favorite bus module | 2015-07-03 08:00 → 2015-07-03 08:48 | 2015-07-03 17:00 → 2015-07-06 08:48 (+3d) |
| 241 | Add/remove Favorite place module | 2015-07-06 08:00 → 2015-07-06 08:48 | 2015-07-06 17:00 → 2015-07-07 08:48 (+1d) |
| 242 | About module | 2015-07-07 08:00 → 2015-07-07 08:48 | 2015-07-07 17:00 → 2015-07-08 08:48 (+1d) |
| 243 | **Bus module** | 2015-06-18 08:00 → 2015-06-18 08:48 | 2015-07-20 17:00 → 2015-07-21 08:48 (+1d) |
| 244 | Bus list module | 2015-06-18 08:00 → 2015-06-18 08:48 | 2015-06-18 17:00 → 2015-06-19 08:48 (+1d) |
| 245 | Bus info module | 2015-06-19 08:00 → 2015-06-19 08:48 | 2015-06-30 17:00 → 2015-07-01 08:48 (+1d) |
| 246 | Bus route module | 2015-07-01 08:00 → 2015-07-01 08:48 | 2015-07-02 17:00 → 2015-07-03 08:48 (+1d) |
| 247 | Bus nearest module | 2015-07-03 08:00 → 2015-07-03 08:48 | 2015-07-07 17:00 → 2015-07-08 08:48 (+1d) |
| 248 | Bus map module | 2015-07-08 08:00 → 2015-07-08 08:48 | 2015-07-09 12:00 → 2015-07-09 13:48 |
| 249 | Set/unset favorite bus module | 2015-07-09 13:00 → 2015-07-09 13:48 | 2015-07-10 12:00 → 2015-07-10 13:48 |
| 250 | Remind module | 2015-07-10 13:00 → 2015-07-10 13:48 | 2015-07-14 17:00 → 2015-07-15 08:48 (+1d) |
| 251 | Track module | 2015-07-15 08:00 → 2015-07-15 08:48 | 2015-07-16 12:00 → 2015-07-16 13:48 |
| 252 | Get notification module | 2015-07-16 13:00 → 2015-07-16 13:48 | 2015-07-20 12:00 → 2015-07-20 13:48 |
| 253 | Swap direction module | 2015-07-20 13:00 → 2015-07-20 13:48 | 2015-07-20 17:00 → 2015-07-21 08:48 (+1d) |
| 254 | **Shigeki module** | 2015-06-18 08:00 → 2015-06-18 08:48 | 2015-07-07 12:00 → 2015-07-07 13:48 |
| 255 | Achievement module | 2015-06-18 08:00 → 2015-06-18 08:48 | 2015-06-19 12:00 → 2015-06-19 13:48 |
| 256 | Collection module | 2015-06-19 13:00 → 2015-06-19 13:48 | 2015-06-29 17:00 → 2015-06-30 08:48 (+1d) |
| 257 | Mission module | 2015-06-30 08:00 → 2015-06-30 08:48 | 2015-07-01 12:00 → 2015-07-01 13:48 |
| 258 | Statistic module | 2015-07-01 13:00 → 2015-07-01 13:48 | 2015-07-02 17:00 → 2015-07-03 08:48 (+1d) |
| 259 | Rank module | 2015-07-03 08:00 → 2015-07-03 08:48 | 2015-07-03 17:00 → 2015-07-06 08:48 (+3d) |
| 260 | Scan QR code module | 2015-07-06 08:00 → 2015-07-06 08:48 | 2015-07-07 12:00 → 2015-07-07 13:48 |
| 261 | **Search module** | 2015-07-08 08:00 → 2015-07-08 08:48 | 2015-07-17 17:00 → 2015-07-20 08:48 (+3d) |
| 262 | Search bus module | 2015-07-08 08:00 → 2015-07-08 08:48 | 2015-07-08 17:00 → 2015-07-09 08:48 (+1d) |
| 263 | Search route module | 2015-07-09 08:00 → 2015-07-09 08:48 | 2015-07-15 17:00 → 2015-07-16 08:48 (+1d) |
| 264 | Search Favorite bus module | 2015-07-16 08:00 → 2015-07-16 08:48 | 2015-07-16 17:00 → 2015-07-17 08:48 (+1d) |
| 265 | Search Favorite place module | 2015-07-17 08:00 → 2015-07-17 08:48 | 2015-07-17 17:00 → 2015-07-20 08:48 (+3d) |
| 266 | Setting module | 2015-07-20 08:00 → 2015-07-20 08:48 | 2015-07-22 17:00 → 2015-07-23 08:48 (+1d) |
| 267 | Web service | 2015-07-07 13:00 → 2015-07-07 13:48 | 2015-07-14 12:00 → 2015-07-14 13:48 |
| 268 | Complete coding | 2015-07-22 17:00 → 2015-07-23 08:48 (+1d) | 2015-07-22 17:00 → 2015-07-23 08:48 (+1d) |
| 269 | Q & A Management (update) | 2015-07-13 08:00 → 2015-07-13 08:48 | 2015-07-13 17:00 → 2015-07-14 08:48 (+1d) |
| 270 | **Progress report 4** | 2015-07-23 08:00 → 2015-07-23 08:48 | 2015-07-23 12:00 → 2015-07-23 13:48 |
| 271 | Develop Progress Report 4 | 2015-07-23 08:00 → 2015-07-23 08:48 | 2015-07-23 10:24 → 2015-07-23 11:12 |
| 272 | Review Progress Report 4 | 2015-07-23 10:24 → 2015-07-23 11:12 | 2015-07-23 11:12 → 2015-07-23 12:00 |
| 273 | Update Progress Report 4 | 2015-07-23 11:12 → 2015-07-23 13:00 | 2015-07-23 12:00 → 2015-07-23 13:48 |
| 274 | Complete Progress Report 4 | 2015-07-23 12:00 → 2015-07-23 13:48 | 2015-07-23 12:00 → 2015-07-23 13:48 |
| 275 | **Report no.4** | 2015-07-23 10:24 → 2015-07-23 11:12 | 2015-08-03 10:24 → 2015-08-03 11:12 |
| 276 | Develop Report no.4 (draft version) | 2015-07-23 10:24 → 2015-07-23 11:12 | 2015-07-24 10:24 → 2015-07-24 11:12 |
| 277 | Review Report no.4 (draft version) | 2015-07-24 10:24 → 2015-07-24 11:12 | 2015-07-28 10:24 → 2015-07-28 11:12 |
| 278 | Update Report no.4 (draft version) | 2015-07-28 10:24 → 2015-07-28 11:12 | 2015-07-30 10:24 → 2015-07-30 11:12 |
| 279 | Submit Report no.4 (first version) | 2015-07-30 10:24 → 2015-07-30 11:12 | 2015-07-30 10:24 → 2015-07-30 11:12 |
| 280 | Revise after got comments for Report no.4 | 2015-07-30 10:24 → 2015-07-30 11:12 | 2015-08-03 10:24 → 2015-08-03 11:12 |

| ID | Task | Start | Finish |
| --- | --- | --- | --- |
| 281 | Submit Report no.4 (final version) | 2015-08-03 10:24 → 2015-08-03 11:12 | 2015-08-03 10:24 → 2015-08-03 11:12 |
| 282 | **Testing** | 2015-06-18 09:36 → 2015-06-18 10:24 | 2015-08-14 16:12 → 2015-08-14 17:00 |
| 283 | **Execute test & fix bugs** | 2015-06-18 09:36 → 2015-06-18 10:24 | 2015-08-14 10:24 → 2015-08-14 11:12 |
| 284 | **Round 1** | 2015-06-18 09:36 → 2015-06-18 10:24 | 2015-08-04 15:24 → 2015-08-04 16:12 |
| 285 | **Execute unit test** | 2015-06-18 09:36 → 2015-06-18 10:24 | 2015-07-23 15:24 → 2015-07-23 16:12 |
| 286 | Bus driver module | 2015-06-18 09:36 → 2015-06-18 10:24 | 2015-06-18 17:00 → 2015-06-19 08:48 (+1d) |
| 287 | Sync module | 2015-07-08 08:00 → 2015-07-08 08:48 | 2015-07-08 15:24 → 2015-07-08 16:12 |
| 288 | Bus module | 2015-07-21 08:00 → 2015-07-21 08:48 | 2015-07-22 17:00 → 2015-07-23 08:48 (+1d) |
| 289 | Shigeki module | 2015-07-07 13:00 → 2015-07-07 13:48 | 2015-07-08 10:24 → 2015-07-08 11:12 |
| 290 | Search module | 2015-07-20 08:00 → 2015-07-20 08:48 | 2015-07-21 17:00 → 2015-07-22 08:48 (+1d) |
| 291 | Setting module | 2015-07-23 08:00 → 2015-07-23 08:48 | 2015-07-23 15:24 → 2015-07-23 16:12 |
| 292 | Fix bugs unit test | 2015-07-23 15:24 → 2015-07-23 16:12 | 2015-07-29 15:24 → 2015-07-29 16:12 |
| 293 | Execute integration test | 2015-07-29 15:24 → 2015-07-29 16:12 | 2015-07-30 15:24 → 2015-07-30 16:12 |
| 294 | Fix bugs integration test | 2015-07-30 15:24 → 2015-07-30 16:12 | 2015-07-31 15:24 → 2015-07-31 16:12 |
| 295 | Execute system test | 2015-07-31 15:24 → 2015-07-31 16:12 | 2015-08-03 15:24 → 2015-08-03 16:12 |
| 296 | Fix bugs system test | 2015-08-03 15:24 → 2015-08-03 16:12 | 2015-08-04 15:24 → 2015-08-04 16:12 |
| 297 | **Round 2** | 2015-08-04 15:24 → 2015-08-04 16:12 | 2015-08-13 10:24 → 2015-08-13 11:12 |
| 298 | **Execute unit test** | 2015-08-04 15:24 → 2015-08-04 16:12 | 2015-08-05 15:24 → 2015-08-05 16:12 |
| 299 | Bus driver module | 2015-08-04 15:24 → 2015-08-04 16:12 | 2015-08-05 10:24 → 2015-08-05 11:12 |
| 300 | Sync module | 2015-08-04 15:24 → 2015-08-04 16:12 | 2015-08-05 11:12 → 2015-08-05 12:00 |
| 301 | Bus module | 2015-08-04 15:24 → 2015-08-04 16:12 | 2015-08-05 15:24 → 2015-08-05 16:12 |
| 302 | Shigeki module | 2015-08-04 15:24 → 2015-08-04 16:12 | 2015-08-05 10:24 → 2015-08-05 11:12 |
| 303 | Search module | 2015-08-04 15:24 → 2015-08-04 16:12 | 2015-08-05 15:24 → 2015-08-05 16:12 |
| 304 | Setting module | 2015-08-04 15:24 → 2015-08-04 16:12 | 2015-08-05 13:48 → 2015-08-05 14:36 |
| 305 | Fix bugs unit test | 2015-08-05 15:24 → 2015-08-05 16:12 | 2015-08-07 15:24 → 2015-08-07 16:12 |
| 306 | Execute integration test | 2015-08-07 15:24 → 2015-08-07 16:12 | 2015-08-10 15:24 → 2015-08-10 16:12 |
| 307 | Fix bugs integration test | 2015-08-10 15:24 → 2015-08-10 16:12 | 2015-08-11 15:24 → 2015-08-11 16:12 |
| 308 | Execute system test | 2015-08-11 15:24 → 2015-08-11 16:12 | 2015-08-12 10:24 → 2015-08-12 11:12 |
| 309 | Fix bugs system test | 2015-08-12 10:24 → 2015-08-12 11:12 | 2015-08-13 10:24 → 2015-08-13 11:12 |
| 310 | Execute acceptance test & collect data | 2015-08-13 10:24 → 2015-08-13 11:12 | 2015-08-14 10:24 → 2015-08-14 11:12 |
| 311 | Complete execute test | 2015-08-14 10:24 → 2015-08-14 11:12 | 2015-08-14 10:24 → 2015-08-14 11:12 |
| 312 | **Test Report** | 2015-08-14 10:24 → 2015-08-14 11:12 | 2015-08-14 16:12 → 2015-08-14 17:00 |
| 313 | Develop test report | 2015-08-14 10:24 → 2015-08-14 11:12 | 2015-08-14 12:00 → 2015-08-14 13:48 |
| 314 | Review test report | 2015-08-14 13:00 → 2015-08-14 13:48 | 2015-08-14 14:36 → 2015-08-14 15:24 |
| 315 | Update test report | 2015-08-14 14:36 → 2015-08-14 15:24 | 2015-08-14 16:12 → 2015-08-14 17:00 |
| 316 | Complete test report | 2015-08-14 16:12 → 2015-08-14 17:00 | 2015-08-14 16:12 → 2015-08-14 17:00 |
| 317 | **Quality report** | 2015-08-14 16:12 → 2015-08-17 08:00 (+3d) | 2015-08-17 13:48 → 2015-08-17 14:36 |
| 318 | Develop quality report | 2015-08-14 16:12 → 2015-08-17 08:00 (+3d) | 2015-08-17 09:36 → 2015-08-17 10:24 |
| 319 | Review quality report | 2015-08-17 09:36 → 2015-08-17 10:24 | 2015-08-17 11:12 → 2015-08-17 12:00 |
| 320 | Update quality report | 2015-08-17 11:12 → 2015-08-17 13:00 | 2015-08-17 13:48 → 2015-08-17 14:36 |
| 321 | Complete quality report | 2015-08-17 13:48 → 2015-08-17 14:36 | 2015-08-17 13:48 → 2015-08-17 14:36 |
| 322 | **Progress report 5** | 2015-08-17 13:48 → 2015-08-17 14:36 | 2015-08-18 08:48 → 2015-08-18 09:36 |
| 323 | Develop Progress Report 5 | 2015-08-17 13:48 → 2015-08-17 14:36 | 2015-08-17 16:12 → 2015-08-17 17:00 |
| 324 | Review Progress Report 5 | 2015-08-17 16:12 → 2015-08-18 08:00 (+1d) | 2015-08-17 17:00 → 2015-08-18 08:48 (+1d) |
| 325 | Update Progress Report 5 | 2015-08-18 08:00 → 2015-08-18 08:48 | 2015-08-18 08:48 → 2015-08-18 09:36 |
| 326 | Complete Progress Report 5 | 2015-08-18 08:48 → 2015-08-18 09:36 | 2015-08-18 08:48 → 2015-08-18 09:36 |
| 327 | **Report no.5** | 2015-08-18 08:48 → 2015-08-18 09:36 | 2015-08-18 13:48 → 2015-08-18 14:36 |
| 328 | Develop Report no.5 (draft version) | 2015-08-18 08:48 → 2015-08-18 09:36 | 2015-08-18 09:36 → 2015-08-18 10:24 |
| 329 | Review Report no.5 (draft version) | 2015-08-18 09:36 → 2015-08-18 10:24 | 2015-08-18 11:12 → 2015-08-18 12:00 |
| 330 | Update Report no.5 (draft version) | 2015-08-18 11:12 → 2015-08-18 13:00 | 2015-08-18 12:00 → 2015-08-18 13:48 |
| 331 | Submit Report no.5 (first version) | 2015-08-18 12:00 → 2015-08-18 13:48 | 2015-08-18 12:00 → 2015-08-18 13:48 |
| 332 | Revise after got comments for Report no.5 | 2015-08-18 13:00 → 2015-08-18 13:48 | 2015-08-18 13:48 → 2015-08-18 14:36 |
| 333 | Submit Report no.5 (final version) | 2015-08-18 13:48 → 2015-08-18 14:36 | 2015-08-18 13:48 → 2015-08-18 14:36 |
| 334 | **Termination** | 2015-08-18 13:48 → 2015-08-18 14:36 | 2015-09-01 14:36 → 2015-09-01 15:24 |
| 335 | **Report no.6** | 2015-08-18 13:48 → 2015-08-18 14:36 | 2015-08-27 14:36 → 2015-08-27 15:24 |
| 336 | Complete source code & final report | 2015-08-18 13:48 → 2015-08-18 14:36 | 2015-08-19 13:48 → 2015-08-19 14:36 |
| 337 | Develop installation guide | 2015-08-19 13:48 → 2015-08-19 14:36 | 2015-08-20 08:48 → 2015-08-20 09:36 |
| 338 | Develop user guideline | 2015-08-20 08:48 → 2015-08-20 09:36 | 2015-08-21 08:48 → 2015-08-21 09:36 |
| 339 | Complete Project Result Assessment | 2015-08-21 08:48 → 2015-08-21 09:36 | 2015-08-24 08:48 → 2015-08-24 09:36 |
| 340 | Conduct lessons learned | 2015-08-24 08:48 → 2015-08-24 09:36 | 2015-08-24 14:36 → 2015-08-24 15:24 |
| 341 | Complete Presentation slide | 2015-08-24 14:36 → 2015-08-24 15:24 | 2015-08-25 14:36 → 2015-08-25 15:24 |
| 342 | Review Report no.6 (draft version) | 2015-08-25 14:36 → 2015-08-25 15:24 | 2015-08-26 14:36 → 2015-08-26 15:24 |
| 343 | Update Report no.6 (draft version) | 2015-08-26 14:36 → 2015-08-26 15:24 | 2015-08-27 09:36 → 2015-08-27 10:24 |
| 344 | Submit Report no.6 (first version) | 2015-08-27 09:36 → 2015-08-27 10:24 | 2015-08-27 09:36 → 2015-08-27 10:24 |
| 345 | Revise after got comments for Report no.6 | 2015-08-27 09:36 → 2015-08-27 10:24 | 2015-08-27 14:36 → 2015-08-27 15:24 |
| 346 | Submit Report no.6 (final version) | 2015-08-27 14:36 → 2015-08-27 15:24 | 2015-08-27 14:36 → 2015-08-27 15:24 |
| 347 | Submit Final report & CD source code | 2015-08-27 14:36 → 2015-08-27 15:24 | 2015-08-27 14:36 → 2015-08-27 15:24 |
| 348 | **Pre-closing** | 2015-08-27 14:36 → 2015-08-27 15:24 | 2015-09-01 09:36 → 2015-09-01 10:24 |
| 349 | Training presentation | 2015-08-27 14:36 → 2015-08-27 15:24 | 2015-09-01 09:36 → 2015-09-01 10:24 |
| 350 | **Closing** | 2015-09-01 09:36 → 2015-09-01 10:24 | 2015-09-01 14:36 → 2015-09-01 15:24 |

| ID | Task | Start | Finish |
| --- | --- | --- | --- |
| 351 | Present Capstone Project & Completed | 2015-09-01 09:36 → 2015-09-01 10:24 | 2015-09-01 14:36 → 2015-09-01 15:24 |
