How a schedule from MS Project changed from version to version. A marks actual dates.

## Version 1 (saved 2015-06-01, file BUSS_Project_Schedule_v1.03_EN.mpp)

Note of the change: update things

| ID | WBS | Task | Duration | Start | Finish | Predecessors | Complete | Total float |
| --- | --- | --- | --- | --- | --- | --- | --- | --- |
| 1 | 1 | **BL** | 76.8d | 2015-05-11 08:00 A | 2015-09-01 15:24 |  | 14% | 0d |
| 2 | 1.1 | **Initiation** | 21.3d | 2015-05-11 08:00 A | 2015-06-09 10:24 |  | 95% | 55.5d |
| 3 |  | System feasible study | 0.3d | 2015-05-11 08:00 A | 2015-05-11 10:24 A |  | 100% |  |
| 4 |  | Define business situation | 0.4d | 2015-05-11 10:24 A | 2015-05-11 14:36 A | 3 | 100% |  |
| 5 |  | Develop project idea | 0.8d | 2015-05-11 14:36 A | 2015-05-12 12:00 A | 4 | 100% |  |
| 6 |  | Define project and system scope | 0.5d | 2015-05-12 13:00 A | 2015-05-12 17:00 A | 5 | 100% |  |
| 7 |  | Prepare project | 1d | 2015-05-13 08:00 A | 2015-05-13 17:00 A | 6 | 100% |  |
| 8 |  | Kick-off meeting | 0.4d | 2015-05-14 08:00 A | 2015-05-14 11:12 A | 7 | 100% |  |
| 9 |  | Q & A Management | 0.5d | 2015-05-14 11:12 A | 2015-05-14 16:12 A | 8 | 100% |  |
| 10 | 1.1.8 | **Technologies** | 17.9d | 2015-05-14 11:12 A | 2015-06-09 10:24 |  | 82% | 55.5d |
| 11 |  | Research development technologies | 2d | 2015-05-14 11:12 A | 2015-05-28 17:00 A | 8 | 100% |  |
| 12 |  | Install and configure Eclipse IDE and Android SDK | 1d | 2015-05-29 08:00 A | 2015-06-02 08:48 A | 11 | 100% |  |
| 13 |  | Training Java, Android SDK & Eclipse IDE | 2d | 2015-06-02 08:48 A | 2015-06-04 08:48 | 12 | 95% | 58.7d |
| 14 |  | Install and configure Visual Studio, SQL Server | 1d | 2015-05-29 08:00 A | 2015-06-04 09:36 | 11 | 50% | 57.85d |
| 15 |  | Study web service | 1.5d | 2015-06-05 15:24 A | 2015-06-09 10:24 | 14 | 50% | 55.5d |
| 16 | 1.1.9 | **SRS/PP/Concept design Review checklist** | 3d | 2015-05-14 16:12 A | 2015-05-19 16:12 A |  | 100% |  |
| 17 |  | Develop review checklist | 2.5d | 2015-05-14 16:12 A | 2015-05-19 11:12 A | 9 | 100% |  |
| 18 |  | Review review checklist | 0.2d | 2015-05-19 11:12 A | 2015-05-19 13:48 A | 17 | 100% |  |
| 19 |  | Update review checklist | 0.3d | 2015-05-19 13:48 A | 2015-05-19 16:12 A | 18 | 100% |  |
| 20 |  | Complete review checklist | 0d | 2015-05-19 16:12 A | 2015-05-19 16:12 A | 19 | 100% |  |
| 21 | 1.1.10 | **Requirements** | 5.2d | 2015-05-14 11:12 A | 2015-05-21 13:48 A |  | 100% |  |
| 22 | 1.1.10.1 | **User Requirements Specification** | 4.5d | 2015-05-14 11:12 A | 2015-05-20 16:12 A |  | 100% |  |
| 23 |  | Collect business requirements and processes | 0.5d | 2015-05-14 11:12 A | 2015-05-14 16:12 A | 8 | 100% |  |
| 24 |  | Create draft requirements | 1d | 2015-05-14 16:12 A | 2015-05-15 16:12 A | 23 | 100% |  |
| 25 |  | Complete draft requirements | 0d | 2015-05-15 16:12 A | 2015-05-15 16:12 A | 24 | 100% |  |
| 26 |  | Develop main function and processes | 1d | 2015-05-19 16:12 A | 2015-05-20 16:12 A | 25 | 100% |  |
| 27 |  | Review User Requirement Specification with checklist | 0.3d | 2015-05-20 16:12 A | 2015-05-21 09:36 A | 26, 20 | 100% |  |
| 28 |  | Update User Requirement Specification | 0.4d | 2015-05-21 09:36 A | 2015-05-21 13:48 A | 27 | 100% |  |
| 29 |  | Complete User Requirement Specification | 0d | 2015-05-21 13:48 A | 2015-05-21 13:48 A | 28 | 100% |  |
| 30 | 1.1.11 | **Concept design** | 3d | 2015-05-15 16:12 A | 2015-05-20 16:12 A |  | 100% |  |
| 31 |  | Create draft concept design | 1.5d | 2015-05-15 16:12 A | 2015-05-19 11:12 A | 25 | 100% |  |
| 32 |  | Review concept design with checklist | 0.5d | 2015-05-19 16:12 A | 2015-05-20 11:12 A | 31, 20 | 100% |  |
| 33 |  | Update concept design | 0.5d | 2015-05-20 11:12 A | 2015-05-20 16:12 A | 32 | 100% |  |
| 34 |  | Complete concept design | 0d | 2015-05-20 16:12 A | 2015-05-20 16:12 A | 33 | 100% |  |
| 35 | 1.1.12 | **Project plan** | 6.4d | 2015-05-14 11:12 A | 2015-05-22 15:24 A |  | 100% |  |
| 36 |  | Develop project definition | 0.7d | 2015-05-14 11:12 A | 2015-05-15 08:48 A | 8 | 100% |  |
| 37 |  | Develop Work Breakdown Structure | 0.9d | 2015-05-15 08:48 A | 2015-05-15 17:00 A | 36 | 100% |  |
| 38 |  | Create Project Schedule | 2d | 2015-05-18 08:00 A | 2015-05-19 17:00 A | 37 | 100% |  |
| 39 |  | Create Configuration Management Plan version 1.0 | 0.8d | 2015-05-20 08:00 A | 2015-05-20 15:24 A | 38 | 100% |  |
| 40 |  | Create Project Plan (first version) | 1.5d | 2015-05-20 15:24 A | 2015-05-22 10:24 A | 39 | 100% |  |
| 41 |  | Review Project Plan (first version) | 0.5d | 2015-05-22 10:24 A | 2015-05-22 15:24 A | 40 | 100% |  |
| 42 |  | Complete Project Plan (final version) | 0d | 2015-05-22 15:24 A | 2015-05-22 15:24 A | 41 | 100% |  |
| 43 | 1.1.13 | **Progress Report 1** | 0.7d | 2015-05-22 10:24 A | 2015-05-22 17:00 A |  | 100% |  |
| 44 |  | Develop Progress Report 1 | 0.4d | 2015-05-22 10:24 A | 2015-05-22 14:36 A | 38 | 100% |  |
| 45 |  | Review Progress Report 1 | 0.2d | 2015-05-22 14:36 A | 2015-05-22 16:12 A | 44 | 100% |  |
| 46 |  | Update Progress Report 1 | 0.1d | 2015-05-22 16:12 A | 2015-05-22 17:00 A | 45 | 100% |  |
| 47 |  | Complete Progress Report 1 | 0d | 2015-05-22 17:00 A | 2015-05-22 17:00 A | 46 | 100% |  |
| 48 |  | Submit PP, URS, Concept Design | 0d | 2015-05-22 17:00 | 2015-05-22 17:00 | 42, 47, 29, 34 |  | 0d |
| 49 | 1.2 | **Solution** | 28.5d | 2015-05-25 08:00 A | 2015-07-09 12:00 |  | 1% | 38.3d |
| 50 | 1.2.1 | **Requirements** | 10.1d | 2015-05-25 08:00 A | 2015-06-08 08:48 |  | 2% | 0d |
| 51 | 1.2.1.1 | **Software Requirements Specification** | 10.1d | 2015-05-25 08:00 A | 2015-06-08 08:48 |  | 2% | 0d |
| 52 | 1.2.1.1.1 | **Functional Requirement Specification** | 5.6d | 2015-05-25 08:00 A | 2015-06-01 13:48 |  | 3% | 0.4d |
| 53 | 1.2.1.1.1.1 | **Bus Driver Module** | 0.6d | 2015-05-25 08:00 A | 2015-05-25 13:48 A |  | 100% |  |
| 54 |  | Send bus info module | 0.6d | 2015-05-25 08:00 A | 2015-05-25 13:48 A | 48 | 100% |  |
| 55 | 1.2.1.1.1.2 | **Bus Rider Module** | 5.6d | 2015-05-25 08:00 | 2015-06-01 13:48 |  |  | 0d |
| 56 | 1.2.1.1.1.2.1 | **Common module** | 4d | 2015-05-25 08:00 | 2015-05-28 17:00 |  |  | 2d |
| 57 |  | Turn on/off Snooze mode | 1d | 2015-05-25 08:00 | 2015-05-25 17:00 | 48 |  | 2d |
| 58 |  | View notification | 0.4d | 2015-05-26 08:00 | 2015-05-26 11:12 | 57 |  | 2d |
| 59 |  | Turn on/off Notification | 0.2d | 2015-05-26 11:12 | 2015-05-26 13:48 | 58 |  | 2d |
| 60 |  | Change app setting | 1.4d | 2015-05-26 13:48 | 2015-05-27 17:00 | 59 |  | 2d |
| 61 |  | View dashboard | 1d | 2015-05-28 08:00 | 2015-05-28 17:00 | 60 |  | 2d |
| 62 | 1.2.1.1.1.2.2 | **Account Management module** | 1.6d | 2015-05-25 08:00 | 2015-05-26 13:48 |  |  | 2.1d |
| 63 |  | Log in | 0.6d | 2015-05-25 08:00 | 2015-05-25 13:48 | 48 |  | 2.1d |
| 64 |  | Log out | 0.3d | 2015-05-25 13:48 | 2015-05-25 16:12 | 63 |  | 2.1d |
| 65 |  | View account profile | 0.2d | 2015-05-25 16:12 | 2015-05-26 08:48 | 64 |  | 2.1d |
| 66 |  | Change account info | 0.2d | 2015-05-26 08:48 | 2015-05-26 10:24 | 65 |  | 2.1d |
| 67 |  | Forgot password | 0.3d | 2015-05-26 10:24 | 2015-05-26 13:48 | 66 |  | 2.1d |
| 68 | 1.2.1.1.1.2.3 | **Bus module** | 4d | 2015-05-25 08:00 | 2015-05-28 17:00 |  |  | 2d |
| 69 |  | View bus list | 0.3d | 2015-05-25 08:00 | 2015-05-25 10:24 | 48 |  | 2d |
| 70 |  | View bus info | 0.3d | 2015-05-25 10:24 | 2015-05-25 13:48 | 69 |  | 2d |

| ID | WBS | Task | Duration | Start | Finish | Predecessors | Total float |
| --- | --- | --- | --- | --- | --- | --- | --- |
| 71 |  | View bus route | 0.6d | 2015-05-25 13:48 | 2015-05-26 09:36 | 70 | 2d |
| 72 |  | View nearest bus | 1d | 2015-05-26 09:36 | 2015-05-27 09:36 | 71 | 2d |
| 73 |  | View bus map | 0.8d | 2015-05-27 09:36 | 2015-05-27 17:00 | 72 | 2d |
| 74 |  | View bus near me | 1d | 2015-05-28 08:00 | 2015-05-28 17:00 | 73 | 2d |
| 75 | 1.2.1.1.1.2.4 | **Path Finder module** | 3.2d | 2015-05-25 13:48 | 2015-05-28 15:24 |  | 0.4d |
| 76 |  | Find path | 1.5d | 2015-05-25 13:48 | 2015-05-27 08:48 | 54 | 0.4d |
| 77 |  | View paths found | 0.4d | 2015-05-27 08:48 | 2015-05-27 12:00 | 76 | 0.4d |
| 78 |  | View path detail | 0.7d | 2015-05-27 13:00 | 2015-05-28 09:36 | 77 | 0.4d |
| 79 |  | View direction | 0.6d | 2015-05-28 09:36 | 2015-05-28 15:24 | 78 | 0.4d |
| 80 | 1.2.1.1.1.2.5 | **Reminder module** | 1.8d | 2015-05-28 15:24 | 2015-06-01 13:48 |  | 0.4d |
| 81 |  | View bus reminder | 0.5d | 2015-05-28 15:24 | 2015-05-29 10:24 | 79 | 0.4d |
| 82 |  | Add reminder | 0.2d | 2015-05-29 10:24 | 2015-05-29 12:00 | 81 | 0.4d |
| 83 |  | Edit reminder | 0.3d | 2015-05-29 13:00 | 2015-05-29 15:24 | 82 | 0.4d |
| 84 |  | Delete reminder | 0.1d | 2015-05-29 15:24 | 2015-05-29 16:12 | 83 | 0.4d |
| 85 |  | Suspend/Unsuspend all reminder | 0.5d | 2015-05-29 16:12 | 2015-06-01 11:12 | 84 | 0.4d |
| 86 |  | Suspend/Unsuspend a chosen reminder | 0.2d | 2015-06-01 11:12 | 2015-06-01 13:48 | 85 | 0.4d |
| 87 | 1.2.1.1.1.2.6 | **Track module** | 1.2d | 2015-05-25 08:00 | 2015-05-26 09:36 |  | 0d |
| 88 |  | Tracking | 1d | 2015-05-25 08:00 | 2015-05-25 17:00 | 48 | 0d |
| 89 |  | Cancel track | 0.2d | 2015-05-26 08:00 | 2015-05-26 09:36 | 88 | 0d |
| 90 | 1.2.1.1.1.2.7 | **Favorite module** | 2.6d | 2015-05-26 09:36 | 2015-05-28 15:24 |  | 0d |
| 91 |  | View favorite places | 0.4d | 2015-05-26 09:36 | 2015-05-26 13:48 | 89 | 0d |
| 92 |  | Add favorite places | 0.2d | 2015-05-26 13:48 | 2015-05-26 15:24 | 91 | 0d |
| 93 |  | Edit favorite places | 0.3d | 2015-05-26 15:24 | 2015-05-27 08:48 | 92 | 0d |
| 94 |  | Delete favorite places | 0.2d | 2015-05-27 08:48 | 2015-05-27 10:24 | 93 | 0d |
| 95 |  | Search favorite places | 0.2d | 2015-05-27 10:24 | 2015-05-27 12:00 | 94 | 0d |
| 96 |  | View favorite buses | 0.4d | 2015-05-27 13:00 | 2015-05-27 16:12 | 95 | 0d |
| 97 |  | Add favorite buses | 0.2d | 2015-05-27 16:12 | 2015-05-28 08:48 | 96 | 0d |
| 98 |  | Edit favorite buses | 0.3d | 2015-05-28 08:48 | 2015-05-28 11:12 | 97 | 0d |
| 99 |  | Delete favorite buses | 0.2d | 2015-05-28 11:12 | 2015-05-28 13:48 | 98 | 0d |
| 100 |  | Search favorite buses | 0.2d | 2015-05-28 13:48 | 2015-05-28 15:24 | 99 | 0d |
| 101 | 1.2.1.1.1.2.8 | **Interactive module** | 2.3d | 2015-05-26 13:48 | 2015-05-28 16:12 |  | 2.1d |
| 102 |  | View Achievement | 0.2d | 2015-05-26 13:48 | 2015-05-26 15:24 | 67 | 2.1d |
| 103 |  | Share Achievement | 0.3d | 2015-05-26 15:24 | 2015-05-27 08:48 | 102 | 2.1d |
| 104 |  | View Collection | 0.2d | 2015-05-27 08:48 | 2015-05-27 10:24 | 103 | 2.1d |
| 105 |  | Share Collection | 0.3d | 2015-05-27 10:24 | 2015-05-27 13:48 | 104 | 2.1d |
| 106 |  | View Mission | 0.2d | 2015-05-27 13:48 | 2015-05-27 15:24 | 105 | 2.1d |
| 107 |  | Share Mission | 0.3d | 2015-05-27 15:24 | 2015-05-28 08:48 | 106 | 2.1d |
| 108 |  | View Statistic | 0.3d | 2015-05-28 08:48 | 2015-05-28 11:12 | 107 | 2.1d |
| 109 |  | Connect Facebook | 0.3d | 2015-05-28 11:12 | 2015-05-28 14:36 | 108 | 2.1d |
| 110 |  | Scan QR code module | 0.2d | 2015-05-28 14:36 | 2015-05-28 16:12 | 109 | 2.1d |
| 111 | 1.2.1.1.2 | **Non-functional Requirement Specification** | 2.2d | 2015-05-28 15:24 | 2015-06-01 17:00 |  | 0d |
| 112 |  | Develop User Interface Requirement | 1.4d | 2015-05-28 15:24 | 2015-06-01 09:36 | 100 | 0d |
| 113 |  | Develop Performance Requirement | 0.8d | 2015-06-01 09:36 | 2015-06-01 17:00 | 112 | 0d |
| 114 |  | Review Software Requirement Specification with checklist | 2d | 2015-06-02 08:00 | 2015-06-03 17:00 | 54, 61, 67, 74, 79, 86, 89, 100, 110, 113 | 0d |
| 115 |  | Update Software Requirement Specification | 2.1d | 2015-06-04 08:00 | 2015-06-08 08:48 | 114 | 0d |
| 116 |  | Complete Software Requirement Specification | 0d | 2015-06-08 08:48 | 2015-06-08 08:48 | 115 | 0d |
| 117 | 1.2.2 | **Design** | 11.9d | 2015-06-01 09:36 | 2015-06-17 08:48 |  | 2.1d |
| 118 | 1.2.2.1 | **Design Review checklist** | 4.6d | 2015-06-01 09:36 | 2015-06-05 15:24 |  | 2.1d |
| 119 |  | Develop review checklist | 2.3d | 2015-06-01 09:36 | 2015-06-05 12:00 | 112 | 2.1d |
| 120 |  | Review review checklist | 0.1d | 2015-06-05 13:00 | 2015-06-05 13:48 | 119 | 2.1d |
| 121 |  | Update review checklist | 0.2d | 2015-06-05 13:48 | 2015-06-05 15:24 | 120 | 2.1d |
| 122 |  | Complete review checklist | 0d | 2015-06-05 15:24 | 2015-06-05 15:24 | 121 | 2.1d |
| 123 | 1.2.2.2 | **Architecture design** | 2.4d | 2015-06-08 08:48 | 2015-06-10 12:00 |  | 0d |
| 124 |  | Define system structure and collect system features | 1d | 2015-06-08 08:48 | 2015-06-09 08:48 | 116 | 0d |
| 125 |  | Study & choose System Architecture | 0.8d | 2015-06-09 08:48 | 2015-06-09 16:12 | 124 | 0d |
| 126 |  | Review Architecture Design with checklist | 0.3d | 2015-06-09 16:12 | 2015-06-10 09:36 | 122, 125 | 0d |
| 127 |  | Update Architecture Design | 0.3d | 2015-06-10 09:36 | 2015-06-10 12:00 | 126 | 0d |
| 128 |  | Complete System Architecture version 1.0 | 0d | 2015-06-10 12:00 | 2015-06-10 12:00 | 127 | 0d |
| 129 | 1.2.2.3 | **Detailed design** | 3.1d | 2015-06-10 13:00 | 2015-06-15 13:48 |  | 1.5d |
| 130 | 1.2.2.3.1 | **User Interface design** | 2.1d | 2015-06-10 13:00 | 2015-06-12 13:48 |  | 1.5d |
| 131 | 1.2.2.3.1.1 | **Bus Driver Module** | 0.4d | 2015-06-10 13:00 | 2015-06-10 16:12 |  | 2.4d |
| 132 |  | Send bus info module | 0.4d | 2015-06-10 13:00 | 2015-06-10 16:12 | 128 | 2.4d |
| 133 | 1.2.2.3.1.2 | **Bus Rider Module** | 2.1d | 2015-06-10 13:00 | 2015-06-12 13:48 |  | 1.5d |
| 134 | 1.2.2.3.1.2.1 | **Sync module** | 0.8d | 2015-06-10 16:12 | 2015-06-11 14:36 |  | 2.4d |
| 135 |  | PhoneNumberSync module | 0.3d | 2015-06-10 16:12 | 2015-06-11 09:36 | 132 | 2.4d |
| 136 |  | Connect Facebook module | 0.1d | 2015-06-11 09:36 | 2015-06-11 10:24 | 135 | 2.4d |
| 137 |  | Show Favorite place module | 0.1d | 2015-06-11 10:24 | 2015-06-11 11:12 | 136 | 2.4d |
| 138 |  | Show Favorite bus module | 0.1d | 2015-06-11 11:12 | 2015-06-11 12:00 | 137 | 2.4d |
| 139 |  | Add/remove Favorite place module | 0.1d | 2015-06-11 13:00 | 2015-06-11 13:48 | 138 | 2.4d |
| 140 |  | About module | 0.1d | 2015-06-11 13:48 | 2015-06-11 14:36 | 139 | 2.4d |

| ID | WBS | Task | Duration | Start | Finish | Predecessors | Total float |
| --- | --- | --- | --- | --- | --- | --- | --- |
| 141 | 1.2.2.3.1.2.2 | **Bus module** | 2.1d | 2015-06-10 13:00 | 2015-06-12 13:48 |  | 1.5d |
| 142 |  | Bus list module | 0.1d | 2015-06-10 13:00 | 2015-06-10 13:48 | 128 | 1.5d |
| 143 |  | Bus info module | 0.3d | 2015-06-10 13:48 | 2015-06-10 16:12 | 142 | 1.5d |
| 144 |  | Bus route module | 0.2d | 2015-06-10 16:12 | 2015-06-11 08:48 | 143 | 1.5d |
| 145 |  | Bus nearest module | 0.3d | 2015-06-11 08:48 | 2015-06-11 11:12 | 144 | 1.5d |
| 146 |  | Bus map module | 0.2d | 2015-06-11 11:12 | 2015-06-11 13:48 | 145 | 1.5d |
| 147 |  | Set/unset favorite bus module | 0.1d | 2015-06-11 13:48 | 2015-06-11 14:36 | 146 | 1.5d |
| 148 |  | Remind module | 0.3d | 2015-06-11 14:36 | 2015-06-11 17:00 | 147 | 1.5d |
| 149 |  | Track module | 0.2d | 2015-06-12 08:00 | 2015-06-12 09:36 | 148 | 1.5d |
| 150 |  | Get notification module | 0.3d | 2015-06-12 09:36 | 2015-06-12 12:00 | 149 | 1.5d |
| 151 |  | Swap direction module | 0.1d | 2015-06-12 13:00 | 2015-06-12 13:48 | 150 | 1.5d |
| 152 | 1.2.2.3.1.2.3 | **Shigeki module** | 1.6d | 2015-06-10 13:00 | 2015-06-12 08:48 |  | 2d |
| 153 |  | Achievement module | 0.3d | 2015-06-10 13:00 | 2015-06-10 15:24 | 128 | 2d |
| 154 |  | Collection module | 0.3d | 2015-06-10 15:24 | 2015-06-11 08:48 | 153 | 2d |
| 155 |  | Mission module | 0.3d | 2015-06-11 08:48 | 2015-06-11 11:12 | 154 | 2d |
| 156 |  | Statistic module | 0.3d | 2015-06-11 11:12 | 2015-06-11 14:36 | 155 | 2d |
| 157 |  | Rank module | 0.1d | 2015-06-11 14:36 | 2015-06-11 15:24 | 156 | 2d |
| 158 |  | Scan QR code module | 0.3d | 2015-06-11 15:24 | 2015-06-12 08:48 | 157 | 2d |
| 159 | 1.2.2.3.1.2.4 | **Search module** | 0.6d | 2015-06-10 13:00 | 2015-06-11 08:48 |  | 2.5d |
| 160 |  | Search bus module | 0.1d | 2015-06-10 13:00 | 2015-06-10 13:48 | 128 | 2.5d |
| 161 |  | Search route module | 0.3d | 2015-06-10 13:48 | 2015-06-10 16:12 | 160 | 2.5d |
| 162 |  | Search Favorite bus module | 0.1d | 2015-06-10 16:12 | 2015-06-10 17:00 | 161 | 2.5d |
| 163 |  | Search Favorite place module | 0.1d | 2015-06-11 08:00 | 2015-06-11 08:48 | 162 | 2.5d |
| 164 |  | Setting module | 0.5d | 2015-06-11 08:48 | 2015-06-11 13:48 | 163 | 2.5d |
| 165 |  | Review Detailed Design with checklist | 1d | 2015-06-12 13:48 | 2015-06-15 13:48 | 122, 132, 140, 151, 158, 164 | 1.5d |
| 166 |  | Update Detailed Design | 0d | 2015-06-15 13:48 | 2015-06-15 13:48 | 165 | 1.5d |
| 167 |  | Complete Detailed Design version 1.0 | 0d | 2015-06-15 13:48 | 2015-06-15 13:48 | 166 | 1.5d |
| 168 | 1.2.2.4 | **Database design** | 1.8d | 2015-06-10 13:00 | 2015-06-12 10:24 |  | 0d |
| 169 |  | Create Databse Design draft version | 1d | 2015-06-10 13:00 | 2015-06-11 12:00 | 128 | 0d |
| 170 |  | Review Database Design with checklist | 0.5d | 2015-06-11 13:00 | 2015-06-11 17:00 | 121, 169 | 0d |
| 171 |  | Update Database Design | 0.3d | 2015-06-12 08:00 | 2015-06-12 10:24 | 170 | 0d |
| 172 |  | Complete Database Design version 1.0 | 0d | 2015-06-12 10:24 | 2015-06-12 10:24 | 171 | 0d |
| 173 | 1.2.2.5 | **Class design** | 2.8d | 2015-06-12 10:24 | 2015-06-17 08:48 |  | 0d |
| 174 |  | Define class/component | 2d | 2015-06-12 10:24 | 2015-06-16 10:24 | 172 | 0d |
| 175 |  | Review Class Design with checklist | 0.5d | 2015-06-16 10:24 | 2015-06-16 15:24 | 174 | 0d |
| 176 |  | Update Class Design | 0.3d | 2015-06-16 15:24 | 2015-06-17 08:48 | 175 | 0d |
| 177 |  | Complete Class Design version 1.0 | 0d | 2015-06-17 08:48 | 2015-06-17 08:48 | 176 | 0d |
| 178 |  | Complete design | 0d | 2015-06-17 08:48 | 2015-06-17 08:48 | 128, 167, 172, 177 | 49.7d |
| 179 | 1.2.3 | **Progress Report 2** | 0.5d | 2015-06-17 08:48 | 2015-06-17 13:48 |  | 49.2d |
| 180 |  | Develop Progress Report 2 | 0.3d | 2015-06-17 08:48 | 2015-06-17 11:12 | 167, 172, 177 | 49.2d |
| 181 |  | Review Progress Report 2 | 0.1d | 2015-06-17 11:12 | 2015-06-17 12:00 | 180 | 49.2d |
| 182 |  | Update Progress Report 2 | 0.1d | 2015-06-17 13:00 | 2015-06-17 13:48 | 181 | 49.2d |
| 183 |  | Complete Progress Report 2 | 0d | 2015-06-17 13:48 | 2015-06-17 13:48 | 182 | 49.2d |
| 184 |  | Submit SRS,AD,DD | 0d | 2015-06-17 08:48 | 2015-06-17 08:48 | 116, 178 | 49.7d |
| 185 | 1.2.5 | **Coding & Unit Testing** | 1d | 2015-06-17 08:48 | 2015-06-18 08:48 |  | 0d |
| 186 | 1.2.5.1 | **Bus Driver Module** | 1d | 2015-06-17 08:48 | 2015-06-18 08:48 |  | 0d |
| 187 |  | Send bus info module | 1d | 2015-06-17 08:48 | 2015-06-18 08:48 | 128, 167, 172, 177 | 0d |
| 188 | 1.2.6 | **Testing** | 12.8d | 2015-06-10 13:00 | 2015-07-06 10:24 |  | 18.6d |
| 189 | 1.2.6.1 | **Test review checklist** | 1d | 2015-06-10 13:00 | 2015-06-11 12:00 |  | 19d |
| 190 | 1.2.6.1.1 | **Test plan review checklist** | 0.6d | 2015-06-10 13:00 | 2015-06-11 08:48 |  | 19d |
| 191 |  | Develop test plan review checklist | 0.3d | 2015-06-10 13:00 | 2015-06-10 15:24 | 128 | 19d |
| 192 |  | Review test plan review checklist | 0.2d | 2015-06-10 15:24 | 2015-06-10 17:00 | 191 | 19d |
| 193 |  | Update test plan review checklist | 0.1d | 2015-06-11 08:00 | 2015-06-11 08:48 | 192 | 19d |
| 194 |  | Complete test plan review checklist | 0d | 2015-06-11 08:48 | 2015-06-11 08:48 | 193 | 19d |
| 195 | 1.2.6.1.2 | **Test case review checklist** | 1d | 2015-06-10 13:00 | 2015-06-11 12:00 |  | 40.5d |
| 196 |  | Develop test case review checklist | 0.5d | 2015-06-10 13:00 | 2015-06-10 17:00 | 128 | 40.5d |
| 197 |  | Review test case review checklist | 0.3d | 2015-06-11 08:00 | 2015-06-11 10:24 | 196 | 40.5d |
| 198 |  | Update test case review checklist | 0.2d | 2015-06-11 10:24 | 2015-06-11 12:00 | 197 | 40.5d |
| 199 |  | Complete test case review checklist | 0d | 2015-06-11 12:00 | 2015-06-11 12:00 | 198 | 40.5d |
| 200 |  | Complete review checklist | 0d | 2015-06-11 12:00 | 2015-06-11 12:00 | 194, 199 | 40.5d |
| 201 | 1.2.6.2 | **Test plan** | 1.8d | 2015-06-10 13:00 | 2015-06-12 10:24 |  | 18.6d |
| 202 |  | Develop test plan | 1d | 2015-06-10 13:00 | 2015-06-11 12:00 | 128 | 18.6d |
| 203 |  | Review test plan | 0.5d | 2015-06-11 13:00 | 2015-06-11 17:00 | 202, 194 | 18.6d |
| 204 |  | Update test plan | 0.3d | 2015-06-12 08:00 | 2015-06-12 10:24 | 203 | 18.6d |
| 205 |  | Complete test plan | 0d | 2015-06-12 10:24 | 2015-06-12 10:24 | 204 | 18.6d |
| 206 | 1.2.6.3 | **Test case** | 11d | 2015-06-12 10:24 | 2015-07-06 10:24 |  | 18.6d |
| 207 | 1.2.6.3.1 | **Unit test** | 4d | 2015-06-12 10:24 | 2015-06-18 10:24 |  | 18.6d |
| 208 | 1.2.6.3.1.1 | **Develop unit test case** | 2d | 2015-06-12 10:24 | 2015-06-16 10:24 |  | 18.6d |
| 209 |  | Bus driver module | 0.5d | 2015-06-12 10:24 | 2015-06-12 15:24 | 205 | 18.6d |
| 210 |  | Sync module | 0.5d | 2015-06-12 15:24 | 2015-06-15 10:24 | 209 | 18.6d |

| ID | WBS | Task | Duration | Start | Finish | Predecessors | Total float |
| --- | --- | --- | --- | --- | --- | --- | --- |
| 211 |  | Bus module | 1d | 2015-06-15 10:24 | 2015-06-16 10:24 | 210 | 18.6d |
| 212 |  | Shigeki module | 0.8d | 2015-06-12 10:24 | 2015-06-15 08:48 | 205 | 18.6d |
| 213 |  | Search module | 0.5d | 2015-06-15 08:48 | 2015-06-15 13:48 | 212 | 18.6d |
| 214 |  | Setting module | 0.7d | 2015-06-15 13:48 | 2015-06-16 10:24 | 213 | 18.6d |
| 215 |  | Review unit test case | 1d | 2015-06-16 10:24 | 2015-06-17 10:24 | 211, 214 | 18.6d |
| 216 |  | Update unit test case | 1d | 2015-06-17 10:24 | 2015-06-18 10:24 | 215 | 18.6d |
| 217 |  | Complete unit test case | 0d | 2015-06-18 10:24 | 2015-06-18 10:24 | 216 | 18.6d |
| 218 | 1.2.6.3.2 | **Integration test** | 4d | 2015-06-18 10:24 | 2015-07-01 10:24 |  | 28.7d |
| 219 |  | Develop integration test case | 2d | 2015-06-18 10:24 | 2015-06-29 10:24 | 217 | 28.7d |
| 220 |  | Review integration test case | 1d | 2015-06-29 10:24 | 2015-06-30 10:24 | 219 | 28.7d |
| 221 |  | Update integration test case | 1d | 2015-06-30 10:24 | 2015-07-01 10:24 | 220 | 28.7d |
| 222 |  | Complete integration test case | 0d | 2015-07-01 10:24 | 2015-07-01 10:24 | 221 | 28.7d |
| 223 | 1.2.6.3.3 | **System test** | 3d | 2015-07-01 10:24 | 2015-07-06 10:24 |  | 28.7d |
| 224 |  | Develop system test case | 1d | 2015-07-01 10:24 | 2015-07-02 10:24 | 222 | 28.7d |
| 225 |  | Review system test case | 1d | 2015-07-02 10:24 | 2015-07-03 10:24 | 224 | 28.7d |
| 226 |  | Update system test case | 1d | 2015-07-03 10:24 | 2015-07-06 10:24 | 225 | 28.7d |
| 227 |  | Complete system test case | 0d | 2015-07-06 10:24 | 2015-07-06 10:24 | 226 | 28.7d |
| 228 | 1.2.7 | **Progress report 3** | 0.5d | 2015-07-06 10:24 | 2015-07-06 15:24 |  | 28.7d |
| 229 |  | Develop Progress Report 3 | 0.3d | 2015-07-06 10:24 | 2015-07-06 13:48 | 200, 217, 222, 227 | 28.7d |
| 230 |  | Review Progress Report 3 | 0.1d | 2015-07-06 13:48 | 2015-07-06 14:36 | 229 | 28.7d |
| 231 |  | Update Progress Report 3 | 0.1d | 2015-07-06 14:36 | 2015-07-06 15:24 | 230 | 28.7d |
| 232 |  | Complete Progress Report 3 | 0d | 2015-07-06 15:24 | 2015-07-06 15:24 | 231 | 28.7d |
| 233 |  | Q & A Management (update) | 0.5d | 2015-07-06 15:24 | 2015-07-07 10:24 | 232 | 28.7d |
| 234 | 1.2.9 | **Report no.3** | 2.2d | 2015-07-07 10:24 | 2015-07-09 12:00 |  | 28.7d |
| 235 |  | Develop Report no.3 (draft version) | 0.2d | 2015-07-07 10:24 | 2015-07-07 12:00 | 205, 217, 222, 227, 233 | 28.7d |
| 236 |  | Review Report no.3 (draft version) | 1d | 2015-07-07 13:00 | 2015-07-08 12:00 | 235 | 28.7d |
| 237 |  | Update Report no.3 (draft version) | 0.5d | 2015-07-08 13:00 | 2015-07-08 17:00 | 236 | 28.7d |
| 238 |  | Submit Report no.3 (first version) | 0d | 2015-07-08 17:00 | 2015-07-08 17:00 | 237 | 28.7d |
| 239 |  | Revise after got comments for Report no.3 | 0.5d | 2015-07-09 08:00 | 2015-07-09 12:00 | 238 | 28.7d |
| 240 |  | Submit Report no.3 (final version) | 0d | 2015-07-09 12:00 | 2015-07-09 12:00 | 239 | 28.7d |
| 241 | 1.3 | **Construction** | 38.6d | 2015-06-18 08:48 | 2015-08-18 14:36 |  | 0d |
| 242 | 1.3.1 | **Code Review checklist** | 1.6d | 2015-07-09 13:00 | 2015-07-13 08:48 |  | 28.7d |
| 243 |  | Develop review checklist | 0.9d | 2015-07-09 13:00 | 2015-07-10 11:12 | 240 | 28.7d |
| 244 |  | Review review checklist | 0.4d | 2015-07-10 11:12 | 2015-07-10 15:24 | 243 | 28.7d |
| 245 |  | Update review checklist | 0.3d | 2015-07-10 15:24 | 2015-07-13 08:48 | 244 | 28.7d |
| 246 |  | Complete review checklist | 0d | 2015-07-13 08:48 | 2015-07-13 08:48 | 245 | 28.7d |
| 247 | 1.3.2 | **Coding & Unit testing (continue)** | 20d | 2015-06-18 08:48 | 2015-07-23 08:48 |  | 0d |
| 248 | 1.3.2.1 | **Bus Rider Module** | 20d | 2015-06-18 08:48 | 2015-07-23 08:48 |  | 0d |
| 249 | 1.3.2.1.1 | **Sync module** | 9d | 2015-06-18 08:48 | 2015-07-08 08:48 |  | 0d |
| 250 |  | PhoneNumberSync module | 3d | 2015-06-18 08:48 | 2015-06-30 08:48 | 187 | 0d |
| 251 |  | Connect Facebook module | 2d | 2015-06-30 08:48 | 2015-07-02 08:48 | 250 | 0d |
| 252 |  | Show Favorite place module | 1d | 2015-07-02 08:48 | 2015-07-03 08:48 | 251 | 0d |
| 253 |  | Show Favorite bus module | 1d | 2015-07-03 08:48 | 2015-07-06 08:48 | 252 | 0d |
| 254 |  | Add/remove Favorite place module | 1d | 2015-07-06 08:48 | 2015-07-07 08:48 | 253 | 0d |
| 255 |  | About module | 1d | 2015-07-07 08:48 | 2015-07-08 08:48 | 254 | 0d |
| 256 | 1.3.2.1.2 | **Bus module** | 18d | 2015-06-18 08:48 | 2015-07-21 08:48 |  | 0.8d |
| 257 |  | Bus list module | 1d | 2015-06-18 08:48 | 2015-06-19 08:48 | 187 | 0.8d |
| 258 |  | Bus info module | 3d | 2015-06-19 08:48 | 2015-07-01 08:48 | 257 | 0.8d |
| 259 |  | Bus route module | 2d | 2015-07-01 08:48 | 2015-07-03 08:48 | 258 | 0.8d |
| 260 |  | Bus nearest module | 3d | 2015-07-03 08:48 | 2015-07-08 08:48 | 259 | 0.8d |
| 261 |  | Bus map module | 1.5d | 2015-07-08 08:48 | 2015-07-09 13:48 | 260 | 0.8d |
| 262 |  | Set/unset favorite bus module | 1d | 2015-07-09 13:48 | 2015-07-10 13:48 | 261 | 0.8d |
| 263 |  | Remind module | 2.5d | 2015-07-10 13:48 | 2015-07-15 08:48 | 262 | 0.8d |
| 264 |  | Track module | 1.5d | 2015-07-15 08:48 | 2015-07-16 13:48 | 263 | 0.8d |
| 265 |  | Get notification module | 2d | 2015-07-16 13:48 | 2015-07-20 13:48 | 264 | 0.8d |
| 266 |  | Swap direction module | 0.5d | 2015-07-20 13:48 | 2015-07-21 08:48 | 265 | 0.8d |
| 267 | 1.3.2.1.3 | **Shigeki module** | 8.5d | 2015-06-18 08:48 | 2015-07-07 13:48 |  | 11.5d |
| 268 |  | Achievement module | 1.5d | 2015-06-18 08:48 | 2015-06-19 13:48 | 187 | 11.5d |
| 269 |  | Collection module | 1.5d | 2015-06-19 13:48 | 2015-06-30 08:48 | 268 | 11.5d |
| 270 |  | Mission module | 1.5d | 2015-06-30 08:48 | 2015-07-01 13:48 | 269 | 11.5d |
| 271 |  | Statistic module | 1.5d | 2015-07-01 13:48 | 2015-07-03 08:48 | 270 | 11.5d |
| 272 |  | Rank module | 1d | 2015-07-03 08:48 | 2015-07-06 08:48 | 271 | 11.5d |
| 273 |  | Scan QR code module | 1.5d | 2015-07-06 08:48 | 2015-07-07 13:48 | 272 | 11.5d |
| 274 | 1.3.2.1.4 | **Search module** | 8d | 2015-07-08 08:48 | 2015-07-20 08:48 |  | 0d |
| 275 |  | Search bus module | 1d | 2015-07-08 08:48 | 2015-07-09 08:48 | 255 | 0d |
| 276 |  | Search route module | 5d | 2015-07-09 08:48 | 2015-07-16 08:48 | 275 | 0d |
| 277 |  | Search Favorite bus module | 1d | 2015-07-16 08:48 | 2015-07-17 08:48 | 276 | 0d |
| 278 |  | Search Favorite place module | 1d | 2015-07-17 08:48 | 2015-07-20 08:48 | 277 | 0d |
| 279 |  | Setting module | 3d | 2015-07-20 08:48 | 2015-07-23 08:48 | 278 | 0d |
| 280 |  | Web service | 5d | 2015-07-07 13:48 | 2015-07-14 13:48 | 273 | 27.9d |

| ID | WBS | Task | Duration | Start | Finish | Predecessors | Total float |
| --- | --- | --- | --- | --- | --- | --- | --- |
| 281 |  | Complete coding | 0d | 2015-07-23 08:48 | 2015-07-23 08:48 | 187, 255, 266, 273, 278, 280, 279 | 21.4d |
| 282 |  | Q & A Management (update) | 1d | 2015-07-13 08:48 | 2015-07-14 08:48 | 246 | 28.7d |
| 283 | 1.3.4 | **Progress report 4** | 0.5d | 2015-07-23 08:48 | 2015-07-23 13:48 |  | 21.4d |
| 284 |  | Develop Progress Report 4 | 0.3d | 2015-07-23 08:48 | 2015-07-23 11:12 | 246, 281 | 21.4d |
| 285 |  | Review Progress Report 4 | 0.1d | 2015-07-23 11:12 | 2015-07-23 12:00 | 284 | 28.2d |
| 286 |  | Update Progress Report 4 | 0.1d | 2015-07-23 13:00 | 2015-07-23 13:48 | 285 | 28.2d |
| 287 |  | Complete Progress Report 4 | 0d | 2015-07-23 13:48 | 2015-07-23 13:48 | 286 | 28.2d |
| 288 | 1.3.5 | **Report no.4** | 7d | 2015-07-23 11:12 | 2015-08-03 11:12 |  | 21.4d |
| 289 |  | Develop Report no.4 (draft version) | 1d | 2015-07-23 11:12 | 2015-07-24 11:12 | 246, 281, 282, 284 | 21.4d |
| 290 |  | Review Report no.4 (draft version) | 2d | 2015-07-24 11:12 | 2015-07-28 11:12 | 289 | 21.4d |
| 291 |  | Update Report no.4 (draft version) | 2d | 2015-07-28 11:12 | 2015-07-30 11:12 | 290 | 21.4d |
| 292 |  | Submit Report no.4 (first version) | 0d | 2015-07-30 11:12 | 2015-07-30 11:12 | 291 | 21.4d |
| 293 |  | Revise after got comments for Report no.4 | 2d | 2015-07-30 11:12 | 2015-08-03 11:12 | 292 | 21.4d |
| 294 |  | Submit Report no.4 (final version) | 0d | 2015-08-03 11:12 | 2015-08-03 11:12 | 293 | 21.4d |
| 295 | 1.3.6 | **Testing** | 36.7d | 2015-06-18 10:24 | 2015-08-14 17:00 |  | 0d |
| 296 | 1.3.6.1 | **Execute test & fix bugs** | 36.1d | 2015-06-18 10:24 | 2015-08-14 11:12 |  | 0d |
| 297 | 1.3.6.1.1 | **Round 1** | 28.6d | 2015-06-18 10:24 | 2015-08-04 16:12 |  | 0d |
| 298 | 1.3.6.1.1.1 | **Execute unit test** | 20.6d | 2015-06-18 10:24 | 2015-07-23 16:12 |  | 0d |
| 299 |  | Bus driver module | 0.8d | 2015-06-18 10:24 | 2015-06-19 08:48 | 187, 217 | 19.8d |
| 300 |  | Sync module | 0.8d | 2015-07-08 08:48 | 2015-07-08 16:12 | 217, 255 | 11d |
| 301 |  | Bus module | 2d | 2015-07-21 08:48 | 2015-07-23 08:48 | 217, 266 | 0.8d |
| 302 |  | Shigeki module | 0.8d | 2015-07-07 13:48 | 2015-07-08 11:12 | 217, 273 | 11.5d |
| 303 |  | Search module | 2d | 2015-07-20 08:48 | 2015-07-22 08:48 | 217, 278 | 1.8d |
| 304 |  | Setting module | 0.8d | 2015-07-23 08:48 | 2015-07-23 16:12 | 217, 279 | 0d |
| 305 |  | Fix bugs unit test | 4d | 2015-07-23 16:12 | 2015-07-29 16:12 | 299, 300, 301, 302, 303, 304 | 0d |
| 306 |  | Execute integration test | 1d | 2015-07-29 16:12 | 2015-07-30 16:12 | 305 | 0d |
| 307 |  | Fix bugs integration test | 1d | 2015-07-30 16:12 | 2015-07-31 16:12 | 306 | 0d |
| 308 |  | Execute system test | 1d | 2015-07-31 16:12 | 2015-08-03 16:12 | 307 | 0d |
| 309 |  | Fix bugs system test | 1d | 2015-08-03 16:12 | 2015-08-04 16:12 | 308 | 0d |
| 310 | 1.3.6.1.2 | **Round 2** | 6.5d | 2015-08-04 16:12 | 2015-08-13 11:12 |  | 0d |
| 311 | 1.3.6.1.2.1 | **Execute unit test** | 1d | 2015-08-04 16:12 | 2015-08-05 16:12 |  | 0d |
| 312 |  | Bus driver module | 0.5d | 2015-08-04 16:12 | 2015-08-05 11:12 | 309 | 0.5d |
| 313 |  | Sync module | 0.6d | 2015-08-04 16:12 | 2015-08-05 12:00 | 309 | 0.4d |
| 314 |  | Bus module | 1d | 2015-08-04 16:12 | 2015-08-05 16:12 | 309 | 0d |
| 315 |  | Shigeki module | 0.5d | 2015-08-04 16:12 | 2015-08-05 11:12 | 309 | 0.5d |
| 316 |  | Search module | 1d | 2015-08-04 16:12 | 2015-08-05 16:12 | 309 | 0d |
| 317 |  | Setting module | 0.8d | 2015-08-04 16:12 | 2015-08-05 14:36 | 309 | 0.2d |
| 318 |  | Fix bugs unit test | 2d | 2015-08-05 16:12 | 2015-08-07 16:12 | 312, 313, 314, 315, 316, 317 | 0d |
| 319 |  | Execute integration test | 1d | 2015-08-07 16:12 | 2015-08-10 16:12 | 318 | 0d |
| 320 |  | Fix bugs integration test | 1d | 2015-08-10 16:12 | 2015-08-11 16:12 | 319 | 0d |
| 321 |  | Execute system test | 0.5d | 2015-08-11 16:12 | 2015-08-12 11:12 | 320 | 0d |
| 322 |  | Fix bugs system test | 1d | 2015-08-12 11:12 | 2015-08-13 11:12 | 321 | 0d |
| 323 |  | Execute acceptance test & collect data | 1d | 2015-08-13 11:12 | 2015-08-14 11:12 | 322 | 0d |
| 324 |  | Complete execute test | 0d | 2015-08-14 11:12 | 2015-08-14 11:12 | 323 | 0d |
| 325 | 1.3.6.3 | **Test Report** | 0.6d | 2015-08-14 11:12 | 2015-08-14 17:00 |  | 0d |
| 326 |  | Develop test report | 0.2d | 2015-08-14 11:12 | 2015-08-14 13:48 | 324 | 0d |
| 327 |  | Review test report | 0.2d | 2015-08-14 13:48 | 2015-08-14 15:24 | 326 | 0d |
| 328 |  | Update test report | 0.2d | 2015-08-14 15:24 | 2015-08-14 17:00 | 327 | 0d |
| 329 |  | Complete test report | 0d | 2015-08-14 17:00 | 2015-08-14 17:00 | 328 | 0d |
| 330 | 1.3.7 | **Quality report** | 0.7d | 2015-08-17 08:00 | 2015-08-17 14:36 |  | 0d |
| 331 |  | Develop quality report | 0.3d | 2015-08-17 08:00 | 2015-08-17 10:24 | 329 | 0d |
| 332 |  | Review quality report | 0.2d | 2015-08-17 10:24 | 2015-08-17 12:00 | 331 | 0d |
| 333 |  | Update quality report | 0.2d | 2015-08-17 13:00 | 2015-08-17 14:36 | 332 | 0d |
| 334 |  | Complete quality report | 0d | 2015-08-17 14:36 | 2015-08-17 14:36 | 333 | 0d |
| 335 | 1.3.8 | **Progress report 5** | 0.5d | 2015-08-17 14:36 | 2015-08-18 09:36 |  | 0d |
| 336 |  | Develop Progress Report 5 | 0.3d | 2015-08-17 14:36 | 2015-08-17 17:00 | 334 | 0d |
| 337 |  | Review Progress Report 5 | 0.1d | 2015-08-18 08:00 | 2015-08-18 08:48 | 336 | 0d |
| 338 |  | Update Progress Report 5 | 0.1d | 2015-08-18 08:48 | 2015-08-18 09:36 | 337 | 0d |
| 339 |  | Complete Progress Report 5 | 0d | 2015-08-18 09:36 | 2015-08-18 09:36 | 338 | 0d |
| 340 | 1.3.9 | **Report no.5** | 0.5d | 2015-08-18 09:36 | 2015-08-18 14:36 |  | 0d |
| 341 |  | Develop Report no.5 (draft version) | 0.1d | 2015-08-18 09:36 | 2015-08-18 10:24 | 329, 334, 339 | 0d |
| 342 |  | Review Report no.5 (draft version) | 0.2d | 2015-08-18 10:24 | 2015-08-18 12:00 | 341 | 0d |
| 343 |  | Update Report no.5 (draft version) | 0.1d | 2015-08-18 13:00 | 2015-08-18 13:48 | 342 | 0d |
| 344 |  | Submit Report no.5 (first version) | 0d | 2015-08-18 13:48 | 2015-08-18 13:48 | 343 | 0d |
| 345 |  | Revise after got comments for Report no.5 | 0.1d | 2015-08-18 13:48 | 2015-08-18 14:36 | 344 | 0d |
| 346 |  | Submit Report no.5 (final version) | 0d | 2015-08-18 14:36 | 2015-08-18 14:36 | 345 | 0d |
| 347 | 1.4 | **Termination** | 10.1d | 2015-08-18 14:36 | 2015-09-01 15:24 |  | 0d |
| 348 | 1.4.1 | **Report no.6** | 7.1d | 2015-08-18 14:36 | 2015-08-27 15:24 |  | 0d |
| 349 |  | Complete source code & final report | 1d | 2015-08-18 14:36 | 2015-08-19 14:36 | 346 | 0d |
| 350 |  | Develop installation guide | 0.5d | 2015-08-19 14:36 | 2015-08-20 09:36 | 349 | 0d |

| ID | WBS | Task | Duration | Start | Finish | Predecessors | Total float |
| --- | --- | --- | --- | --- | --- | --- | --- |
| 351 |  | Develop user guideline | 1d | 2015-08-20 09:36 | 2015-08-21 09:36 | 350 | 0d |
| 352 |  | Complete Project Result Assessment | 1d | 2015-08-21 09:36 | 2015-08-24 09:36 | 351 | 0d |
| 353 |  | Conduct lessons learned | 0.6d | 2015-08-24 09:36 | 2015-08-24 15:24 | 352 | 0d |
| 354 |  | Complete Presentation slide | 1d | 2015-08-24 15:24 | 2015-08-25 15:24 | 353 | 0d |
| 355 |  | Review Report no.6 (draft version) | 1d | 2015-08-25 15:24 | 2015-08-26 15:24 | 354 | 0d |
| 356 |  | Update Report no.6 (draft version) | 0.5d | 2015-08-26 15:24 | 2015-08-27 10:24 | 355 | 0d |
| 357 |  | Submit Report no.6 (first version) | 0d | 2015-08-27 10:24 | 2015-08-27 10:24 | 356 | 0d |
| 358 |  | Revise after got comments for Report no.6 | 0.5d | 2015-08-27 10:24 | 2015-08-27 15:24 | 357 | 0d |
| 359 |  | Submit Report no.6 (final version) | 0d | 2015-08-27 15:24 | 2015-08-27 15:24 | 358 | 0d |
| 360 |  | Submit Final report & CD source code | 0d | 2015-08-27 15:24 | 2015-08-27 15:24 | 359 | 0d |
| 361 | 1.4.2 | **Pre-closing** | 2.5d | 2015-08-27 15:24 | 2015-09-01 10:24 |  | 0d |
| 362 |  | Training presentation | 2.5d | 2015-08-27 15:24 | 2015-09-01 10:24 | 360 | 0d |
| 363 | 1.4.3 | **Closing** | 0.5d | 2015-09-01 10:24 | 2015-09-01 15:24 |  | 0d |
| 364 |  | Present Capstone Project & Completed | 0.5d | 2015-09-01 10:24 | 2015-09-01 15:24 | 362 | 0d |

## Version 2 (saved 2015-06-26, file BUSS_Project_Schedule_v1.05 _EN.mpp)

Note of the change: update things

Last finish stays 2015-09-01. Complete tasks 36 → 86.

Added:

| ID | Task | Duration | Start | Finish | Predecessors | Resources |
| --- | --- | --- | --- | --- | --- | --- |
| 122 | Change app setting | 1.4d | 2015-06-18 10:24 | 2015-06-19 14:36 | 115 | NamNT |
| 123 | **Account Management module** | 3.4d | 2015-06-17 08:00 | 2015-06-29 11:12 |  |  |
| 124 | Log in | 0.6d | 2015-06-17 08:00 | 2015-06-17 13:48 | 115 | NamNT |
| 125 | Log out | 0.3d | 2015-06-17 13:48 | 2015-06-17 16:12 | 124 | NamNT |
| 126 | View account profile | 0.2d | 2015-06-17 16:12 | 2015-06-18 08:48 | 125 | NamNT |
| 127 | Change account info | 0.2d | 2015-06-18 08:48 | 2015-06-18 10:24 | 126 | NamNT |
| 128 | Forgot password | 0.3d | 2015-06-29 08:48 | 2015-06-29 11:12 | 127 | NamNT |
| 130 | View bus list | 0.3d | 2015-06-10 13:00 | 2015-06-10 15:24 | 115 | MaiTTT |
| 131 | View bus info | 0.3d | 2015-06-10 15:24 | 2015-06-11 08:48 | 130 | MaiTTT |
| 132 | View bus route | 0.6d | 2015-06-11 08:48 | 2015-06-11 14:36 | 131 | MaiTTT |
| 133 | View nearest bus | 1d | 2015-06-11 14:36 | 2015-06-12 14:36 | 132 | MaiTTT |
| 134 | View bus map | 0.8d | 2015-06-12 14:36 | 2015-06-15 12:00 | 133 | MaiTTT |
| 135 | View bus near me | 1d | 2015-06-15 15:24 | 2015-06-17 12:00 | 134 | MaiTTT |
| 136 | **Path Finder module** | 4.2d | 2015-06-10 13:00 | 2015-06-16 14:36 |  |  |
| 137 | Find path | 1.5d | 2015-06-10 13:00 | 2015-06-11 17:00 | 115 | NamNT |
| 138 | View paths found | 0.4d | 2015-06-12 08:00 | 2015-06-12 11:12 | 137 | NamNT |
| 139 | View path detail | 0.7d | 2015-06-12 11:12 | 2015-06-15 08:48 | 138 | NamNT |
| 140 | View direction | 0.6d | 2015-06-16 08:48 | 2015-06-16 14:36 | 139 | NamNT |
| 141 | **Reminder module** | 1.8d | 2015-06-16 14:36 | 2015-06-18 12:00 |  |  |
| 142 | View bus reminder | 0.5d | 2015-06-16 14:36 | 2015-06-17 09:36 | 140 | AnhTT |
| 143 | Add reminder | 0.2d | 2015-06-17 09:36 | 2015-06-17 11:12 | 142 | AnhTT |
| 144 | Edit reminder | 0.3d | 2015-06-17 11:12 | 2015-06-17 14:36 | 143 | AnhTT |
| 145 | Delete reminder | 0.1d | 2015-06-17 14:36 | 2015-06-17 15:24 | 144 | AnhTT |
| 146 | Suspend/Unsuspend all reminder | 0.5d | 2015-06-17 15:24 | 2015-06-18 10:24 | 145 | AnhTT |
| 147 | Suspend/Unsuspend a chosen reminder | 0.2d | 2015-06-18 10:24 | 2015-06-18 12:00 | 146 | AnhTT |
| 148 | **Track module** | 1.2d | 2015-06-10 13:00 | 2015-06-11 14:36 |  |  |
| 149 | Tracking | 1d | 2015-06-10 13:00 | 2015-06-11 12:00 | 115 | PhuongBB |
| 150 | Cancel track | 0.2d | 2015-06-11 13:00 | 2015-06-11 14:36 | 149 | PhuongBB |
| 151 | **Favorite module** | 2.6d | 2015-06-11 14:36 | 2015-06-16 10:24 |  |  |
| 152 | View favorite places | 0.4d | 2015-06-11 14:36 | 2015-06-12 08:48 | 150 | PhuongBB |
| 153 | Add favorite places | 0.2d | 2015-06-12 08:48 | 2015-06-12 10:24 | 152 | PhuongBB |
| 154 | Edit favorite places | 0.3d | 2015-06-12 10:24 | 2015-06-12 13:48 | 153 | PhuongBB |
| 155 | Delete favorite places | 0.2d | 2015-06-12 13:48 | 2015-06-12 15:24 | 154 | PhuongBB |
| 156 | Search favorite places | 0.2d | 2015-06-12 15:24 | 2015-06-12 17:00 | 155 | PhuongBB |
| 157 | View favorite buses | 0.4d | 2015-06-15 10:24 | 2015-06-15 14:36 | 156 | PhuongBB |
| 158 | Add favorite buses | 0.2d | 2015-06-15 14:36 | 2015-06-15 16:12 | 157 | PhuongBB |
| 159 | Delete favorite buses | 0.2d | 2015-06-15 16:12 | 2015-06-16 08:48 | 158 | PhuongBB |
| 160 | Search favorite buses | 0.2d | 2015-06-16 08:48 | 2015-06-16 10:24 | 159 | PhuongBB |
| 244 | **Common module** | 1.4d | 2015-07-07 16:12 | 2015-07-09 10:24 |  |  |
| 245 | Change app setting | 1.4d | 2015-07-07 16:12 | 2015-07-09 10:24 | 180 | NamNT |
| 246 | **Account Management module** | 3.5d | 2015-07-02 14:36 | 2015-07-08 09:36 |  |  |
| 247 | Log in | 0.6d | 2015-07-02 14:36 | 2015-07-06 09:36 | 180 | AnhTT |
| 248 | Log out | 0.3d | 2015-07-06 09:36 | 2015-07-06 12:00 | 247 | AnhTT |
| 249 | View account profile | 0.2d | 2015-07-07 13:00 | 2015-07-07 14:36 | 248 | AnhTT |
| 250 | Change account info | 0.2d | 2015-07-07 14:36 | 2015-07-07 16:12 | 249 | AnhTT |
| 251 | Forgot password | 0.3d | 2015-07-07 16:12 | 2015-07-08 09:36 | 250 | AnhTT |
| 253 | View bus list | 0.3d | 2015-07-02 14:36 | 2015-07-02 17:00 | 180 | AnhTT |
| 254 | View bus info | 0.3d | 2015-07-03 08:00 | 2015-07-03 10:24 | 253 | AnhTT |
| 255 | View bus route | 0.6d | 2015-07-03 10:24 | 2015-07-03 16:12 | 254 | AnhTT |
| 256 | View nearest bus | 1d | 2015-07-06 13:00 | 2015-07-07 12:00 | 255 | AnhTT |
| 257 | View bus map | 0.8d | 2015-07-08 09:36 | 2015-07-08 17:00 | 256 | AnhTT |
| 258 | View bus near me | 1d | 2015-07-09 14:36 | 2015-07-10 14:36 | 257 | AnhTT |
| 259 | **Path Finder module** | 3.2d | 2015-07-02 14:36 | 2015-07-07 16:12 |  |  |
| 260 | Find path | 1.5d | 2015-07-02 14:36 | 2015-07-06 09:36 | 180 | NamNT |
| 261 | View paths found | 0.4d | 2015-07-06 09:36 | 2015-07-06 13:48 | 260 | NamNT |
| 262 | View path detail | 0.7d | 2015-07-06 13:48 | 2015-07-07 10:24 | 261 | NamNT |
| 263 | View direction | 0.6d | 2015-07-07 10:24 | 2015-07-07 16:12 | 262 | NamNT |
| 264 | **Reminder module** | 1.8d | 2015-07-07 16:12 | 2015-07-09 14:36 |  |  |
| 265 | View bus reminder | 0.5d | 2015-07-07 16:12 | 2015-07-08 11:12 | 263 | MaiTTT |
| 266 | Add reminder | 0.2d | 2015-07-08 11:12 | 2015-07-08 13:48 | 265 | MaiTTT |
| 267 | Edit reminder | 0.3d | 2015-07-08 13:48 | 2015-07-08 16:12 | 266 | MaiTTT |
| 268 | Delete reminder | 0.1d | 2015-07-08 16:12 | 2015-07-08 17:00 | 267 | MaiTTT |
| 269 | Suspend/Unsuspend all reminder | 0.5d | 2015-07-09 08:00 | 2015-07-09 12:00 | 268 | MaiTTT |
| 270 | Suspend/Unsuspend a chosen reminder | 0.2d | 2015-07-09 13:00 | 2015-07-09 14:36 | 269 | MaiTTT |
| 271 | **Track module** | 1.2d | 2015-07-09 10:24 | 2015-07-10 12:00 |  |  |
| 272 | Tracking | 1d | 2015-07-09 10:24 | 2015-07-10 10:24 | 180 | NamNT |
| 273 | Cancel track | 0.2d | 2015-07-10 10:24 | 2015-07-10 12:00 | 272 | NamNT |
| 274 | **Favorite module** | 2.3d | 2015-07-10 14:36 | 2015-07-14 17:00 |  |  |
| 275 | View favorite places | 0.4d | 2015-07-10 14:36 | 2015-07-13 08:48 | 273 | AnhTT |
| 276 | Add favorite places | 0.2d | 2015-07-13 08:48 | 2015-07-13 10:24 | 275 | AnhTT |
| 277 | Edit favorite places | 0.3d | 2015-07-13 10:24 | 2015-07-13 13:48 | 276 | AnhTT |
| 278 | Delete favorite places | 0.2d | 2015-07-13 13:48 | 2015-07-13 15:24 | 277 | AnhTT |
| 279 | Search favorite places | 0.2d | 2015-07-13 15:24 | 2015-07-13 17:00 | 278 | AnhTT |
| 280 | View favorite buses | 0.4d | 2015-07-14 08:00 | 2015-07-14 11:12 | 279 | AnhTT |
| 281 | Add favorite buses | 0.2d | 2015-07-14 11:12 | 2015-07-14 13:48 | 280 | AnhTT |
| 282 | Delete favorite buses | 0.2d | 2015-07-14 13:48 | 2015-07-14 15:24 | 281 | AnhTT |
| 283 | Search favorite buses | 0.2d | 2015-07-14 15:24 | 2015-07-14 17:00 | 282 | AnhTT |
| 304 | Account Management module | 2d | 2015-07-08 11:12 | 2015-07-10 11:12 | 213, 251 | PhuongBB |
| 307 | Reminder module | 0.5d | 2015-07-16 15:24 | 2015-07-17 10:24 | 213, 270 | PhuongBB |
| 319 | Account Management module | 1d | 2015-07-29 10:24 | 2015-07-30 10:24 | 314 | PhuongBB |
| 322 | Reminder module | 0.3d | 2015-08-05 15:24 | 2015-08-06 08:48 | 314 | PhuongBB |

Removed: 58 View notification; 59 Turn on/off Notification; 98 Edit favorite buses; 101 Interactive module; 102 View Achievement; 103 Share Achievement; 104 View Collection; 106 View Mission; 107 Share Mission; 108 View Statistic; 109 Connect Facebook; 110 Scan QR code module; 134 Sync module; 135 PhoneNumberSync module; 136 Connect Facebook module; 137 Show Favorite place module; 138 Show Favorite bus module; 139 Add/remove Favorite place module; 140 About module; 142 Bus list module; 143 Bus info module; 144 Bus route module; 145 Bus nearest module; 146 Bus map module; 147 Set/unset favorite bus module; 148 Remind module; 150 Get notification module; 151 Swap direction module; 152 Shigeki module; 153 Achievement module; 154 Collection module; 155 Mission module; 156 Statistic module; 157 Rank module; 158 Scan QR code module; 159 Search module; 160 Search bus module; 161 Search route module; 162 Search Favorite bus module; 163 Search Favorite place module; 164 Setting module; 233 Q & A Management (update); 249 Sync module; 250 PhoneNumberSync module; 251 Connect Facebook module; 252 Show Favorite place module; 253 Show Favorite bus module; 254 Add/remove Favorite place module; 255 About module; 257 Bus list module; 258 Bus info module; 259 Bus route module; 260 Bus nearest module; 261 Bus map module; 262 Set/unset favorite bus module; 263 Remind module; 265 Get notification module; 266 Swap direction module; 267 Shigeki module; 268 Achievement module; 269 Collection module; 270 Mission module; 271 Statistic module; 272 Rank module; 273 Scan QR code module; 274 Search module; 275 Search bus module; 276 Search route module; 277 Search Favorite bus module; 278 Search Favorite place module; 279 Setting module; 282 Q & A Management (update); 302 Shigeki module; 315 Shigeki module

Changed:

| ID | Task | Start | Finish | Duration | Complete | Total float | Predecessors | Other |
| --- | --- | --- | --- | --- | --- | --- | --- | --- |
| 1 | **BL** |  | 2015-09-01 15:24 → 2015-09-01 11:12 | 76.8d → 76.4d | 14% → 31% |  |  |  |
| 3 | System feasible study |  |  |  |  |  |  | resources NamNT; MaiTTT; PhuongBB; CuongNLT; AnhTT → NamNT; MaiTTT; PhuongBB; AnhTT |
| 4 | Define business situation |  |  |  |  |  |  | resources NamNT; MaiTTT; PhuongBB; CuongNLT; AnhTT → NamNT; MaiTTT; PhuongBB; AnhTT |
| 5 | Develop project idea |  |  |  |  |  |  | resources NamNT; MaiTTT; PhuongBB; CuongNLT; AnhTT → NamNT; MaiTTT; PhuongBB; AnhTT |
| 6 | Define project and system scope |  |  |  |  |  |  | resources NamNT; MaiTTT; PhuongBB; CuongNLT; AnhTT → NamNT; MaiTTT; PhuongBB; AnhTT |
| 7 | Prepare project |  |  |  |  |  |  | resources NamNT; MaiTTT; PhuongBB; CuongNLT; AnhTT → NamNT; MaiTTT; PhuongBB; AnhTT |
| 8 | Kick-off meeting |  |  |  |  |  |  | resources NamNT; MaiTTT; PhuongBB; CuongNLT; AnhTT → NamNT; MaiTTT; PhuongBB; AnhTT |
| 10 | **Technologies** |  |  |  | 82% → 79% | 55.5d → 55.1d |  |  |
| 11 | Research development technologies |  |  | 2d → 1.3d |  |  |  | resources CuongNLT; NamNT; AnhTT → NamNT; AnhTT |
| 12 | Install and configure Eclipse IDE and Android SDK |  |  | 1d → 0.6d |  |  |  | resources CuongNLT; NamNT; AnhTT → NamNT; AnhTT |
| 13 | Training Java, Android SDK & Eclipse IDE |  |  |  |  | 58.7d → 58.3d |  | resources CuongNLT; AnhTT → AnhTT |
| 31 | Create draft concept design |  |  | 1.5d → 1d |  |  |  | resources CuongNLT; AnhTT → AnhTT |
| 33 | Update concept design |  |  |  |  |  |  | resources CuongNLT → AnhTT |
| 36 | Develop project definition |  |  |  |  |  |  | resources CuongNLT → none |
| 48 | Submit PP, URS, Concept Design | 2015-05-22 17:00 A | 2015-05-22 17:00 A |  | 0% → 100% | 0d → none |  |  |
| 49 | **Solution** |  | 2015-07-09 12:00 → 2015-08-12 10:24 (+34d) | 28.5d → 52.3d | 1% → 40% | 38.3d → 14.1d |  |  |
| 50 | **Requirements** |  | 2015-06-08 08:48 A |  | 2% → 100% | 0d → none |  |  |
| 51 | **Software Requirements Specification** |  | 2015-06-08 08:48 A |  | 2% → 100% | 0d → none |  |  |
| 52 | **Functional Requirement Specification** |  | 2015-06-01 13:48 A |  | 3% → 100% | 0.4d → none |  |  |
| 55 | **Bus Rider Module** | 2015-05-25 08:00 A | 2015-06-01 13:48 A |  | 0% → 100% | 0d → none |  |  |
| 56 | **Common module** | 2015-05-25 08:00 A | 2015-05-28 17:00 → 2015-06-01 09:36 A (+4d) | 4d → 5.2d | 0% → 100% | 2d → none |  |  |
| 57 | Turn on/off Snooze mode | 2015-05-25 08:00 A | 2015-05-25 17:00 A |  | 0% → 100% | 2d → none |  | resources CuongNLT → NamNT |
| 58 | Change app setting | 2015-05-26 13:48 A | 2015-05-27 17:00 A |  | 0% → 100% | 2d → none | Turn on/off Notification → 57 | resources CuongNLT → NamNT |
| 59 | View dashboard | 2015-05-28 08:00 → 2015-05-29 09:36 A (+1d) | 2015-05-28 17:00 → 2015-06-01 09:36 A (+4d) |  | 0% → 100% | 2d → none |  | resources CuongNLT → NamNT |
| 60 | **Account Management module** | 2015-05-25 08:00 → 2015-05-26 08:00 A (+1d) | 2015-05-26 13:48 → 2015-05-29 09:36 A (+3d) | 1.6d → 3.2d | 0% → 100% | 2.1d → none |  |  |
| 61 | Log in | 2015-05-25 08:00 → 2015-05-26 08:00 A (+1d) | 2015-05-25 13:48 → 2015-05-26 13:48 A (+1d) |  | 0% → 100% | 2.1d → none |  |  |
| 62 | Log out | 2015-05-25 13:48 → 2015-05-28 08:00 A (+3d) | 2015-05-25 16:12 → 2015-05-28 10:24 A (+3d) |  | 0% → 100% | 2.1d → none |  |  |
| 63 | View account profile | 2015-05-25 16:12 → 2015-05-28 10:24 A (+3d) | 2015-05-26 08:48 → 2015-05-28 12:00 A (+2d) |  | 0% → 100% | 2.1d → none |  |  |
| 64 | Change account info | 2015-05-26 08:48 → 2015-05-28 13:00 A (+2d) | 2015-05-26 10:24 → 2015-05-28 14:36 A (+2d) |  | 0% → 100% | 2.1d → none |  |  |
| 65 | Forgot password | 2015-05-26 10:24 → 2015-05-28 14:36 A (+2d) | 2015-05-26 13:48 → 2015-05-29 09:36 A (+3d) |  | 0% → 100% | 2.1d → none |  |  |
| 66 | **Bus module** | 2015-05-25 08:00 A | 2015-05-28 17:00 A |  | 0% → 100% | 2d → none |  |  |
| 67 | View bus list | 2015-05-25 08:00 A | 2015-05-25 10:24 A |  | 0% → 100% | 2d → none |  |  |
| 68 | View bus info | 2015-05-25 10:24 A | 2015-05-25 13:48 A |  | 0% → 100% | 2d → none |  |  |
| 69 | View bus route | 2015-05-25 13:48 A | 2015-05-26 09:36 A |  | 0% → 100% | 2d → none |  |  |
| 70 | View nearest bus | 2015-05-26 09:36 A | 2015-05-27 09:36 A |  | 0% → 100% | 2d → none |  |  |
| 71 | View bus map | 2015-05-27 09:36 A | 2015-05-27 17:00 A |  | 0% → 100% | 2d → none |  |  |
| 72 | View bus near me | 2015-05-28 08:00 A | 2015-05-28 17:00 A |  | 0% → 100% | 2d → none |  |  |
| 73 | **Path Finder module** | 2015-05-25 13:48 A | 2015-05-28 15:24 A |  | 0% → 100% | 0.4d → none |  |  |
| 74 | Find path | 2015-05-25 13:48 A | 2015-05-27 08:48 A |  | 0% → 100% | 0.4d → none |  |  |
| 75 | View paths found | 2015-05-27 08:48 A | 2015-05-27 12:00 A |  | 0% → 100% | 0.4d → none |  |  |
| 76 | View path detail | 2015-05-27 13:00 A | 2015-05-28 09:36 A |  | 0% → 100% | 0.4d → none |  |  |
| 77 | View direction | 2015-05-28 09:36 A | 2015-05-28 15:24 A |  | 0% → 100% | 0.4d → none |  |  |
| 78 | **Reminder module** | 2015-05-28 15:24 A | 2015-06-01 13:48 A |  | 0% → 100% | 0.4d → none |  |  |
| 79 | View bus reminder | 2015-05-28 15:24 A | 2015-05-29 10:24 A |  | 0% → 100% | 0.4d → none |  |  |
| 80 | Add reminder | 2015-05-29 10:24 A | 2015-05-29 12:00 A |  | 0% → 100% | 0.4d → none |  |  |
| 81 | Edit reminder | 2015-05-29 13:00 A | 2015-05-29 15:24 A |  | 0% → 100% | 0.4d → none |  |  |
| 82 | Delete reminder | 2015-05-29 15:24 A | 2015-05-29 16:12 A |  | 0% → 100% | 0.4d → none |  |  |
| 83 | Suspend/Unsuspend all reminder | 2015-05-29 16:12 A | 2015-06-01 11:12 A |  | 0% → 100% | 0.4d → none |  |  |
| 84 | Suspend/Unsuspend a chosen reminder | 2015-06-01 11:12 A | 2015-06-01 13:48 A |  | 0% → 100% | 0.4d → none |  |  |
| 85 | **Track module** | 2015-05-25 08:00 A | 2015-05-26 09:36 A |  | 0% → 100% | 0d → none |  |  |
| 86 | Tracking | 2015-05-25 08:00 A | 2015-05-25 17:00 A |  | 0% → 100% | 0d → none |  |  |
| 87 | Cancel track | 2015-05-26 08:00 A | 2015-05-26 09:36 A |  | 0% → 100% | 0d → none |  |  |
| 88 | **Favorite module** | 2015-05-26 09:36 A | 2015-05-28 15:24 → 2015-05-28 12:00 A | 2.6d → 2.3d | 0% → 100% | 0d → none |  |  |
| 89 | View favorite places | 2015-05-26 09:36 A | 2015-05-26 13:48 A |  | 0% → 100% | 0d → none |  |  |
| 90 | Add favorite places | 2015-05-26 13:48 A | 2015-05-26 15:24 A |  | 0% → 100% | 0d → none |  |  |
| 91 | Edit favorite places | 2015-05-26 15:24 A | 2015-05-27 08:48 A |  | 0% → 100% | 0d → none |  |  |
| 92 | Delete favorite places | 2015-05-27 08:48 A | 2015-05-27 10:24 A |  | 0% → 100% | 0d → none |  |  |
| 93 | Search favorite places | 2015-05-27 10:24 A | 2015-05-27 12:00 A |  | 0% → 100% | 0d → none |  |  |
| 94 | View favorite buses | 2015-05-27 13:00 A | 2015-05-27 16:12 A |  | 0% → 100% | 0d → none |  |  |
| 95 | Add favorite buses | 2015-05-27 16:12 A | 2015-05-28 08:48 A |  | 0% → 100% | 0d → none |  |  |
| 96 | Delete favorite buses | 2015-05-28 11:12 → 2015-05-28 08:48 A | 2015-05-28 13:48 → 2015-05-28 10:24 A |  | 0% → 100% | 0d → none | Edit favorite buses → 95 |  |
| 97 | Search favorite buses | 2015-05-28 13:48 → 2015-05-28 10:24 A | 2015-05-28 15:24 → 2015-05-28 12:00 A |  | 0% → 100% | 0d → none |  |  |
| 98 | **Non-functional Requirement Specification** | 2015-05-28 15:24 → 2015-05-28 13:00 A | 2015-06-01 17:00 A | 2.2d → 2.5d | 0% → 100% | 0d → none |  |  |
| 99 | Develop User Interface Requirement | 2015-05-28 15:24 → 2015-05-28 13:00 A | 2015-06-01 09:36 → 2015-05-29 16:12 A (-3d) |  | 0% → 100% | 0d → none |  |  |
| 100 | Develop Performance Requirement | 2015-06-01 09:36 A | 2015-06-01 17:00 A |  | 0% → 100% | 0d → none |  | resources CuongNLT → NamNT |
| 101 | Review Software Requirement Specification with checklist | 2015-06-02 08:00 A | 2015-06-03 17:00 A |  | 0% → 100% | 0d → none | 54, 59, 65, 72, 77, 84, 87, 97, Scan QR code module, 100 → 54, 59, 65, 72, 77, 84, 87, 97, 100 |  |
| 102 | Update Software Requirement Specification | 2015-06-04 08:00 A | 2015-06-08 08:48 A |  | 0% → 100% | 0d → none |  | resources CuongNLT; AnhTT; NamNT → AnhTT; NamNT |
| 103 | Complete Software Requirement Specification | 2015-06-08 08:48 A | 2015-06-08 08:48 A |  | 0% → 100% | 0d → none |  |  |
| 104 | **Design** | 2015-06-01 09:36 → 2015-05-29 16:12 A (-3d) | 2015-06-17 08:48 → 2015-07-02 14:36 (+15d) | 11.9d → 18.8d | 0% → 19% | 2.1d → 0.1d |  |  |
| 105 | **Design Review checklist** | 2015-06-01 09:36 → 2015-05-29 16:12 A (-3d) | 2015-06-05 15:24 → 2015-06-05 12:00 A |  | 0% → 100% | 2.1d → none |  |  |

| ID | Task | Start | Finish | Duration | Complete | Total float | Predecessors | Other |
| --- | --- | --- | --- | --- | --- | --- | --- | --- |
| 106 | Develop review checklist | 2015-06-01 09:36 → 2015-05-29 16:12 A (-3d) | 2015-06-05 12:00 → 2015-06-05 09:36 A |  | 0% → 100% | 2.1d → none |  |  |
| 107 | Review review checklist | 2015-06-05 13:00 → 2015-06-05 09:36 A | 2015-06-05 13:48 → 2015-06-05 10:24 A |  | 0% → 100% | 2.1d → none |  |  |
| 108 | Update review checklist | 2015-06-05 13:48 → 2015-06-05 10:24 A | 2015-06-05 15:24 → 2015-06-05 12:00 A |  | 0% → 100% | 2.1d → none |  |  |
| 109 | Complete review checklist | 2015-06-05 15:24 → 2015-06-05 12:00 A | 2015-06-05 15:24 → 2015-06-05 12:00 A |  | 0% → 100% | 2.1d → none |  |  |
| 110 | **Architecture design** | 2015-06-08 08:48 A | 2015-06-10 12:00 A |  | 0% → 100% | 0d → none |  |  |
| 111 | Define system structure and collect system features | 2015-06-08 08:48 A | 2015-06-09 08:48 A |  | 0% → 100% | 0d → none |  | resources NamNT; CuongNLT → NamNT |
| 112 | Study & choose System Architecture | 2015-06-09 08:48 A | 2015-06-09 16:12 A |  | 0% → 100% | 0d → none |  | resources NamNT; CuongNLT → NamNT |
| 113 | Review Architecture Design with checklist | 2015-06-09 16:12 A | 2015-06-10 09:36 A |  | 0% → 100% | 0d → none |  |  |
| 114 | Update Architecture Design | 2015-06-10 09:36 A | 2015-06-10 12:00 A |  | 0% → 100% | 0d → none |  | resources NamNT; CuongNLT → NamNT |
| 115 | Complete System Architecture version 1.0 | 2015-06-10 12:00 A | 2015-06-10 12:00 A |  | 0% → 100% | 0d → none |  |  |
| 116 | **Detailed design** |  | 2015-06-15 13:48 → 2015-07-02 11:12 (+17d) | 3.1d → 10.9d |  | 1.5d → 0.4d |  |  |
| 117 | **User Interface design** |  | 2015-06-12 13:48 → 2015-06-29 11:12 (+17d) | 2.1d → 7.9d |  | 1.5d → 0.6d |  |  |
| 118 | **Bus Driver Module** | 2015-06-10 13:00 → 2015-06-19 14:36 (+9d) | 2015-06-10 16:12 → 2015-06-29 08:48 (+19d) |  |  | 2.4d → 0.9d |  |  |
| 119 | Send bus info module | 2015-06-10 13:00 → 2015-06-19 14:36 (+9d) | 2015-06-10 16:12 → 2015-06-29 08:48 (+19d) |  |  | 2.4d → 0.9d |  | resources none → NamNT |
| 120 | **Bus Rider Module** |  | 2015-06-12 13:48 → 2015-06-29 11:12 (+17d) | 2.1d → 7.9d |  | 1.5d → 0.6d |  |  |
| 121 | **Common module** | 2015-05-27 10:24 → 2015-06-18 10:24 (+22d) | 2015-05-27 13:48 → 2015-06-19 14:36 (+23d) | 0.3d → 1.4d |  | 2.1d → 1.3d | View Collection → none | was named Share Collection; resources NamNT → none |
| 129 | **Bus module** |  | 2015-06-12 13:48 → 2015-06-17 12:00 (+5d) | 2.1d → 5d |  | 1.5d → 3.5d |  |  |
| 161 | Review Detailed Design with checklist | 2015-06-12 13:48 → 2015-06-29 11:12 (+17d) | 2015-06-15 13:48 → 2015-06-30 11:12 (+15d) |  |  | 1.5d → 0.6d | 109, 119, About module, Swap direction module, Scan QR code module, Setting module → 109, 119, 122, 128, 135, 140, 147, 150, 160 | resources none → PhuongBB; MaiTTT |
| 162 | Update Detailed Design | 2015-06-15 13:48 → 2015-07-01 16:12 (+16d) | 2015-06-15 13:48 → 2015-07-02 11:12 (+17d) | 0d → 0.5d |  | 1.5d → 0.4d |  | resources none → NamNT |
| 163 | Complete Detailed Design version 1.0 | 2015-06-15 13:48 → 2015-07-02 11:12 (+17d) | 2015-06-15 13:48 → 2015-07-02 11:12 (+17d) |  |  | 1.5d → 0.4d |  | resources none → NamNT |
| 164 | **Database design** | 2015-06-10 13:00 → 2015-06-15 08:48 (+5d) | 2015-06-12 10:24 → 2015-06-16 17:00 (+4d) | 1.8d → 1.9d |  | 0d → 1d |  |  |
| 165 | Create Databse Design draft version | 2015-06-10 13:00 → 2015-06-15 08:48 (+5d) | 2015-06-11 12:00 → 2015-06-16 08:48 (+5d) |  |  | 0d → 1d |  | resources none → NamNT |
| 166 | Review Database Design with checklist | 2015-06-11 13:00 → 2015-06-16 08:48 (+5d) | 2015-06-11 17:00 → 2015-06-16 13:48 (+5d) |  |  | 0d → 1d |  | resources none → MaiTTT |
| 167 | Update Database Design | 2015-06-12 08:00 → 2015-06-16 14:36 (+4d) | 2015-06-12 10:24 → 2015-06-16 17:00 (+4d) |  |  | 0d → 1d |  | resources none → NamNT |
| 168 | Complete Database Design version 1.0 | 2015-06-12 10:24 → 2015-06-16 17:00 (+4d) | 2015-06-12 10:24 → 2015-06-16 17:00 (+4d) |  |  | 0d → 1d |  | resources none → NamNT |
| 169 | **Class design** | 2015-06-12 10:24 → 2015-06-29 16:12 (+17d) | 2015-06-17 08:48 → 2015-07-02 14:36 (+15d) |  |  | 0d → 0.1d |  |  |
| 170 | Define class/component | 2015-06-12 10:24 → 2015-06-29 16:12 (+17d) | 2015-06-16 10:24 → 2015-07-01 16:12 (+15d) |  |  | 0d → 0.1d |  | resources none → NamNT |
| 171 | Review Class Design with checklist | 2015-06-16 10:24 → 2015-07-01 16:12 (+15d) | 2015-06-16 15:24 → 2015-07-02 11:12 (+16d) |  |  | 0d → 0.1d |  | resources none → MaiTTT |
| 172 | Update Class Design | 2015-06-16 15:24 → 2015-07-02 11:12 (+16d) | 2015-06-17 08:48 → 2015-07-02 14:36 (+15d) |  |  | 0d → 0.1d |  | resources none → NamNT |
| 173 | Complete Class Design version 1.0 | 2015-06-17 08:48 → 2015-07-02 14:36 (+15d) | 2015-06-17 08:48 → 2015-07-02 14:36 (+15d) |  |  | 0d → 0.1d |  | resources none → NamNT |
| 174 | Complete design | 2015-06-17 08:48 → 2015-07-02 14:36 (+15d) | 2015-06-17 08:48 → 2015-07-02 14:36 (+15d) |  |  | 49.7d → 0.1d |  | resources none → NamNT |
| 175 | **Progress Report 2** | 2015-06-17 08:48 → 2015-07-10 10:24 (+23d) | 2015-06-17 13:48 → 2015-07-10 15:24 (+23d) |  |  | 49.2d → 36.6d |  |  |
| 176 | Develop Progress Report 2 | 2015-06-17 08:48 → 2015-07-10 10:24 (+23d) | 2015-06-17 11:12 → 2015-07-10 13:48 (+23d) |  |  | 49.2d → 36.6d |  | resources none → NamNT |
| 177 | Review Progress Report 2 | 2015-06-17 11:12 → 2015-07-10 13:48 (+23d) | 2015-06-17 12:00 → 2015-07-10 14:36 (+23d) |  |  | 49.2d → 36.6d |  | resources none → MaiTTT |
| 178 | Update Progress Report 2 | 2015-06-17 13:00 → 2015-07-10 14:36 (+23d) | 2015-06-17 13:48 → 2015-07-10 15:24 (+23d) |  |  | 49.2d → 36.6d |  | resources none → NamNT |
| 179 | Complete Progress Report 2 | 2015-06-17 13:48 → 2015-07-10 15:24 (+23d) | 2015-06-17 13:48 → 2015-07-10 15:24 (+23d) |  |  | 49.2d → 36.6d |  | resources none → NamNT |
| 180 | Submit SRS,AD,DD | 2015-06-17 08:48 → 2015-07-02 14:36 (+15d) | 2015-06-17 08:48 → 2015-07-02 14:36 (+15d) |  |  | 49.7d → 0.1d |  | resources none → NamNT |
| 181 | **Coding & Unit Testing** | 2015-06-17 08:48 → 2015-07-02 14:36 (+15d) | 2015-06-18 08:48 → 2015-07-09 14:36 (+21d) | 1d → 5d |  | 0d → 4.3d |  |  |
| 182 | **Bus Driver Module** | 2015-06-17 08:48 → 2015-07-02 14:36 (+15d) | 2015-06-18 08:48 → 2015-07-09 14:36 (+21d) | 1d → 5d |  | 0d → 4.3d |  |  |
| 183 | Send bus info module | 2015-06-17 08:48 → 2015-07-02 14:36 (+15d) | 2015-06-18 08:48 → 2015-07-09 14:36 (+21d) |  |  | 0d → 4.3d |  | resources none → AnhTT |
| 184 | **Testing** | 2015-06-10 13:00 → 2015-06-15 08:00 (+5d) | 2015-07-06 10:24 → 2015-08-05 10:24 (+30d) | 12.8d → 32.3d |  | 18.6d → 1.2d |  |  |
| 185 | **Test review checklist** | 2015-06-10 13:00 → 2015-06-15 08:00 (+5d) | 2015-06-11 12:00 → 2015-06-19 13:48 (+8d) | 1d → 4.6d |  | 19d → 1.2d |  |  |
| 186 | **Test plan review checklist** | 2015-06-10 13:00 → 2015-06-15 08:00 (+5d) | 2015-06-11 08:48 → 2015-06-18 08:48 (+7d) | 0.6d → 3.1d |  | 19d → 1.2d |  |  |
| 187 | Develop test plan review checklist | 2015-06-10 13:00 → 2015-06-15 08:00 (+5d) | 2015-06-10 15:24 → 2015-06-15 15:24 (+5d) | 0.3d → 0.6d |  | 19d → 1.2d |  | resources none → MaiTTT; PhuongBB |
| 188 | Review test plan review checklist | 2015-06-10 15:24 → 2015-06-16 08:48 (+6d) | 2015-06-10 17:00 → 2015-06-16 17:00 (+6d) | 0.2d → 0.4d |  | 19d → 1.3d |  | resources none → MaiTTT; PhuongBB |
| 189 | Update test plan review checklist | 2015-06-11 08:00 → 2015-06-17 08:00 (+6d) | 2015-06-11 08:48 → 2015-06-18 08:48 (+7d) | 0.1d → 0.2d |  | 19d → 1.3d |  | resources none → MaiTTT; PhuongBB |
| 190 | Complete test plan review checklist | 2015-06-11 08:48 → 2015-06-18 08:48 (+7d) | 2015-06-11 08:48 → 2015-06-18 08:48 (+7d) |  |  | 19d → 1.3d |  | resources none → MaiTTT; PhuongBB |
| 191 | **Test case review checklist** | 2015-06-10 13:00 → 2015-06-16 08:48 (+6d) | 2015-06-11 12:00 → 2015-06-19 13:48 (+8d) | 1d → 3.5d |  | 40.5d → 45.4d |  |  |
| 192 | Develop test case review checklist | 2015-06-10 13:00 → 2015-06-16 08:48 (+6d) | 2015-06-10 17:00 → 2015-06-17 17:00 (+7d) | 0.5d → 1d |  | 40.5d → 45.4d |  | resources none → MaiTTT; PhuongBB |
| 193 | Review test case review checklist | 2015-06-11 08:00 → 2015-06-18 08:00 (+7d) | 2015-06-11 10:24 → 2015-06-18 11:12 (+7d) | 0.3d → 0.4d |  | 40.5d → 45.4d |  | resources none → MaiTTT; PhuongBB |
| 194 | Update test case review checklist | 2015-06-11 10:24 → 2015-06-18 11:12 (+7d) | 2015-06-11 12:00 → 2015-06-19 13:48 (+8d) | 0.2d → 0.4d |  | 40.5d → 45.4d |  | resources none → MaiTTT; PhuongBB |
| 195 | Complete test case review checklist | 2015-06-11 12:00 → 2015-06-19 13:48 (+8d) | 2015-06-11 12:00 → 2015-06-19 13:48 (+8d) |  |  | 40.5d → 45.4d |  | resources none → MaiTTT; PhuongBB |
| 196 | Complete review checklist | 2015-06-11 12:00 → 2015-06-19 13:48 (+8d) | 2015-06-11 12:00 → 2015-06-19 13:48 (+8d) |  |  | 40.5d → 45.4d |  | resources none → MaiTTT; PhuongBB |
| 197 | **Test plan** | 2015-06-10 13:00 → 2015-06-18 11:12 (+8d) | 2015-06-12 10:24 → 2015-06-30 09:36 (+18d) | 1.8d → 2.8d |  | 18.6d → 0d |  |  |
| 198 | Develop test plan | 2015-06-10 13:00 → 2015-06-18 11:12 (+8d) | 2015-06-11 12:00 → 2015-06-19 11:12 (+8d) |  |  | 18.6d → 0d |  | resources none → MaiTTT |
| 199 | Review test plan | 2015-06-11 13:00 → 2015-06-29 11:12 (+18d) | 2015-06-11 17:00 → 2015-06-29 16:12 (+18d) |  |  | 18.6d → 0d |  | resources none → NamNT |
| 200 | Update test plan | 2015-06-12 08:00 → 2015-06-29 16:12 (+17d) | 2015-06-12 10:24 → 2015-06-30 09:36 (+18d) |  |  | 18.6d → 0d |  | resources none → MaiTTT |
| 201 | Complete test plan | 2015-06-12 10:24 → 2015-06-30 09:36 (+18d) | 2015-06-12 10:24 → 2015-06-30 09:36 (+18d) |  |  | 18.6d → 0d |  | resources none → MaiTTT |
| 202 | **Test case** | 2015-06-12 10:24 → 2015-06-30 11:12 (+18d) | 2015-07-06 10:24 → 2015-08-05 10:24 (+30d) | 11d → 25.9d |  | 18.6d → 0d |  |  |
| 203 | **Unit test** | 2015-06-12 10:24 → 2015-06-30 11:12 (+18d) | 2015-06-18 10:24 → 2015-07-08 11:12 (+20d) | 4d → 6d |  | 18.6d → 0d |  |  |
| 204 | **Develop unit test case** | 2015-06-12 10:24 → 2015-06-30 11:12 (+18d) | 2015-06-16 10:24 → 2015-07-06 11:12 (+20d) | 2d → 4d |  | 18.6d → 0d |  |  |
| 205 | Bus driver module | 2015-06-12 10:24 → 2015-06-30 11:12 (+18d) | 2015-06-12 15:24 → 2015-06-30 16:12 (+18d) |  |  | 18.6d → 0.8d |  | resources none → PhuongBB |
| 206 | Sync module | 2015-06-12 15:24 → 2015-07-01 14:36 (+19d) | 2015-06-15 10:24 → 2015-07-02 09:36 (+17d) |  |  | 18.6d → 0.8d |  | resources none → PhuongBB |
| 207 | Bus module | 2015-06-15 10:24 → 2015-07-02 14:36 (+17d) | 2015-06-16 10:24 → 2015-07-03 14:36 (+17d) |  |  | 18.6d → 0.7d |  | resources none → PhuongBB |
| 208 | Shigeki module | 2015-06-12 10:24 → 2015-06-30 16:12 (+18d) | 2015-06-15 08:48 → 2015-07-01 14:36 (+16d) |  |  | 18.6d → 0d |  | resources none → PhuongBB |
| 209 | Search module | 2015-06-15 08:48 → 2015-07-02 09:36 (+17d) | 2015-06-15 13:48 → 2015-07-02 14:36 (+17d) |  |  | 18.6d → 0d |  | resources none → PhuongBB |
| 210 | Setting module | 2015-06-15 13:48 → 2015-07-03 14:36 (+18d) | 2015-06-16 10:24 → 2015-07-06 11:12 (+20d) |  |  | 18.6d → 0d |  | resources none → PhuongBB |
| 211 | Review unit test case | 2015-06-16 10:24 → 2015-07-06 11:12 (+20d) | 2015-06-17 10:24 → 2015-07-07 11:12 (+20d) |  |  | 18.6d → 0d |  | resources none → MaiTTT |
| 212 | Update unit test case | 2015-06-17 10:24 → 2015-07-07 11:12 (+20d) | 2015-06-18 10:24 → 2015-07-08 11:12 (+20d) |  |  | 18.6d → 0d |  | resources none → PhuongBB |
| 213 | Complete unit test case | 2015-06-18 10:24 → 2015-07-08 11:12 (+20d) | 2015-06-18 10:24 → 2015-07-08 11:12 (+20d) |  |  | 18.6d → 0d |  | resources none → MaiTTT |

| ID | Task | Start | Finish | Duration | Total float | Predecessors | Other |
| --- | --- | --- | --- | --- | --- | --- | --- |
| 214 | **Integration test** | 2015-06-18 10:24 → 2015-07-17 10:24 (+29d) | 2015-07-01 10:24 → 2015-07-27 10:24 (+26d) | 4d → 6d | 28.7d → 0d |  |  |
| 215 | Develop integration test case | 2015-06-18 10:24 → 2015-07-17 10:24 (+29d) | 2015-06-29 10:24 → 2015-07-21 10:24 (+22d) |  | 28.7d → 0d |  | resources none → PhuongBB |
| 216 | Review integration test case | 2015-06-29 10:24 → 2015-07-23 10:24 (+24d) | 2015-06-30 10:24 → 2015-07-24 10:24 (+24d) |  | 28.7d → 0d |  | resources none → MaiTTT |
| 217 | Update integration test case | 2015-06-30 10:24 → 2015-07-24 10:24 (+24d) | 2015-07-01 10:24 → 2015-07-27 10:24 (+26d) |  | 28.7d → 0d |  | resources none → PhuongBB |
| 218 | Complete integration test case | 2015-07-01 10:24 → 2015-07-27 10:24 (+26d) | 2015-07-01 10:24 → 2015-07-27 10:24 (+26d) |  | 28.7d → 0d |  | resources none → MaiTTT |
| 219 | **System test** | 2015-07-01 10:24 → 2015-07-28 10:24 (+27d) | 2015-07-06 10:24 → 2015-08-05 10:24 (+30d) | 3d → 6d | 28.7d → 0d |  |  |
| 220 | Develop system test case | 2015-07-01 10:24 → 2015-07-28 10:24 (+27d) | 2015-07-02 10:24 → 2015-07-29 10:24 (+27d) |  | 28.7d → 0d |  | resources none → PhuongBB |
| 221 | Review system test case | 2015-07-02 10:24 → 2015-07-29 10:24 (+27d) | 2015-07-03 10:24 → 2015-07-30 10:24 (+27d) |  | 28.7d → 0d |  | resources none → MaiTTT |
| 222 | Update system test case | 2015-07-03 10:24 → 2015-08-04 10:24 (+32d) | 2015-07-06 10:24 → 2015-08-05 10:24 (+30d) |  | 28.7d → 0d |  | resources none → PhuongBB |
| 223 | Complete system test case | 2015-07-06 10:24 → 2015-08-05 10:24 (+30d) | 2015-07-06 10:24 → 2015-08-05 10:24 (+30d) |  | 28.7d → 0d |  | resources none → MaiTTT |
| 224 | **Progress report 3** | 2015-07-06 10:24 → 2015-08-06 10:24 (+31d) | 2015-07-06 15:24 → 2015-08-06 15:24 (+31d) |  | 28.7d → 17.6d |  |  |
| 225 | Develop Progress Report 3 | 2015-07-06 10:24 → 2015-08-06 10:24 (+31d) | 2015-07-06 13:48 → 2015-08-06 13:48 (+31d) |  | 28.7d → 17.6d |  | resources none → NamNT |
| 226 | Review Progress Report 3 | 2015-07-06 13:48 → 2015-08-06 13:48 (+31d) | 2015-07-06 14:36 → 2015-08-06 14:36 (+31d) |  | 28.7d → 17.6d |  | resources none → MaiTTT |
| 227 | Update Progress Report 3 | 2015-07-06 14:36 → 2015-08-06 14:36 (+31d) | 2015-07-06 15:24 → 2015-08-06 15:24 (+31d) |  | 28.7d → 17.6d |  | resources none → NamNT |
| 228 | Complete Progress Report 3 | 2015-07-06 15:24 → 2015-08-06 15:24 (+31d) | 2015-07-06 15:24 → 2015-08-06 15:24 (+31d) |  | 28.7d → 17.6d |  | resources none → NamNT |
| 229 | **Report no.3** | 2015-07-07 10:24 → 2015-08-06 10:24 (+30d) | 2015-07-09 12:00 → 2015-08-12 10:24 (+34d) | 2.2d → 4d | 28.7d → 0d |  |  |
| 230 | Develop Report no.3 (draft version) | 2015-07-07 10:24 → 2015-08-06 10:24 (+30d) | 2015-07-07 12:00 → 2015-08-06 12:00 (+30d) |  | 28.7d → 0d | 201, 213, 218, 223, Q & A Management (update) → 201, 213, 218, 223 | resources none → NamNT |
| 231 | Review Report no.3 (draft version) | 2015-07-07 13:00 → 2015-08-06 13:00 (+30d) | 2015-07-08 12:00 → 2015-08-07 12:00 (+30d) |  | 28.7d → 0d |  | resources none → MaiTTT |
| 232 | Update Report no.3 (draft version) | 2015-07-08 13:00 → 2015-08-10 10:24 (+33d) | 2015-07-08 17:00 → 2015-08-10 15:24 (+33d) |  | 28.7d → 0d |  | resources none → NamNT |
| 233 | Submit Report no.3 (first version) | 2015-07-08 17:00 → 2015-08-10 15:24 (+33d) | 2015-07-08 17:00 → 2015-08-10 15:24 (+33d) |  | 28.7d → 0d |  | resources none → NamNT |
| 234 | Revise after got comments for Report no.3 | 2015-07-09 08:00 → 2015-08-10 15:24 (+32d) | 2015-07-09 12:00 → 2015-08-12 10:24 (+34d) | 0.5d → 0.8d | 28.7d → 0d |  | resources none → NamNT; MaiTTT; PhuongBB; AnhTT |
| 235 | Submit Report no.3 (final version) | 2015-07-09 12:00 → 2015-08-12 10:24 (+34d) | 2015-07-09 12:00 → 2015-08-12 10:24 (+34d) |  | 28.7d → 0d |  | resources none → NamNT |
| 236 | **Construction** | 2015-06-18 08:48 → 2015-07-02 14:36 (+14d) | 2015-08-18 14:36 → 2015-09-01 11:12 (+14d) | 38.6d → 42.7d |  |  |  |
| 237 | **Code Review checklist** | 2015-07-09 13:00 → 2015-08-13 08:00 (+35d) | 2015-07-13 08:48 → 2015-08-17 10:24 (+35d) | 1.6d → 2.3d | 28.7d → 0d |  |  |
| 238 | Develop review checklist | 2015-07-09 13:00 → 2015-08-13 08:00 (+35d) | 2015-07-10 11:12 → 2015-08-14 09:36 (+35d) | 0.9d → 1.2d | 28.7d → 0d |  | resources none → MaiTTT; PhuongBB |
| 239 | Review review checklist | 2015-07-10 11:12 → 2015-08-14 09:36 (+35d) | 2015-07-10 15:24 → 2015-08-14 15:24 (+35d) | 0.4d → 0.6d | 28.7d → 0d |  | resources none → MaiTTT; PhuongBB |
| 240 | Update review checklist | 2015-07-10 15:24 → 2015-08-14 15:24 (+35d) | 2015-07-13 08:48 → 2015-08-17 10:24 (+35d) | 0.3d → 0.5d | 28.7d → 0d |  | resources none → MaiTTT; PhuongBB |
| 241 | Complete review checklist | 2015-07-13 08:48 → 2015-08-17 10:24 (+35d) | 2015-07-13 08:48 → 2015-08-17 10:24 (+35d) |  | 28.7d → 0d |  | resources none → MaiTTT; PhuongBB |
| 242 | **Coding & Unit testing (continue)** | 2015-06-18 08:48 → 2015-07-02 14:36 (+14d) | 2015-07-23 08:48 → 2015-07-14 17:00 (-9d) | 20d → 8.3d | 0d → 0.1d |  |  |
| 243 | **Bus Rider Module** | 2015-06-18 08:48 → 2015-07-02 14:36 (+14d) | 2015-07-23 08:48 → 2015-07-14 17:00 (-9d) | 20d → 8.3d | 0d → 0.1d |  |  |
| 252 | **Bus module** | 2015-06-18 08:48 → 2015-07-02 14:36 (+14d) | 2015-07-21 08:48 → 2015-07-10 14:36 (-11d) | 18d → 6d | 0.8d → 0.1d |  |  |
| 284 | Web service | 2015-07-07 13:48 → 2015-07-02 14:36 (-5d) |  |  | 27.9d → 34.8d | Scan QR code module → 180 | resources none → MaiTTT |
| 285 | Complete coding | 2015-07-23 08:48 → 2015-07-10 12:00 (-13d) | 2015-07-23 08:48 → 2015-07-10 12:00 (-13d) |  | 21.4d → 25.8d | 183, About module, Swap direction module, Scan QR code module, Search Favorite place module, 284, Setting module → 183, 245, 251, 263, 270, 273 | resources none → NamNT; MaiTTT; AnhTT |
| 286 | **Progress report 4** | 2015-07-23 08:48 → 2015-08-17 10:24 (+25d) | 2015-07-23 13:48 → 2015-08-20 09:36 (+28d) | 0.5d → 2.9d | 21.4d → 0d |  |  |
| 287 | Develop Progress Report 4 | 2015-07-23 08:48 → 2015-08-17 10:24 (+25d) | 2015-07-23 11:12 → 2015-08-17 13:48 (+25d) |  | 21.4d → 0d |  | resources none → NamNT |
| 288 | Review Progress Report 4 | 2015-07-23 11:12 → 2015-08-18 08:00 (+26d) | 2015-07-23 12:00 → 2015-08-18 08:48 (+26d) |  | 28.2d → 8.9d |  | resources none → MaiTTT |
| 289 | Update Progress Report 4 | 2015-07-23 13:00 → 2015-08-20 08:48 (+28d) | 2015-07-23 13:48 → 2015-08-20 09:36 (+28d) |  | 28.2d → 8.2d |  | resources none → NamNT |
| 290 | Complete Progress Report 4 | 2015-07-23 13:48 → 2015-08-20 09:36 (+28d) | 2015-07-23 13:48 → 2015-08-20 09:36 (+28d) |  | 28.2d → 8.2d |  | resources none → NamNT |
| 291 | **Report no.4** | 2015-07-23 11:12 → 2015-08-17 13:48 (+25d) | 2015-08-03 11:12 → 2015-09-01 11:12 (+29d) | 7d → 10.8d | 21.4d → 0d |  |  |
| 292 | Develop Report no.4 (draft version) | 2015-07-23 11:12 → 2015-08-17 13:48 (+25d) | 2015-07-24 11:12 → 2015-08-19 08:48 (+26d) |  | 21.4d → 0d | 241, 285, Q & A Management (update), 287 → 241, 285, 287 | resources none → NamNT |
| 293 | Review Report no.4 (draft version) | 2015-07-24 11:12 → 2015-08-19 08:48 (+26d) | 2015-07-28 11:12 → 2015-08-24 09:36 (+27d) |  | 21.4d → 0d |  | resources none → MaiTTT |
| 294 | Update Report no.4 (draft version) | 2015-07-28 11:12 → 2015-08-24 09:36 (+27d) | 2015-07-30 11:12 → 2015-08-26 09:36 (+27d) |  | 21.4d → 0d |  | resources none → NamNT |
| 295 | Submit Report no.4 (first version) | 2015-07-30 11:12 → 2015-08-26 09:36 (+27d) | 2015-07-30 11:12 → 2015-08-26 09:36 (+27d) |  | 21.4d → 0d |  | resources none → NamNT |
| 296 | Revise after got comments for Report no.4 | 2015-07-30 11:12 → 2015-08-26 09:36 (+27d) | 2015-08-03 11:12 → 2015-09-01 11:12 (+29d) | 2d → 4d | 21.4d → 0d |  | resources none → NamNT; MaiTTT; PhuongBB; AnhTT |
| 297 | Submit Report no.4 (final version) | 2015-08-03 11:12 → 2015-09-01 11:12 (+29d) | 2015-08-03 11:12 → 2015-09-01 11:12 (+29d) |  | 21.4d → 0d |  | resources none → NamNT |
| 298 | **Testing** | 2015-06-18 10:24 → 2015-07-08 11:12 (+20d) | 2015-08-14 17:00 → 2015-08-17 12:00 (+3d) | 36.7d → 28.1d | 0d → 5.9d |  |  |
| 299 | **Execute test & fix bugs** | 2015-06-18 10:24 → 2015-07-08 11:12 (+20d) | 2015-08-14 11:12 → 2015-08-13 10:24 (-1d) | 36.1d → 25.9d | 0d → 5.9d |  |  |
| 300 | **Round 1** | 2015-06-18 10:24 → 2015-07-08 11:12 (+20d) | 2015-08-04 16:12 → 2015-07-29 10:24 (-6d) | 28.6d → 14.9d | 0d → 5.9d |  |  |
| 301 | **Execute unit test** | 2015-06-18 10:24 → 2015-07-08 11:12 (+20d) | 2015-07-23 16:12 → 2015-07-23 08:48 | 20.6d → 10.7d | 0d → 5.9d |  |  |
| 302 | Bus driver module | 2015-06-18 10:24 → 2015-07-13 08:00 (+25d) | 2015-06-19 08:48 → 2015-07-13 15:24 (+24d) |  | 19.8d → 4.5d |  | resources none → PhuongBB |
| 303 | Common module | 2015-07-08 08:48 → 2015-07-10 11:12 (+2d) | 2015-07-08 16:12 → 2015-07-13 17:00 (+5d) |  | 11d → 4.3d | 213, About module → 213, 245 | was named Sync module; resources none → PhuongBB |
| 305 | Bus module | 2015-07-21 08:48 → 2015-07-16 08:00 (-5d) | 2015-07-23 08:48 → 2015-07-16 15:24 (-7d) | 2d → 0.8d | 0.8d → 1.5d | 213, Swap direction module → 213, 258 | resources none → PhuongBB |
| 306 | Path Finder module | 2015-07-20 08:48 → 2015-07-14 08:00 (-6d) | 2015-07-22 08:48 → 2015-07-15 17:00 (-7d) |  | 1.8d → 2.3d | 213, Search Favorite place module → 213, 263 | was named Search module; resources none → PhuongBB |
| 308 | Track module | 2015-06-12 08:00 → 2015-07-21 10:24 (+39d) | 2015-06-12 09:36 → 2015-07-22 10:24 (+40d) | 0.2d → 1d | 1.5d → 29.1d | Remind module → 213, 273 | resources none → PhuongBB |
| 309 | Favorite module | 2015-07-23 08:48 → 2015-07-22 10:24 (-1d) | 2015-07-23 16:12 → 2015-07-23 08:48 |  | 0d → 28.3d | 213, Setting module → 213, 283 | was named Setting module; resources none → PhuongBB |
| 310 | Fix bugs unit test | 2015-07-23 16:12 → 2015-07-17 10:24 (-6d) | 2015-07-29 16:12 → 2015-07-23 10:24 (-6d) |  | 0d → 1d | 302, 303, 305, Shigeki module, 306, 309 → 302, 303, 304, 305, 306, 307 | resources none → AnhTT; NamNT; MaiTTT |
| 311 | Execute integration test | 2015-07-29 16:12 → 2015-07-23 10:24 (-6d) | 2015-07-30 16:12 → 2015-07-24 10:24 (-6d) |  | 0d → 1d |  | resources none → PhuongBB |
| 312 | Fix bugs integration test | 2015-07-30 16:12 → 2015-07-24 10:24 (-6d) | 2015-07-31 16:12 → 2015-07-27 10:24 (-4d) |  | 0d → 1d |  | resources none → AnhTT; NamNT; MaiTTT |
| 313 | Execute system test | 2015-07-31 16:12 → 2015-07-27 10:24 (-4d) | 2015-08-03 16:12 → 2015-07-28 10:24 (-6d) |  | 0d → 1d |  | resources none → PhuongBB |
| 314 | Fix bugs system test | 2015-08-03 16:12 → 2015-07-28 10:24 (-6d) | 2015-08-04 16:12 → 2015-07-29 10:24 (-6d) |  | 0d → 1d |  | resources none → AnhTT; NamNT; MaiTTT |
| 315 | **Round 2** | 2015-08-04 16:12 → 2015-07-29 10:24 (-6d) | 2015-08-13 11:12 → 2015-08-11 17:00 (-2d) | 6.5d → 9.7d | 0d → 4d |  |  |
| 316 | **Execute unit test** | 2015-08-04 16:12 → 2015-07-29 10:24 (-6d) | 2015-08-05 16:12 → 2015-08-06 08:48 (+1d) | 1d → 5.8d | 0d → 4d |  |  |
| 317 | Bus driver module | 2015-08-04 16:12 → 2015-07-31 16:12 (-4d) | 2015-08-05 11:12 → 2015-08-03 11:12 (-2d) |  | 0.5d → 1.9d |  | resources none → PhuongBB |
| 318 | Common module | 2015-08-04 16:12 → 2015-07-31 10:24 (-4d) | 2015-08-05 12:00 → 2015-07-31 16:12 (-5d) |  | 0.4d → 2.4d |  | was named Sync module; resources none → PhuongBB |
| 320 | Bus module | 2015-08-04 16:12 → 2015-08-03 11:12 (-1d) | 2015-08-05 16:12 → 2015-08-03 16:12 (-2d) | 1d → 0.5d | 0d → 1.4d |  | resources none → PhuongBB |
| 321 | Path Finder module | 2015-08-04 16:12 → 2015-07-30 10:24 (-5d) | 2015-08-05 16:12 → 2015-07-31 10:24 (-5d) |  | 0d → 3d |  | was named Search module; resources none → PhuongBB |
| 323 | Track module | 2015-07-15 08:48 → 2015-08-05 10:24 (+21d) | 2015-07-16 13:48 → 2015-08-05 15:24 (+20d) | 1.5d → 0.5d | 0.8d → 18.6d | Remind module → 314 | resources none → PhuongBB |
| 324 | Favorite module | 2015-08-04 16:12 → 2015-08-03 16:12 (-1d) | 2015-08-05 14:36 → 2015-08-04 10:24 (-1d) | 0.8d → 0.4d | 0.2d → 1d |  | was named Setting module; resources none → PhuongBB |
| 325 | Fix bugs unit test | 2015-08-05 16:12 → 2015-08-04 10:24 (-1d) | 2015-08-07 16:12 → 2015-08-06 10:24 (-1d) |  | 0d → 1d | 317, 318, 320, Shigeki module, 321, 324 → 317, 318, 319, 320, 321, 324 | resources none → AnhTT; NamNT; MaiTTT |
| 326 | Execute integration test | 2015-08-07 16:12 → 2015-08-06 10:24 (-1d) | 2015-08-10 16:12 → 2015-08-07 10:24 (-3d) |  | 0d → 1d |  | resources none → PhuongBB |

| ID | Task | Start | Finish | Duration | Total float | Predecessors | Other |
| --- | --- | --- | --- | --- | --- | --- | --- |
| 327 | Fix bugs integration test | 2015-08-10 16:12 → 2015-08-07 10:24 (-3d) | 2015-08-11 16:12 → 2015-08-10 12:00 (-1d) | 1d → 1.2d | 0d → 1d |  | resources none → AnhTT; NamNT; MaiTTT |
| 328 | Execute system test | 2015-08-11 16:12 → 2015-08-10 13:00 (-1d) | 2015-08-12 11:12 → 2015-08-10 17:00 (-2d) |  | 0d → 1d |  | resources none → PhuongBB |
| 329 | Fix bugs system test | 2015-08-12 11:12 → 2015-08-11 08:00 (-1d) | 2015-08-13 11:12 → 2015-08-11 17:00 (-2d) |  | 0d → 1d |  | resources none → AnhTT; NamNT; MaiTTT |
| 330 | Execute acceptance test & collect data | 2015-08-13 11:12 → 2015-08-12 08:00 (-1d) | 2015-08-14 11:12 → 2015-08-13 10:24 (-1d) | 1d → 1.3d | 0d → 1d |  | resources none → PhuongBB; MaiTTT |
| 331 | Complete execute test | 2015-08-14 11:12 → 2015-08-13 10:24 (-1d) | 2015-08-14 11:12 → 2015-08-13 10:24 (-1d) |  | 0d → 1d |  | resources none → PhuongBB; MaiTTT |
| 332 | **Test Report** | 2015-08-14 11:12 → 2015-08-13 16:12 (-1d) | 2015-08-14 17:00 → 2015-08-17 12:00 (+3d) | 0.6d → 1.6d | 0d → 1d |  |  |
| 333 | Develop test report | 2015-08-14 11:12 → 2015-08-13 16:12 (-1d) | 2015-08-14 13:48 → 2015-08-14 11:12 | 0.2d → 0.4d | 0d → 1d |  | resources none → MaiTTT; PhuongBB |
| 334 | Review test report | 2015-08-14 13:48 → 2015-08-14 11:12 | 2015-08-14 15:24 → 2015-08-14 17:00 | 0.2d → 0.4d | 0d → 1d |  | resources none → MaiTTT; PhuongBB |
| 335 | Update test report | 2015-08-14 15:24 → 2015-08-17 08:00 (+3d) | 2015-08-14 17:00 → 2015-08-17 12:00 (+3d) | 0.2d → 0.4d | 0d → 1d |  | resources none → MaiTTT; PhuongBB |
| 336 | Complete test report | 2015-08-14 17:00 → 2015-08-17 12:00 (+3d) | 2015-08-14 17:00 → 2015-08-17 12:00 (+3d) |  | 0d → 1d |  | resources none → MaiTTT; PhuongBB |
| 337 | **Quality report** | 2015-08-17 08:00 → 2015-08-17 13:00 | 2015-08-17 14:36 → 2015-08-18 09:36 (+1d) |  | 0d → 1d |  |  |
| 338 | Develop quality report | 2015-08-17 08:00 → 2015-08-17 13:00 | 2015-08-17 10:24 → 2015-08-17 15:24 |  | 0d → 1d |  | resources none → MaiTTT; PhuongBB |
| 339 | Review quality report | 2015-08-17 10:24 → 2015-08-17 15:24 | 2015-08-17 12:00 → 2015-08-17 17:00 |  | 0d → 1d |  | resources none → MaiTTT; PhuongBB |
| 340 | Update quality report | 2015-08-17 13:00 → 2015-08-18 08:00 (+1d) | 2015-08-17 14:36 → 2015-08-18 09:36 (+1d) |  | 0d → 1d |  | resources none → MaiTTT; PhuongBB |
| 341 | Complete quality report | 2015-08-17 14:36 → 2015-08-18 09:36 (+1d) | 2015-08-17 14:36 → 2015-08-18 09:36 (+1d) |  | 0d → 1d |  | resources none → MaiTTT; PhuongBB |
| 342 | **Progress report 5** | 2015-08-17 14:36 → 2015-08-18 09:36 (+1d) | 2015-08-18 09:36 → 2015-08-18 14:36 |  | 0d → 1d |  |  |
| 343 | Develop Progress Report 5 | 2015-08-17 14:36 → 2015-08-18 09:36 (+1d) | 2015-08-17 17:00 → 2015-08-18 12:00 (+1d) |  | 0d → 1d |  | resources none → NamNT |
| 344 | Review Progress Report 5 | 2015-08-18 08:00 → 2015-08-18 13:00 | 2015-08-18 08:48 → 2015-08-18 13:48 |  | 0d → 1d |  | resources none → MaiTTT |
| 345 | Update Progress Report 5 | 2015-08-18 08:48 → 2015-08-18 13:48 | 2015-08-18 09:36 → 2015-08-18 14:36 |  | 0d → 1d |  | resources none → NamNT |
| 346 | Complete Progress Report 5 | 2015-08-18 09:36 → 2015-08-18 14:36 | 2015-08-18 09:36 → 2015-08-18 14:36 |  | 0d → 1d |  | resources none → NamNT |
| 347 | **Report no.5** | 2015-08-18 09:36 → 2015-08-18 14:36 | 2015-08-18 14:36 → 2015-08-19 10:24 (+1d) | 0.5d → 0.6d | 0d → 1d |  |  |
| 348 | Develop Report no.5 (draft version) | 2015-08-18 09:36 → 2015-08-18 14:36 | 2015-08-18 10:24 → 2015-08-18 15:24 |  | 0d → 1d |  | resources none → NamNT |
| 349 | Review Report no.5 (draft version) | 2015-08-18 10:24 → 2015-08-18 15:24 | 2015-08-18 12:00 → 2015-08-18 17:00 |  | 0d → 1d |  | resources none → MaiTTT |
| 350 | Update Report no.5 (draft version) | 2015-08-18 13:00 → 2015-08-19 08:48 (+1d) | 2015-08-18 13:48 → 2015-08-19 09:36 (+1d) |  | 0d → 1d |  | resources none → NamNT |
| 351 | Submit Report no.5 (first version) | 2015-08-18 13:48 → 2015-08-19 09:36 (+1d) | 2015-08-18 13:48 → 2015-08-19 09:36 (+1d) |  | 0d → 1d |  | resources none → NamNT |
| 352 | Revise after got comments for Report no.5 | 2015-08-18 13:48 → 2015-08-19 09:36 (+1d) | 2015-08-18 14:36 → 2015-08-19 10:24 (+1d) |  | 0d → 1d |  | resources none → NamNT; MaiTTT; AnhTT; PhuongBB |
| 353 | Submit Report no.5 (final version) | 2015-08-18 14:36 → 2015-08-19 10:24 (+1d) | 2015-08-18 14:36 → 2015-08-19 10:24 (+1d) |  | 0d → 1d |  | resources none → NamNT |
| 354 | **Termination** | 2015-08-18 14:36 → 2015-08-19 10:24 (+1d) | 2015-09-01 15:24 → 2015-08-31 11:12 (-1d) | 10.1d → 8.1d | 0d → 1d |  |  |
| 355 | **Report no.6** | 2015-08-18 14:36 → 2015-08-19 10:24 (+1d) | 2015-08-27 15:24 → 2015-08-27 16:12 | 7.1d → 6.6d | 0d → 1d |  |  |
| 356 | Complete source code & final report | 2015-08-18 14:36 → 2015-08-19 10:24 (+1d) | 2015-08-19 14:36 → 2015-08-25 09:36 (+6d) | 1d → 2.5d | 0d → 5.2d |  | resources none → NamNT; MaiTTT; PhuongBB; AnhTT |
| 357 | Develop installation guide | 2015-08-19 14:36 → 2015-08-19 10:24 | 2015-08-20 09:36 → 2015-08-19 15:24 (-1d) |  | 0d → 7.8d | 356 → 353 | resources none → AnhTT |
| 358 | Develop user guideline | 2015-08-20 09:36 → 2015-08-19 15:24 (-1d) | 2015-08-21 09:36 → 2015-08-20 13:48 (-1d) | 1d → 0.8d | 0d → 7.8d |  | resources none → PhuongBB |
| 359 | Complete Project Result Assessment | 2015-08-21 09:36 → 2015-08-19 10:24 (-2d) | 2015-08-24 09:36 → 2015-08-20 10:24 (-4d) |  | 0d → 1d | 358 → 353 | resources none → NamNT; MaiTTT |
| 360 | Conduct lessons learned | 2015-08-24 09:36 → 2015-08-20 10:24 (-4d) | 2015-08-24 15:24 → 2015-08-20 16:12 (-4d) |  | 0d → 1d |  | resources none → NamNT |
| 361 | Complete Presentation slide | 2015-08-24 15:24 → 2015-08-25 09:36 (+1d) | 2015-08-25 15:24 → 2015-08-26 09:36 (+1d) |  | 0d → 1d |  | resources none → MaiTTT |
| 362 | Review Report no.6 (draft version) | 2015-08-25 15:24 → 2015-08-26 09:36 (+1d) | 2015-08-26 15:24 → 2015-08-27 09:36 (+1d) |  | 0d → 1d |  | resources none → MaiTTT; PhuongBB |
| 363 | Update Report no.6 (draft version) | 2015-08-26 15:24 → 2015-08-27 09:36 (+1d) | 2015-08-27 10:24 → 2015-08-27 14:36 |  | 0d → 1d |  | resources none → NamNT; AnhTT |
| 364 | Submit Report no.6 (first version) | 2015-08-27 10:24 → 2015-08-27 14:36 | 2015-08-27 10:24 → 2015-08-27 14:36 |  | 0d → 1d |  | resources none → NamNT |
| 365 | Revise after got comments for Report no.6 | 2015-08-27 10:24 → 2015-08-27 14:36 | 2015-08-27 15:24 → 2015-08-27 16:12 | 0.5d → 0.2d | 0d → 1d |  | resources none → NamNT; MaiTTT; PhuongBB; AnhTT |
| 366 | Submit Report no.6 (final version) | 2015-08-27 15:24 → 2015-08-27 16:12 | 2015-08-27 15:24 → 2015-08-27 16:12 |  | 0d → 1d |  | resources none → NamNT |
| 367 | Submit Final report & CD source code | 2015-08-27 15:24 → 2015-08-27 16:12 | 2015-08-27 15:24 → 2015-08-27 16:12 |  | 0d → 1d |  | resources none → NamNT; MaiTTT; PhuongBB; AnhTT |
| 368 | **Pre-closing** | 2015-08-27 15:24 → 2015-08-27 16:12 | 2015-09-01 10:24 → 2015-08-28 16:12 (-4d) | 2.5d → 1d | 0d → 1d |  |  |
| 369 | Training presentation | 2015-08-27 15:24 → 2015-08-27 16:12 | 2015-09-01 10:24 → 2015-08-28 16:12 (-4d) | 2.5d → 1d | 0d → 1d |  | resources none → NamNT; MaiTTT; PhuongBB; AnhTT |
| 370 | **Closing** | 2015-09-01 10:24 → 2015-08-28 16:12 (-4d) | 2015-09-01 15:24 → 2015-08-31 11:12 (-1d) |  | 0d → 1d |  |  |
| 371 | Present Capstone Project & Completed | 2015-09-01 10:24 → 2015-08-28 16:12 (-4d) | 2015-09-01 15:24 → 2015-08-31 11:12 (-1d) |  | 0d → 1d |  | resources none → NamNT; MaiTTT; PhuongBB; AnhTT |
